# 04. HITOS_Cronograma de proyecto v20170129

Schedule from MS Project, 2017-01-06 to 2017-06-26.
Consultoria

## Calendars

- Estándar: Mon-Fri 08:00-12:00, 13:00-17:00; Sat-Sun off.

## Resources

| Resource |
| --- |
| Equipo de Trabajo |
| Jefe de Sistemas |
| Jose Agois |
| Cesar Chiappe |
| Juan Rivero |
| Analista Sist Sr |
| Producto 1 |

## Schedule

| ID | WBS | Task | Type | Duration | Start | Finish | Predecessors | Total slack | Free slack | Constraint | Resources |
| --- | --- | --- | --- | --- | --- | --- | --- | --- | --- | --- | --- |
| 1 | 1 | **Inicio** |  | 3d? | 2017-01-06 | 2017-01-10 |  | 100d |  |  |  |
| 2 | 1.1 | Presentación de documentos de inicio del proyecto |  | 1d? | 2017-01-06 | 2017-01-06 |  | 100d | 0d |  |  |
| 3 | 1.2 | Reunión de Kick Off con miembros del SIS |  | 1d? | 2017-01-09 | 2017-01-09 | 2 | 119d | 0d |  |  |
| 4 | 1.3 | Recepción de la documentación proporcionada por representantes de la GREP, OGTI y el Programa SISTEC, según lo establecido en el TDR |  | 1d? | 2017-01-10 | 2017-01-10 | 3 | 119d |  |  |  |
| 5 | 2 | **Planificación: Plan de trabajo y metodología de Gestión** |  | 6d | 2017-01-09 | 2017-01-16 |  | 100d |  |  |  |
| 6 | 2.1 | Elaboración Plan de Trabajo y Metodología de Gestión |  | 5d | 2017-01-09 | 2017-01-13 | 2 | 116d |  |  |  |
| 7 | 2.2 | Elaboración del cronograma del proyecto |  | 5d | 2017-01-09 | 2017-01-13 | 2 | 116d |  |  |  |
| 8 | 2.3 | Revisión interna por equipo de Calidad del "Plan de trabajo, Cronograma y Metodología de Gestión" |  | 5d | 2017-01-09 | 2017-01-13 | 2 | 100d | 0d |  |  |
| 9 | 2.4 | Entregables de Planificación |  | 1d | 2017-01-16 | 2017-01-16 | 8 | 100d | 0d |  |  |
| 10 | 2.5 | Hito: Entregable Producto 1 | milestone | 0d | 2017-01-16 | 2017-01-16 | 9 | 100d | 0d | start no earlier than 2017-01-16 | Producto 1 |
| 11 | 3 | **Ejecución** |  | 114d | 2017-01-17 | 2017-06-23 |  | 1d |  |  |  |
| 12 | 3.1 | **Analisis y elaboración de Propuesta de Mejora de Procesos** |  | 15d | 2017-01-17 | 2017-02-06 |  | 1d |  |  |  |
| 13 | 3.1.1 | **Analisis de la Situación Actual** |  | 15d | 2017-01-17 | 2017-02-06 |  | 100d |  |  |  |
| 14 | 3.1.1.1 | Identificación de las actividades y procesos asociados con el proceso de Reconsideraciones, grupos de interés y actores involucrados |  | 15d | 2017-01-17 | 2017-02-06 | 10 | 100d |  |  |  |
| 15 | 3.1.2 | **Propuesta de Mejora de Procesos** |  | 15d | 2017-01-17 | 2017-02-06 |  | 1d |  |  |  |
| 16 | 3.1.2.1 | Definición de oportunidades de mejora de los procesos |  | 15d | 2017-01-17 | 2017-02-06 |  | 100d |  | start no earlier than 2017-01-17 |  |
| 17 | 3.1.2.2 | Elaboración de la caracterización de los procesos propuestos usando diagramación BPMN v2.0 |  | 15d | 2017-01-17 | 2017-02-06 |  | 100d |  | start no earlier than 2017-01-17 |  |
| 18 | 3.1.2.3 | Elaboración de Catálogo de Requerimientos del Negocio de los procesos propuestos |  | 15d | 2017-01-17 | 2017-02-06 |  | 1d | 0d | start no earlier than 2017-01-17 |  |
| 19 | 3.2 | Hito : Entregable Producto 2 | milestone | 0d | 2017-02-06 | 2017-02-06 | 18 | 1d | 0d |  |  |
| 20 | 3.3 | **Diseño: Base de Datos Funcional y Técnico del Módulo de Reconsideraciones** |  | 15d | 2017-02-07 | 2017-02-27 |  | 1d |  |  |  |
| 21 | 3.3.1 | **Rediseñar el Modelo de Base de Datos Actual** |  | 9d | 2017-02-07 | 2017-02-17 |  | 91d |  |  |  |
| 22 | 3.3.1.1 | Analizar la arquitectura y estructura de la Base de datos actual |  | 8d | 2017-02-07 | 2017-02-16 | 19 | 92d |  |  |  |
| 23 | 3.3.1.2 | Revisar diseño de tablas y modelo existente |  | 8d | 2017-02-07 | 2017-02-16 | 19 | 92d |  |  |  |
| 24 | 3.3.1.3 | Desarrollar Modelo Logico |  | 8d | 2017-02-07 | 2017-02-16 | 19 | 92d |  |  |  |
| 25 | 3.3.1.4 | Desarrollar Modelo Fisico |  | 9d | 2017-02-07 | 2017-02-17 | 19 | 91d |  |  |  |

Notes:
- 10: Producto 1

| ID | WBS | Task | Type | Duration | Start | Finish | Predecessors | Total slack | Free slack |
| --- | --- | --- | --- | --- | --- | --- | --- | --- | --- |
| 26 | 3.3.2 | **Diseño Funcional** |  | 6d | 2017-02-07 | 2017-02-14 |  | 1d |  |
| 27 | 3.3.2.1 | Elaboración el Catálogo de Requisitos Funcionales y No Funcionales del Nuevo Módulo |  | 6d | 2017-02-07 | 2017-02-14 | 19 | 94d |  |
| 28 | 3.3.2.2 | Elaboración de Matriz de Trazabilidad entre los procesos, Requerimientos de Negocio y Requisitos Funcionales |  | 6d | 2017-02-07 | 2017-02-14 | 19 | 94d |  |
| 29 | 3.3.2.3 | Identificación de Casos de Uso del Sistema |  | 6d | 2017-02-07 | 2017-02-14 | 19 | 94d |  |
| 30 | 3.3.2.4 | Elaboración de Prototipos de Usuario (Mockup) |  | 6d | 2017-02-07 | 2017-02-14 | 19 | 94d |  |
| 31 | 3.3.2.5 | Elaboración del Flujo de Trabajo |  | 6d | 2017-02-07 | 2017-02-14 | 19 | 1d | 0d |
| 32 | 3.3.3 | **Diseño Técnico** |  | 6d | 2017-02-15 | 2017-02-22 |  | 1d |  |
| 33 | 3.3.3.1 | Plantear y Diagramar la Arquitectura Candidata del Nuevo Módulo de Reconsideraciones mediante diagramas UML, según el Modelo 4+1 |  | 6d | 2017-02-15 | 2017-02-22 | 31 | 1d | 0d |
| 34 | 3.3.3.2 | Definición de nueva arquitectura y estructura de base de datos en módelo físico y lógico |  | 6d | 2017-02-15 | 2017-02-22 | 31 | 88d |  |
| 35 | 3.3.4 | **Elaboración de Arquitectura de Plataforma Tecnológica a proponer** |  | 3d | 2017-02-23 | 2017-02-27 | 31 | 1d | 0d |
| 36 | 3.3.4.1 | Interfaz de Usuario |  | 3d | 2017-02-23 | 2017-02-27 | 33 | 1d |  |
| 37 | 3.3.4.2 | Arquitectura de Componentes |  | 3d | 2017-02-23 | 2017-02-27 | 33 | 1d |  |
| 38 | 3.4 | Hito : Entregable Producto 3 | milestone | 0d | 2017-02-27 | 2017-02-27 | 35 | 1d | 0d |
| 39 | 3.5 | **Registro de Reconsideraciones - Iteración 1** |  | 29d | 2017-02-28 | 2017-04-07 |  | 1d |  |
| 40 | 3.5.1 | **Construcción** |  | 21d | 2017-02-28 | 2017-03-28 |  | 1d |  |
| 41 | 3.5.1.1 | Adecuación del Formulario de Prestaciones en el SIASIS |  | 21d | 2017-02-28 | 2017-03-28 | 38 | 64d |  |
| 42 | 3.5.1.2 | Adecuación del proceso de Consolidación y Supervisión automática de las prestaciones |  | 21d | 2017-02-28 | 2017-03-28 | 38 | 1d | 0d |
| 43 | 3.5.2 | Despliegue e integración con los procesos informáticos y aplicativos del SIS |  | 4d | 2017-03-29 | 2017-04-03 | 42 | 60d |  |
| 44 | 3.5.3 | Pruebas y Validación de Usuarios |  | 4d | 2017-03-29 | 2017-04-03 | 42 | 1d | 0d |
| 45 | 3.5.4 | Capacitación |  | 4d | 2017-04-04 | 2017-04-07 | 44 | 1d | 0d |
| 46 | 3.6 | Hito: Entregable Producto 4 | milestone | 0d | 2017-04-07 | 2017-04-07 | 45 | 1d | 0d |
| 47 | 3.7 | **Evaluacion Prestacional de Reconsideraciones - Iteración 2** |  | 27d | 2017-04-10 | 2017-05-16 |  | 1d |  |
| 48 | 3.7.1 | **Construcción** |  | 20d | 2017-04-10 | 2017-05-05 |  | 1d |  |
| 49 | 3.7.1.1 | Desarrollo del Sub Módulo de Evaluación de Reconsideraciones alineado con el proceso de Supervisión Médica Electrónica (SME) |  | 20d | 2017-04-10 | 2017-05-05 | 46 | 36d |  |
| 50 | 3.7.1.2 | Desarrollo del Sub Módulo de Administración de Parámetros |  | 20d | 2017-04-10 | 2017-05-05 | 46 | 1d | 0d |
| 51 | 3.7.2 | Despliegue e integración con los procesos informáticos y procesos del SIS |  | 4d | 2017-05-08 | 2017-05-11 | 50 | 32d |  |
| 52 | 3.7.3 | Pruebas y Validación de Usuarios |  | 4d | 2017-05-08 | 2017-05-11 | 50 | 1d | 0d |
| 53 | 3.7.4 | Capacitación |  | 3d | 2017-05-12 | 2017-05-16 | 52 | 1d | 0d |
| 54 | 3.8 | Hito: Entregable Producto 5 | milestone | 0d | 2017-05-16 | 2017-05-16 | 53 | 1d | 0d |

| ID | WBS | Task | Type | Duration | Start | Finish | Predecessors | Total slack | Free slack | Constraint |
| --- | --- | --- | --- | --- | --- | --- | --- | --- | --- | --- |
| 55 | 3.9 | **Valorización y Reporte de Reconsideraciones - Iteración 3** |  | 28d | 2017-05-17 | 2017-06-23 |  | 1d |  |  |
| 56 | 3.9.1 | **Construcción** |  | 19d | 2017-05-17 | 2017-06-12 |  | 1d |  |  |
| 57 | 3.9.1.1 | Desarrollo del Sub Módulo de Valorización de Reconsideraciones |  | 19d | 2017-05-17 | 2017-06-12 | 54 | 10d |  |  |
| 58 | 3.9.1.2 | Desarrollo del Sub Módulo de Reportes y Consultas de Reconsideraciones |  | 18d | 2017-05-17 | 2017-06-09 | 54 | 1d | 0d |  |
| 59 | 3.9.2 | Despliegue e integración con lo desarrollado en la Iteración 1 |  | 5d | 2017-06-12 | 2017-06-16 | 58 | 1d | 0d |  |
| 60 | 3.9.3 | Pruebas y Validación de los usuarios |  | 5d | 2017-06-19 | 2017-06-23 | 59 | 1d |  |  |
| 61 | 3.9.4 | Capacitación |  | 5d | 2017-06-19 | 2017-06-23 | 59 | 1d |  |  |
| 62 | 3.9.5 | Reunión del área técnica |  | 5d | 2017-06-19 | 2017-06-23 | 59 | 1d |  |  |
| 63 | 3.9.6 | Transferencia Tecnológica |  | 5d | 2017-06-19 | 2017-06-23 | 59 | 1d | 0d |  |
| 64 | 3.10 | Hito: Entregable Producto 5 | milestone | 0d | 2017-06-23 | 2017-06-23 | 63 | 1d |  |  |
| 65 | 4 | **Seguimiento** |  | 121d? | 2017-01-06 | 2017-06-23 |  | 0d |  |  |
| 66 | 4.1 | Reuniones del Comité de Dirección del Proyecto |  | 121d? | 2017-01-06 | 2017-06-23 |  | 0d |  | start no earlier than 2017-01-06 |
| 67 | 5 | **Cierre** |  | 1d | 2017-06-26 | 2017-06-26 |  | 0d |  |  |
| 68 | 5.1 | Reunión de Lecciones aprendidas |  | 1d | 2017-06-26 | 2017-06-26 | 66 | 0d |  | start no earlier than 2017-06-23 |
| 69 | 5.2 | Reunión de cierre de proyecto |  | 1d | 2017-06-26 | 2017-06-26 | 66 | 0d |  | start no earlier than 2017-06-23 |
