# 6. Anexo2_Cronograma de proyecto 21022017

Schedule from MS Project, 2017-01-06 to 2017-06-27.
Consultoria

## Calendars

- Estándar: Mon-Fri 08:00-12:00, 13:00-17:00; Sat-Sun off.

## Resources

| Resource |
| --- |
| Equipo de Trabajo |
| Jefe de Sistemas |
| Jose Agois |
| Cesar Chiappe |
| Juan Rivero |
| Analista Sist Sr |
| Producto 1 |
| Coordinador de Proyecto C&M |
| Producto 2 |
| GREP |
| OGTI |
| SISTEC |
| GNF |
| Arquietecto de Base de Datos |
| Analista de Base de Datos |
| Arquitecto de Base de Datos |
| Analista Programador WEB |
| Analista de Pruebas de Software |
| Analista de Procesos |
| Equipo C&M |
| Revisor QA |

## Schedule

| ID | WBS | Task | Type | Duration | Start | Finish | Predecessors | Total slack | Free slack | Constraint | Resources | Work |
| --- | --- | --- | --- | --- | --- | --- | --- | --- | --- | --- | --- | --- |
| 1 | 1 | **Inicio** |  | 3d? | 2017-01-06 | 2017-01-10 |  | 119.5d |  |  |  |  |
| 2 | 1.1 | Presentación de documentos de inicio del proyecto |  | 1d? | 2017-01-06 | 2017-01-06 |  | 119.5d | 0d |  |  |  |
| 3 | 1.2 | Reunión de Kick Off con miembros del SIS |  | 1d? | 2017-01-09 | 2017-01-09 | 2 | 120d | 0d |  |  |  |
| 4 | 1.3 | Recepción de la documentación proporcionada por representantes de la GREP, OGTI y el Programa SISTEC, según lo establecido en el TDR |  | 1d? | 2017-01-10 | 2017-01-10 | 3 | 120d |  |  |  |  |
| 5 | 2 | **Planificación: Plan de trabajo y metodología de Gestión** |  | 5d? | 2017-01-09 | 2017-01-16 |  | 113.5d |  |  |  | 168h |
| 6 | 2.1 | Elaboración Plan de Trabajo y Metodología de Gestión |  | 2.5d | 2017-01-09 | 2017-01-11 | 2 | 119.5d |  |  | Coordinador de Proyecto C&M; Analista de Procesos | 40h |
| 7 | 2.2 | Elaboración del cronograma del proyecto |  | 2.5d | 2017-01-09 | 2017-01-11 | 2 | 119.5d |  |  | Coordinador de Proyecto C&M; Analista de Procesos | 40h |
| 8 | 2.3 | Revisión interna por equipo de Calidad del "Plan de trabajo, Cronograma y Metodología de Gestión" |  | 1d | 2017-01-09 | 2017-01-09 | 2 | 120.5d | 0d |  | Coordinador de Proyecto C&M; GREP; OGTI; SISTEC; GNF | 40h |
| 9 | 2.4 | Entregables de Planificación |  | 0.5d | 2017-01-10 | 2017-01-10 | 8 | 120.5d |  |  | Coordinador de Proyecto C&M; Analista de Procesos | 8h |
| 10 | 2.5 | Entrevista |  | 1d? | 2017-01-13 | 2017-01-13 |  | 109.5d | 0d | start no earlier than 2017-01-13 | Coordinador de Proyecto C&M; GNF; GREP; OGTI; SISTEC | 40h |
| 11 | 2.6 | Hito: Entregable Producto 1 | milestone | 0d | 2017-01-16 | 2017-01-16 | 10 | 109.5d | 0d | start no earlier than 2017-01-16 | Coordinador de Proyecto C&M; Analista de Procesos |  |
| 12 | 3 | **Ejecución** |  | 100d? | 2017-01-16 | 2017-06-02 |  | 17d |  |  |  | 3792h |
| 13 | 3.1 | **Analisis y elaboración de Propuesta de Mejora de Procesos** |  | 16d? | 2017-01-16 | 2017-02-06 |  | 66.5d |  |  |  | 520h |
| 14 | 3.1.1 | **Analisis de la Situación Actual** |  | 7.5d | 2017-01-16 | 2017-01-25 |  | 109.5d |  |  |  | 120h |
| 15 | 3.1.1.1 | Identificación de las actividades y procesos asociados con el proceso de Reconsideraciones, grupos de interés y actores involucrados |  | 7.5d | 2017-01-16 | 2017-01-25 | 11 | 109.5d |  |  | Coordinador de Proyecto C&M; Analista de Procesos | 120h |
| 16 | 3.1.2 | **Propuesta de Mejora de Procesos** |  | 15d? | 2017-01-17 | 2017-02-06 |  | 65.5d |  |  |  | 400h |
| 17 | 3.1.2.1 | Definición de oportunidades de mejora de los procesos |  | 15d | 2017-01-17 | 2017-02-06 |  | 101d |  | start no earlier than 2017-01-17 | Coordinador de Proyecto C&M | 120h |
| 18 | 3.1.2.2 | Elaboración de la caracterización de los procesos propuestos usando diagramación BPMN v2.0 |  | 5d | 2017-01-17 | 2017-01-23 |  | 111d |  | start no earlier than 2017-01-17 | Coordinador de Proyecto C&M; Analista de Procesos; Arquietecto de Base de Datos | 120h |
| 19 | 3.1.2.3 | Elaboración de Catálogo de Requerimientos del Negocio de los procesos propuestos |  | 5d | 2017-01-17 | 2017-01-23 |  | 65.5d | 0d | start no earlier than 2017-01-17 | Coordinador de Proyecto C&M; Analista de Procesos; Arquitecto de Base de Datos | 120h |
| 20 | 3.1.2.4 | Entrevista |  | 1d? | 2017-01-20 | 2017-01-20 |  | 112d |  | start no earlier than 2017-01-20 | Coordinador de Proyecto C&M; GNF; GREP; OGTI; SISTEC | 40h |
| 21 | 3.2 | Hito : Entregable Producto 2 | milestone | 0d | 2017-01-23 | 2017-01-23 | 19 | 65.5d | 0d |  | Coordinador de Proyecto C&M |  |
| 22 | 3.3 | **Diseño: Base de Datos Funcional y Técnico del Módulo de Reconsideraciones** |  | 24d? | 2017-01-24 | 2017-02-24 |  | 65.5d |  |  |  | 1136h |
| 23 | 3.3.1 | **Rediseñar el Modelo de Base de Datos Actual** |  | 9d | 2017-01-24 | 2017-02-03 |  | 102d |  |  |  | 528h |
| 24 | 3.3.1.1 | Analizar la arquitectura y estructura de la Base de datos actual |  | 8d | 2017-01-24 | 2017-02-02 | 21 | 103d |  |  | Arquitecto de Base de Datos; Analista de Base de Datos | 128h |
| 25 | 3.3.1.2 | Revisar diseño de tablas y modelo existente |  | 8d | 2017-01-24 | 2017-02-02 | 21 | 103d |  |  | Arquitecto de Base de Datos; Analista de Base de Datos | 128h |
| 26 | 3.3.1.3 | Desarrollar Modelo Logico |  | 8d | 2017-01-24 | 2017-02-02 | 21 | 103d |  |  | Arquitecto de Base de Datos; Analista de Base de Datos | 128h |
| 27 | 3.3.1.4 | Desarrollar Modelo Fisico |  | 9d | 2017-01-24 | 2017-02-03 | 21 | 102d |  |  | Arquitecto de Base de Datos; Analista de Base de Datos | 144h |

Notes:
- 11: Producto 1

| ID | WBS | Task | Type | Duration | Start | Finish | Predecessors | Total slack | Free slack | Constraint | Resources | Work |
| --- | --- | --- | --- | --- | --- | --- | --- | --- | --- | --- | --- | --- |
| 28 | 3.3.2 | **Diseño Funcional** |  | 12d? | 2017-01-24 | 2017-02-08 |  | 65.5d |  |  |  | 328h |
| 29 | 3.3.2.1 | Elaboración el Catálogo de Requisitos Funcionales y No Funcionales del Nuevo Módulo |  | 6d | 2017-01-24 | 2017-01-31 | 21 | 105d |  |  | Equipo C&M | 48h |
| 30 | 3.3.2.2 | Elaboración de Matriz de Trazabilidad entre los procesos, Requerimientos de Negocio y Requisitos Funcionales |  | 6d | 2017-01-24 | 2017-01-31 | 21 | 105d |  |  | Equipo C&M | 48h |
| 31 | 3.3.2.3 | Identificación de Casos de Uso del Sistema |  | 6d | 2017-01-24 | 2017-01-31 | 21 | 105d |  |  | Equipo C&M | 48h |
| 32 | 3.3.2.4 | Elaboración de Prototipos de Usuario (Mockup) |  | 6d | 2017-01-24 | 2017-01-31 | 21 | 105d |  |  | Equipo C&M | 48h |
| 33 | 3.3.2.5 | Elaboración del Flujo de Trabajo |  | 12d | 2017-01-24 | 2017-02-08 | 21 | 65.5d | 0d |  | Equipo C&M | 96h |
| 34 | 3.3.2.6 | Entrevista |  | 1d? | 2017-01-27 | 2017-01-27 |  | 67.5d | 0d | start no earlier than 2017-01-27 | Coordinador de Proyecto C&M; GNF; GREP; OGTI; SISTEC | 40h |
| 35 | 3.3.3 | **Diseño Técnico** |  | 20d? | 2017-01-30 | 2017-02-24 |  | 67.5d |  |  |  | 192h |
| 36 | 3.3.3.1 | Plantear y Diagramar la Arquitectura Candidata del Nuevo Módulo de Reconsideraciones mediante diagramas UML, según el Modelo 4+1 |  | 6d | 2017-01-30 | 2017-02-06 | 34 | 67.5d | 2d |  | Equipo C&M | 48h |
| 37 | 3.3.3.2 | Entrevista |  | 1d? | 2017-02-03 | 2017-02-03 |  | 102d |  | start no earlier than 2017-02-03 | Coordinador de Proyecto C&M; GNF; GREP; OGTI; Producto 2; SISTEC | 48h |
| 38 | 3.3.3.3 | Definición de nueva arquitectura y estructura de base de datos en módelo físico y lógico |  | 12d | 2017-02-09 | 2017-02-24 | 33 | 87d |  |  | Equipo C&M | 96h |
| 39 | 3.3.4 | **Elaboración de Arquitectura de Plataforma Tecnológica a proponer** |  | 3d? | 2017-02-09 | 2017-02-13 | 33 | 65.5d | 0d |  |  | 88h |
| 40 | 3.3.4.1 | Interfaz de Usuario |  | 3d | 2017-02-09 | 2017-02-13 | 36 | 65.5d |  |  | Equipo C&M | 24h |
| 41 | 3.3.4.2 | Arquitectura de Componentes |  | 3d | 2017-02-09 | 2017-02-13 | 36 | 65.5d |  |  | Equipo C&M | 24h |
| 42 | 3.3.4.3 | Entrevista |  | 1d? | 2017-02-10 | 2017-02-10 |  | 66.5d |  | start no earlier than 2017-02-10 | Coordinador de Proyecto C&M; GNF; GREP; OGTI; SISTEC | 40h |
| 43 | 3.4 | Hito : Entregable Producto 3 | milestone | 0d | 2017-02-13 | 2017-02-13 | 39 | 65.5d | 0d |  | Coordinador de Proyecto C&M |  |
| 44 | 3.5 | **Registro de Reconsideraciones - Iteración 1** |  | 24d? | 2017-02-14 | 2017-03-17 |  | 65.5d |  |  |  | 632h |
| 45 | 3.5.1 | **Construcción** |  | 19d? | 2017-02-14 | 2017-03-10 |  | 65.5d |  |  |  | 496h |
| 46 | 3.5.1.1 | Adecuación del Formulario de Prestaciones en el SIASIS |  | 10.5d | 2017-02-14 | 2017-02-28 | 43 | 85.5d |  |  | Equipo C&M; Revisor QA | 168h |
| 47 | 3.5.1.2 | Adecuación del proceso de Consolidación y Supervisión automática de las prestaciones |  | 10.5d | 2017-02-14 | 2017-02-28 | 43 | 65.5d | 0d |  | Equipo C&M; Revisor QA | 168h |
| 48 | 3.5.1.3 | Entrevista |  | 1d? | 2017-02-17 | 2017-02-17 |  | 92d |  | start no earlier than 2017-02-17 | Coordinador de Proyecto C&M; GNF; GREP; OGTI; SISTEC | 40h |
| 49 | 3.5.1.4 | Entrevista |  | 1d? | 2017-02-24 | 2017-02-24 |  | 87d |  | start no earlier than 2017-02-24 | Coordinador de Proyecto C&M; GNF; GREP; OGTI; SISTEC | 40h |
| 50 | 3.5.1.5 | Entrevista |  | 1d? | 2017-03-03 | 2017-03-03 |  | 82d |  | start no earlier than 2017-03-03 | Coordinador de Proyecto C&M; GNF; GREP; OGTI; SISTEC | 40h |
| 51 | 3.5.1.6 | Entrevista |  | 1d? | 2017-03-10 | 2017-03-10 |  | 77d |  | start no earlier than 2017-03-10 | Coordinador de Proyecto C&M; GNF; GREP; OGTI; SISTEC | 40h |
| 52 | 3.5.2 | Despliegue e integración con los procesos informáticos y aplicativos del SIS |  | 2d | 2017-02-28 | 2017-03-02 | 47 | 83.5d |  |  | Analista Programador WEB; Revisor QA | 32h |
| 53 | 3.5.3 | Entrevista |  | 1d? | 2017-03-17 | 2017-03-17 |  | 72d |  | start no earlier than 2017-03-17 | Coordinador de Proyecto C&M; GNF; GREP; OGTI; SISTEC | 40h |
| 54 | 3.5.4 | Pruebas y Validación de Usuarios |  | 2d | 2017-02-28 | 2017-03-02 | 47 | 65.5d | 0d |  | Analista de Base de Datos; Analista Programador WEB | 32h |
| 55 | 3.5.5 | Capacitación |  | 4d | 2017-03-02 | 2017-03-08 | 54 | 65.5d | 0d |  | Analista Programador WEB | 32h |
| 56 | 3.6 | Hito: Entregable Producto 4 | milestone | 0d | 2017-03-08 | 2017-03-08 | 55 | 65.5d | 0d |  | Coordinador de Proyecto C&M |  |

| ID | WBS | Task | Type | Duration | Start | Finish | Predecessors | Total slack | Free slack | Constraint | Resources | Work |
| --- | --- | --- | --- | --- | --- | --- | --- | --- | --- | --- | --- | --- |
| 57 | 3.7 | **Evaluacion Prestacional de Reconsideraciones - Iteración 2** |  | 35.5d? | 2017-03-08 | 2017-04-26 |  | 44d |  |  |  | 608h |
| 58 | 3.7.1 | **Construcción** |  | 27.5d? | 2017-03-08 | 2017-04-14 |  | 52d |  |  |  | 480h |
| 59 | 3.7.1.1 | Desarrollo del Sub Módulo de Evaluación de Reconsideraciones alineado con el proceso de Supervisión Médica Electrónica (SME) |  | 10d | 2017-03-08 | 2017-03-22 | 56 | 69.5d |  |  | Equipo C&M; Revisor QA | 160h |
| 60 | 3.7.1.2 | Desarrollo del Sub Módulo de Administración de Parámetros |  | 10d | 2017-03-08 | 2017-03-22 | 56 | 65.5d | 0d |  | Equipo C&M; Revisor QA | 160h |
| 61 | 3.7.1.3 | Entrevista |  | 1d? | 2017-03-24 | 2017-03-24 |  | 67d |  | start no earlier than 2017-03-24 | Coordinador de Proyecto C&M; GNF; GREP; OGTI; SISTEC | 40h |
| 62 | 3.7.1.4 | Entrevista |  | 1d? | 2017-03-31 | 2017-03-31 |  | 62d |  | start no earlier than 2017-03-31 | Coordinador de Proyecto C&M; GNF; GREP; OGTI; SISTEC | 40h |
| 63 | 3.7.1.5 | Entrevista |  | 1d? | 2017-04-07 | 2017-04-07 |  | 57d |  | start no earlier than 2017-04-07 | Coordinador de Proyecto C&M; GNF; GREP; OGTI; SISTEC | 40h |
| 64 | 3.7.1.6 | Entrevista |  | 1d? | 2017-04-14 | 2017-04-14 |  | 52d |  | start no earlier than 2017-04-14 | Coordinador de Proyecto C&M; GNF; GREP; OGTI; SISTEC | 40h |
| 65 | 3.7.2 | Despliegue e integración con los procesos informáticos y procesos del SIS |  | 4d | 2017-03-22 | 2017-03-28 | 60 | 65.5d |  |  | Equipo C&M | 32h |
| 66 | 3.7.3 | Pruebas y Validación de Usuarios |  | 2d | 2017-03-22 | 2017-03-24 | 60 | 67.5d |  |  | Analista de Base de Datos; Analista Programador WEB | 32h |
| 67 | 3.7.4 | Entrevista |  | 1d? | 2017-04-21 | 2017-04-21 |  | 25d | 0d | start no earlier than 2017-04-21 | Coordinador de Proyecto C&M; GNF; GREP; OGTI; SISTEC | 40h |
| 68 | 3.7.5 | Capacitación |  | 3d | 2017-04-24 | 2017-04-26 | 67 | 25d | 0d |  | Analista Programador WEB | 24h |
| 69 | 3.8 | Hito: Entregable Producto 5 | milestone | 0d | 2017-04-26 | 2017-04-26 | 68 | 25d | 0d |  | Coordinador de Proyecto C&M |  |
| 70 | 3.9 | **Valorización y Reporte de Reconsideraciones - Iteración 3** |  | 27d? | 2017-04-27 | 2017-06-02 |  | 17d |  |  |  | 896h |
| 71 | 3.9.1 | **Construcción** |  | 17d? | 2017-04-27 | 2017-05-19 |  | 25d |  |  |  | 456h |
| 72 | 3.9.1.1 | Desarrollo del Sub Módulo de Valorización de Reconsideraciones |  | 9.5d | 2017-04-27 | 2017-05-10 | 69 | 34.5d |  |  | Analista Programador WEB; Revisor QA | 152h |
| 73 | 3.9.1.2 | Desarrollo del Sub Módulo de Reportes y Consultas de Reconsideraciones |  | 9d | 2017-04-27 | 2017-05-09 | 69 | 25d | 0d |  | Analista Programador WEB; Revisor QA | 144h |
| 74 | 3.9.1.3 | Entrevista |  | 1d? | 2017-04-28 | 2017-04-28 |  | 42d |  | start no earlier than 2017-04-28 | Coordinador de Proyecto C&M; GNF; GREP; OGTI; SISTEC | 40h |
| 75 | 3.9.1.4 | Entrevista |  | 1d? | 2017-05-05 | 2017-05-05 |  | 37d |  | start no earlier than 2017-05-05 | Coordinador de Proyecto C&M; GNF; GREP; OGTI; SISTEC | 40h |
| 76 | 3.9.1.5 | Entrevista |  | 1d? | 2017-05-12 | 2017-05-12 |  | 32d |  | start no earlier than 2017-05-12 | Coordinador de Proyecto C&M; GNF; GREP; OGTI; SISTEC | 40h |
| 77 | 3.9.1.6 | Entrevista |  | 1d? | 2017-05-19 | 2017-05-19 |  | 27d |  | start no earlier than 2017-05-19 | Coordinador de Proyecto C&M; GNF; GREP; OGTI; SISTEC | 40h |
| 78 | 3.9.2 | Despliegue e integración con lo desarrollado en la Iteración 1 |  | 5d | 2017-05-10 | 2017-05-16 | 73 | 25d | 0d |  | Analista Programador WEB | 40h |
| 79 | 3.9.3 | Reunion de Coordinacion |  | 1d? | 2017-05-26 | 2017-05-26 |  | 17d | 0d | start no earlier than 2017-05-26 | Coordinador de Proyecto C&M; GNF; GREP; OGTI; SISTEC | 40h |
| 80 | 3.9.4 | Pruebas y Validación de los usuarios |  | 5d | 2017-05-29 | 2017-06-02 | 79 | 17d |  |  | Analista de Pruebas de Software | 40h |
| 81 | 3.9.5 | Capacitación |  | 5d | 2017-05-17 | 2017-05-23 | 78 | 25d |  |  | Analista Programador WEB | 40h |
| 82 | 3.9.6 | Reunión del área técnica |  | 1d | 2017-05-17 | 2017-05-17 | 78 | 29d |  |  | Arquitecto de Base de Datos; Analista de Base de Datos; OGTI; SISTEC; Analista Programador WEB | 40h |
| 83 | 3.9.7 | Transferencia Tecnológica |  | 5d | 2017-05-17 | 2017-05-23 | 78 | 25d | 0d |  | Arquitecto de Base de Datos; Analista de Base de Datos; OGTI; SISTEC; Analista Programador WEB | 200h |
| 84 | 3.9.8 | Entrevista |  | 1d? | 2017-06-02 | 2017-06-02 |  | 17d |  | start no earlier than 2017-06-02 | Coordinador de Proyecto C&M; GNF; GREP; OGTI; SISTEC | 40h |
| 85 | 3.10 | Hito: Entregable Producto 5 | milestone | 0d | 2017-05-23 | 2017-05-23 | 83 | 25d |  |  | Coordinador de Proyecto C&M |  |

| ID | WBS | Task | Duration | Start | Finish | Predecessors | Total slack | Free slack | Constraint | Resources | Work |
| --- | --- | --- | --- | --- | --- | --- | --- | --- | --- | --- | --- |
| 86 | 4 | **Seguimiento** | 121d? | 2017-01-06 | 2017-06-23 |  | 1d |  |  |  | 5320h |
| 87 | 4.1 | Reuniones del Comité de Dirección del Proyecto | 121d? | 2017-01-06 | 2017-06-23 |  | 1d | 0d | start no earlier than 2017-01-06 | Coordinador de Proyecto C&M; GNF; GREP; OGTI; SISTEC | 4840h |
| 88 | 4.2 | Reunion de Seguimiento 1 | 1d? | 2017-01-20 | 2017-01-20 |  | 112d |  | start no earlier than 2017-01-20 | Coordinador de Proyecto C&M; GNF; GREP; OGTI; SISTEC | 40h |
| 89 | 4.3 | Reunion de Seguimiento 2 | 1d? | 2017-02-03 | 2017-02-03 |  | 102d |  | start no earlier than 2017-02-03 | Coordinador de Proyecto C&M; GNF; GREP; OGTI; SISTEC | 40h |
| 90 | 4.4 | Reunion de Seguimiento 3 | 1d? | 2017-02-17 | 2017-02-17 |  | 92d |  | start no earlier than 2017-02-17 | Coordinador de Proyecto C&M; GNF; GREP; OGTI; SISTEC | 40h |
| 91 | 4.5 | Reunion de Seguimiento 4 | 1d? | 2017-03-03 | 2017-03-03 |  | 82d |  | start no earlier than 2017-03-03 | Coordinador de Proyecto C&M; GNF; GREP; OGTI; SISTEC | 40h |
| 92 | 4.6 | Reunion de Seguimiento 5 | 1d? | 2017-03-17 | 2017-03-17 |  | 72d |  | start no earlier than 2017-03-17 | Coordinador de Proyecto C&M; GNF; GREP; OGTI; SISTEC | 40h |
| 93 | 4.7 | Reunion de Seguimiento 6 | 1d? | 2017-03-31 | 2017-03-31 |  | 62d |  | start no earlier than 2017-03-31 | Coordinador de Proyecto C&M; GNF; GREP; OGTI; SISTEC | 40h |
| 94 | 4.8 | Reunion de Seguimiento 7 | 1d? | 2017-04-14 | 2017-04-14 |  | 52d |  | start no earlier than 2017-04-14 | Coordinador de Proyecto C&M; GNF; GREP; OGTI; SISTEC | 40h |
| 95 | 4.9 | Reunion de Seguimiento 8 | 1d? | 2017-04-28 | 2017-04-28 |  | 42d |  | start no earlier than 2017-04-28 | Coordinador de Proyecto C&M; GNF; GREP; OGTI; SISTEC | 40h |
| 96 | 4.10 | Reunion de Seguimiento 9 | 1d? | 2017-05-05 | 2017-05-05 |  | 37d |  | start no earlier than 2017-05-05 | Coordinador de Proyecto C&M; GNF; GREP; OGTI; SISTEC | 40h |
| 97 | 4.11 | Reunion de Seguimiento 10 | 1d? | 2017-05-26 | 2017-05-26 |  | 22d |  | start no earlier than 2017-05-26 | Coordinador de Proyecto C&M; GNF; GREP; OGTI; SISTEC | 40h |
| 98 | 4.12 | Reunion de Seguimiento 11 | 1d? | 2017-06-09 | 2017-06-09 |  | 12d |  | start no earlier than 2017-06-09 | Coordinador de Proyecto C&M; GNF; GREP; OGTI; SISTEC | 40h |
| 99 | 4.13 | Reunion de Seguimiento 12 | 1d? | 2017-06-23 | 2017-06-23 |  | 0d |  | start no earlier than 2017-06-23 | Coordinador de Proyecto C&M; GNF; GREP; OGTI; SISTEC | 40h |
| 100 | 5 | **Cierre** | 2d? | 2017-06-26 | 2017-06-27 |  | 0d |  |  |  | 80h |
| 101 | 5.1 | Entrevista | 1d? | 2017-06-26 | 2017-06-26 | 99 | 0d |  |  |  |  |
| 102 | 5.2 | Reunión de Lecciones aprendidas | 1d | 2017-06-27 | 2017-06-27 | 101 | 0d |  | start no earlier than 2017-06-23 | Coordinador de Proyecto C&M; GNF; GREP; OGTI; SISTEC | 40h |
| 103 | 5.3 | Reunión de cierre de proyecto | 1d | 2017-06-26 | 2017-06-26 | 87 | 1d |  | start no earlier than 2017-06-23 | Coordinador de Proyecto C&M; GNF; GREP; OGTI; SISTEC | 40h |
