# Plan de Trabajo CEI

Schedule from MS Project, 2018-04-23 to 2018-06-29, status date 2018-05-22, costs in S/., A marks actual dates.

## Calendars

- Estándar: Mon-Fri 09:00-13:00, 15:00-19:00; Sat-Sun off. Exceptions (off unless hours are given): 2018-05-01 (Dia del Trabajo).

## Resources

| Resource |
| --- |
| VMENDIETA |
| KAVILES |
| AV |
| CH |
| AV. CH |
| JPI |
| DESARROLLO |
| MPURILLA |
| WGALINDEZ |
| MPURILLA-1 |
| EYATACO |
| PESPINOZA |
| AREYES |
| JQUENTA |
| MPURILLA-2 |
| JPI-1 |
| 2 |
| JPI-2 |
| DAIA |
| DGIT |
| DAT |
| DCC |
| JSALVADOR |
| DDSANA-0 |
| DDSANA-3 |
| DAIA-1 |
| DGIT-1 |
| DAT-1 |
| VMENSIETA |
| OPERACIONES |
| CQUENTA |
| JANTON |
| DDST1 |
| DCC1 |

## Schedule

| ID | WBS | Task | Type | Duration | Start | Finish | Predecessors | Complete | Remaining | Baseline start | Baseline finish | Baseline duration | Total slack | Free slack | Resources | Work | Actual work | Cost | Baseline cost | Actual cost | % Avance Real | Sem | Tarea Critica |
| --- | --- | --- | --- | --- | --- | --- | --- | --- | --- | --- | --- | --- | --- | --- | --- | --- | --- | --- | --- | --- | --- | --- | --- |
| 1 | 1 | **Control Electrónico del IGV** |  | 49d | 2018-04-23 A | 2018-06-29 |  | 70% | 14.6d | 2018-04-23 | 2018-06-29 | 49d | 0d |  |  | 2280h | 1812h | 173.39 | 246 | 100 | 39.50% | rojo |  |
| 2 | 1.1 | **Disponibilidad de Información** |  | 41d | 2018-04-23 A | 2018-06-19 |  | 57% | 17.73d | 2018-04-23 | 2018-06-19 | 41d | 8d |  |  |  |  | 21.09 | 49 |  | 39.49% | anaranjado |  |
| 3 | 1.1.1 | **Control de Calidad** |  | 41d | 2018-04-23 A | 2018-06-19 |  | 57% | 17.61d | 2018-04-23 | 2018-06-19 | 41d | 8d |  |  |  |  | 20.09 | 47 |  | 40.74% | anaranjado |  |
| 4 | 1.1.1.1 | Revisar Modelo de IGV - Teradata |  | 6d | 2018-04-23 A | 2018-04-30 A |  | 100% |  | 2018-04-23 | 2018-04-30 | 6d |  |  |  |  |  |  | 6 |  | 80.00% | rojo | naranja |
| 5 | 1.1.1.2 | Revisar Modelo de PN – Teradata |  | 41d | 2018-04-23 A | 2018-06-19 |  | 51% | 20.19d | 2018-04-23 | 2018-06-19 | 41d | 8d | 0d |  |  |  | 20.09 | 41 |  | 35.00% | anaranjado | naranja |
| 6 | 1.1.2 | **Implantación** |  | 36d | 2018-04-30 A | 2018-06-19 |  | 50% | 18d | 2018-04-30 | 2018-06-19 | 36d | 8d |  |  |  |  | 1 | 2 |  | 10.00% | anaranjado |  |
| 7 | 1.1.2.1 | Modelo de IGV - Teradata |  | 1d | 2018-04-30 A | 2018-04-30 A | 4FS-1d | 100% |  | 2018-04-30 | 2018-04-30 | 1d |  |  |  |  |  |  | 1 |  | 20.00% | rojo | naranja |
| 8 | 1.1.2.2 | Modelo de PN – Teradata |  | 1d | 2018-06-19 | 2018-06-19 | 5FS-1d |  |  | 2018-06-19 | 2018-06-19 | 1d | 8d | 0d |  |  |  | 1 | 1 |  | 0.00% | verde | blanco |
| 9 | 1.1.3 | Entregable: Modelo del IGV y PN -Teradata - Implementado | milestone | 0d | 2018-06-19 | 2018-06-19 | 8, 7 |  |  | 2018-06-19 | 2018-06-19 |  | 8d |  |  |  |  |  |  |  |  | verde | blanco |
| 10 | 1.2 | **Gestión de Riesgo del Cumplimiento Tributario del IGV** |  | 49d | 2018-04-23 A | 2018-06-29 |  | 74% | 12.96d | 2018-04-23 | 2018-06-29 | 49d | 0d |  |  | 2280h | 1812h | 152.3 | 197 | 100 | 39.50% | rojo |  |
| 11 | 1.2.1 | **Matriz de Riesgo del Contribuyente** |  | 49d | 2018-04-23 A | 2018-06-29 |  | 74% | 12.96d | 2018-04-23 | 2018-06-29 | 49d | 0d |  |  | 2280h | 1812h | 152.3 | 197 | 100 | 39.50% | rojo | rojo |
| 12 | 1.2.1.1 | **Arquitectura** |  | 45d | 2018-04-23 A | 2018-06-25 |  | 78% | 9.68d | 2018-04-23 | 2018-06-25 | 45d | 4d |  |  | 1120h | 979.5h | 11.3 | 52 |  | 10.79% | anaranjado |  |
| 13 | 1.2.1.1.1 | **Construcción** |  | 45d | 2018-04-23 A | 2018-06-25 |  | 83% | 7.68d | 2018-04-23 | 2018-06-25 | 45d | 4d |  |  | 1056h | 955.5h | 8.3 | 48 |  | 11.69% | anaranjado |  |
| 14 | 1.2.1.1.1.1 | Ambiente Desarrollo |  | 19d | 2018-04-23 A | 2018-05-18 A |  | 100% |  | 2018-04-23 | 2018-05-18 | 19d |  |  | DAIA; DGIT; DAT | 456h | 456h |  | 19 |  | 15.00% | rojo | naranja |
| 15 | 1.2.1.1.1.2 | Ambiente Calidad |  | 23d | 2018-04-23 A | 2018-05-24 |  | 90% | 2.19d | 2018-04-23 | 2018-05-24 | 23d | 23d | 0d | DAIA-1; DGIT-1; DAT-1 | 552h | 499.5h | 2.3 | 23 |  | 12.00% | anaranjado | naranja |
| 16 | 1.2.1.1.1.3 | Elaboración de Documentación Técnica e Instrucctivo. |  | 6d | 2018-06-18 | 2018-06-25 | 14FS+20d |  |  | 2018-06-18 | 2018-06-25 | 6d | 4d |  | DAIA | 48h |  | 6 | 6 |  | 0.00% | verde | blanco |
| 17 | 1.2.1.1.2 | **Implantación** |  | 5d | 2018-05-21 A | 2018-05-25 |  | 50% | 2.5d | 2018-05-21 | 2018-05-25 | 5d | 25d |  |  | 48h | 24h | 1 | 2 |  | 0.00% | anaranjado |  |
| 18 | 1.2.1.1.2.1 | Ambiente de Desarrollo |  | 1d | 2018-05-21 A | 2018-05-21 A | 14 | 100% |  | 2018-05-21 | 2018-05-21 | 1d |  |  | DAIA; DGIT; DAT | 24h | 24h |  | 1 |  | 0.00% | rojo | rojo |
| 19 | 1.2.1.1.2.2 | Ambiente de Calidad |  | 1d | 2018-05-25 | 2018-05-25 | 15 |  |  | 2018-05-25 | 2018-05-25 | 1d | 23d | 0d | DAIA-1; DGIT-1; DAT-1 | 24h |  | 1 | 1 |  | 0.00% | verde | blanco |
| 20 | 1.2.1.1.2.3 | Entregable: Ambientes de Desarrollo y Calidad | milestone | 0d | 2018-05-25 | 2018-05-25 | 19, 18 |  |  | 2018-05-25 | 2018-05-25 |  | 25d |  |  |  |  |  |  |  |  | verde | blanco |
| 21 | 1.2.1.1.3 | **Post Implantación** |  | 2d | 2018-05-28 | 2018-05-29 |  |  |  | 2018-05-28 | 2018-05-29 | 2d | 23d |  |  | 16h |  | 2 | 2 |  | 0.00% | verde |  |
| 22 | 1.2.1.1.3.1 | Pruebas de rendimiento |  | 2d | 2018-05-28 | 2018-05-29 | 19 |  |  | 2018-05-28 | 2018-05-29 | 2d | 23d |  | DCC | 16h |  | 2 | 2 |  | 0.00% | verde | blanco |
| 23 | 1.2.1.2 | **Desarrollo** |  | 24d | 2018-04-23 A | 2018-05-25 |  | 87% | 3.19d | 2018-04-23 | 2018-05-25 | 24d | 0d |  |  | 960h | 832.5h | 116 | 120 | 100 | 60.17% | rojo |  |
| 24 | 1.2.1.2.1 | Matriz PRC - Variable de Condición de Domicilio - Estado del Contribuyente |  | 19d | 2018-04-23 A | 2018-05-18 A |  | 100% |  | 2018-04-23 | 2018-05-18 | 19d |  |  | WGALINDEZ | 152h | 152h | 19 | 19 | 19 | 100.00% | verde | verde |
| 25 | 1.2.1.2.2 | Matriz PRC - Variable de Omiso a la Declaración MEPECO |  | 19d | 2018-04-23 A | 2018-05-18 A |  | 100% |  | 2018-04-23 | 2018-05-18 | 19d |  |  | KAVILES | 152h | 152h | 19 | 19 | 19 | 100.00% | verde | verde |
| 26 | 1.2.1.2.3 | Matriz PRC - Variable de Omiso a la Declaración PRICO |  | 19d | 2018-04-23 A | 2018-05-18 A |  | 100% |  | 2018-04-23 | 2018-05-18 | 19d |  |  | EYATACO | 152h | 152h | 19 | 19 | 19 | 80.00% | rojo | naranja |
| 27 | 1.2.1.2.4 | Matriz PRC - Variable Omisos Libros Electrónicos - Padrón acotado |  | 19d | 2018-04-23 A | 2018-05-18 A |  | 100% |  | 2018-04-23 | 2018-05-18 | 19d |  |  | VMENDIETA | 152h | 152h | 19 | 19 | 19 | 80.00% | rojo | naranja |
| 28 | 1.2.1.2.5 | Matriz PRC - Servicio de Perfil |  | 19d | 2018-04-23 A | 2018-05-18 A |  | 100% |  | 2018-04-23 | 2018-05-18 | 19d |  |  | JQUENTA | 152h | 152h | 19 | 19 | 19 | 20.00% | rojo | naranja |

| ID | WBS | Task | Type | Duration | Start | Finish | Predecessors | Complete | Remaining | Baseline start | Baseline finish | Baseline duration | Total slack | Resources | Work | Actual work | Cost | Baseline cost | Actual cost | % Avance Real | Sem | Tarea Critica |
| --- | --- | --- | --- | --- | --- | --- | --- | --- | --- | --- | --- | --- | --- | --- | --- | --- | --- | --- | --- | --- | --- | --- |
| 29 | 1.2.1.2.6 | **Integración** |  | 5d | 2018-05-21 A | 2018-05-25 |  | 36% | 3.19d | 2018-05-21 | 2018-05-25 | 5d | 0d |  | 200h | 72.5h | 21 | 25 | 5 | 0.00% | rojo |  |
| 30 | 1.2.1.2.6.1 | Matriz PRC - Variable de Condición de Domicilio - Estado del Contribuyente |  | 5d | 2018-05-21 A | 2018-05-25 | 24 | 36% | 3.19d | 2018-05-21 | 2018-05-25 | 5d | 0d | WGALINDEZ | 40h | 14.5h | 4.2 | 5 | 1 | 0.00% | rojo | rojo |
| 31 | 1.2.1.2.6.2 | Matriz PRC - Variable de Omiso a la Declaración MEPECO |  | 5d | 2018-05-21 A | 2018-05-25 | 25 | 36% | 3.19d | 2018-05-21 | 2018-05-25 | 5d | 0d | KAVILES | 40h | 14.5h | 4.2 | 5 | 1 | 0.00% | rojo | rojo |
| 32 | 1.2.1.2.6.3 | Matriz PRC - Variable de Omiso a la Declaración PRICO |  | 5d | 2018-05-21 A | 2018-05-25 | 26 | 36% | 3.19d | 2018-05-21 | 2018-05-25 | 5d | 0d | EYATACO | 40h | 14.5h | 4.2 | 5 | 1 | 0.00% | rojo | rojo |
| 33 | 1.2.1.2.6.4 | Matriz PRC - Variable Omisos Libros Electrónicos - Padrón acotado |  | 5d | 2018-05-21 A | 2018-05-25 | 27 | 36% | 3.19d | 2018-05-21 | 2018-05-25 | 5d | 0d | VMENDIETA | 40h | 14.5h | 4.2 | 5 | 1 | 0.00% | rojo | rojo |
| 34 | 1.2.1.2.6.5 | Matriz PRC - Servicio de Perfil |  | 5d | 2018-05-21 A | 2018-05-25 | 28 | 36% | 3.19d | 2018-05-21 | 2018-05-25 | 5d | 0d | JQUENTA | 40h | 14.5h | 4.2 | 5 | 1 | 0.00% | rojo | rojo |
| 35 | 1.2.1.3 | **Control de Calidad** |  | 24d | 2018-05-28 | 2018-06-28 |  |  |  | 2018-05-28 | 2018-06-28 | 24d | 0d |  | 192h |  | 24 | 24 |  | 0.00% | verde |  |
| 36 | 1.2.1.3.1 | Matriz de Riesgo del Contribuyente |  | 24d | 2018-05-28 | 2018-06-28 | 34, 30, 31, 32, 33 |  |  | 2018-05-28 | 2018-06-28 | 24d | 0d | MPURILLA | 192h |  | 24 | 24 |  | 0.00% | verde | blanco |
| 37 | 1.2.1.4 | **Implantación** |  | 1d | 2018-06-29 | 2018-06-29 |  |  |  | 2018-06-29 | 2018-06-29 | 1d | 0d |  | 8h |  | 1 | 1 |  | 0.00% | verde |  |
| 38 | 1.2.1.4.1 | Instalación de Matriz de Riesgos del Contribuyente |  | 1d | 2018-06-29 | 2018-06-29 | 36 |  |  | 2018-06-29 | 2018-06-29 | 1d | 0d | OPERACIONES | 8h |  | 1 | 1 |  | 0.00% | verde | blanco |
| 39 | 1.2.1.5 | Entregable: Matriz de Riesgos del Contribuyente -Implementada | milestone | 0d | 2018-06-29 | 2018-06-29 | 38 |  |  | 2018-06-29 | 2018-06-29 |  | 0d |  |  |  |  |  |  |  | verde | blanco |
