# Plan de Trabajo CEI

Schedule from MS Project, 2018-04-23 to 2018-12-03, status date 2018-04-23, A marks actual dates.

## Calendars

- Estándar: Mon-Fri 09:00-13:00, 15:00-19:00; Sat-Sun off. Exceptions (off unless hours are given): 2018-05-01 (Dia del Trabajo).

## Resources

| Resource |
| --- |
| VMENDIETA |
| KAVILES |
| AV |
| CH |
| AV. CH |
| JPI |
| DESARROLLO |
| MPURILLA |
| WGALINDEZ |
| MPURILLA-1 |
| EYATACO |
| PESPINOZA |
| AREYES |
| JQUENTA |
| MPURILLA-2 |
| JPI-1 |
| 2 |
| JPI-2 |
| DAIA |
| DGIT |
| DAT |
| DCC |
| JSALVADOR |
| DDSANA-0 |
| DDSANA-3 |
| DAIA-1 |
| DGIT-1 |
| DAT-1 |
| VMENSIETA |
| OPERACIONES |
| CQUENTA |
| JANTON |
| DDST1 |
| DCC1 |
| LHONDERMAN |
| AGAMBOA |
| DESPINOZA |
| J.ANTON |

## Schedule

| ID | WBS | Task | Duration | Start | Finish | Predecessors | Remaining | Total slack | Free slack | Constraint | Resources | Work | Baseline cost | Estado Pj | Tarea Critica | % Avance Real - S |
| --- | --- | --- | --- | --- | --- | --- | --- | --- | --- | --- | --- | --- | --- | --- | --- | --- |
| 1 | 1 | **Control Electrónico del IGV** | 160d | 2018-04-23 A | 2018-12-03 |  | 159.91d | 0d |  |  |  | 2681h |  | verde |  |  |
| 2 | 1.1 | **Gestión del Proyecto** | 93.25d | 2018-04-23 | 2018-08-31 |  |  | 66.75d |  |  |  | 121h |  | verde |  |  |
| 3 | 1.1.1 | **Iniciación** | 6.25d | 2018-04-23 | 2018-05-02 |  |  | 66.75d |  |  |  | 50h |  | verde |  |  |
| 4 | 1.1.1.1 | **Project Charter** | 1.12d | 2018-04-23 | 2018-04-24 |  |  | 66.75d |  |  |  | 9h |  | verde |  |  |
| 5 | 1.1.1.1.1 | Elaborar el Project Charter | 1d | 2018-04-23 | 2018-04-23 |  |  | 66.75d | 0d |  | JANTON | 8h | 1 | verde | verde | 0.00% |
| 6 | 1.1.1.1.2 | Revisar el Project Charter | 1h | 2018-04-24 | 2018-04-24 | 5 |  | 150.75d | 0d |  | JANTON | 1h | 1 | verde | verde | 0.00% |
| 7 | 1.1.1.2 | **Scope Statement** | 5.12d | 2018-04-24 | 2018-05-02 |  |  | 150.75d |  |  |  | 41h |  | verde |  |  |
| 8 | 1.1.1.2.1 | Elaborar el Scope Statement | 5d | 2018-04-24 | 2018-05-02 | 6 |  | 150.75d | 0d |  | JANTON | 40h | 5 | verde | naranja | 0.00% |
| 9 | 1.1.1.2.2 | Revisar el Scope Statement | 1h | 2018-05-02 | 2018-05-02 | 8 |  | 150.75d | 0d |  | JANTON | 1h | 1 | verde | naranja | 0.00% |
| 10 | 1.1.2 | **Plan de Proyecto** | 3d | 2018-05-02 | 2018-05-07 |  |  | 150.75d |  |  |  | 24h |  | verde |  |  |
| 11 | 1.1.2.1 | Elaborar el Plan de Proyecto | 3d | 2018-05-02 | 2018-05-07 | 9 |  | 150.75d |  |  | JANTON | 24h | 3 | verde | naranja | 0.00% |
| 12 | 1.1.3 | **Informes de Estado del Proyecto** | 72.12d | 2018-05-18 | 2018-08-28 |  |  | 69.38d |  |  |  | 17h |  | verde |  |  |
| 13 | 1.1.3.1 | Informes de Estado del Proyecto 1 | 3h | 2018-05-18 | 2018-05-18 | 5FS+17d |  | 69.38d | 0d | start no earlier than 2014-03-03 | JANTON | 3h | 3 | verde | verde | 0.00% |
| 14 | 1.1.3.2 | Informes de Estado del Proyecto 2 | 1h | 2018-05-25 | 2018-05-25 | 13FS+5d |  | 69.38d | 0d | start no earlier than 2014-03-10 | JANTON | 1h | 1 | verde | rojo | 0.00% |
| 15 | 1.1.3.3 | Informes de Estado del Proyecto 3 | 1h | 2018-06-01 | 2018-06-01 | 14FS+5d |  | 69.38d | 0d | start no earlier than 2014-03-17 | JANTON | 1h | 1 | verde | rojo | 0.00% |
| 16 | 1.1.3.4 | Informes de Estado del Proyecto 4 | 1h | 2018-06-08 | 2018-06-08 | 15FS+5d |  | 69.38d | 0d | start no earlier than 2014-03-24 | JANTON | 1h | 1 | verde | rojo | 0.00% |
| 17 | 1.1.3.5 | Informes de Estado del Proyecto 5 | 1h | 2018-06-15 | 2018-06-15 | 16FS+5d |  | 69.38d | 0d | start no earlier than 2014-03-31 | JANTON | 1h | 1 | verde | rojo | 0.00% |
| 18 | 1.1.3.6 | Informes de Estado del Proyecto 6 | 1h | 2018-06-22 | 2018-06-22 | 17FS+5d |  | 69.38d | 0d | start no earlier than 2014-04-07 | JANTON | 1h | 1 | verde | blanco | 0.00% |
| 19 | 1.1.3.7 | Informes de Estado del Proyecto 7 | 1h | 2018-07-02 | 2018-07-02 | 18FS+5d |  | 69.38d | 0d | start no earlier than 2014-04-14 | JANTON | 1h | 1 | verde | blanco | 0.00% |
| 20 | 1.1.3.8 | Informes de Estado del Proyecto 8 | 1h | 2018-07-09 | 2018-07-09 | 19FS+5d |  | 69.38d | 0d | start no earlier than 2014-04-21 | JANTON | 1h | 1 | verde | blanco | 0.00% |
| 21 | 1.1.3.9 | Informes de Estado del Proyecto 9 | 1h | 2018-07-16 | 2018-07-16 | 20FS+5d |  | 69.38d | 0d | start no earlier than 2014-04-28 | JANTON | 1h | 1 | verde | blanco | 0.00% |
| 22 | 1.1.3.10 | Informes de Estado del Proyecto 10 | 1h | 2018-07-23 | 2018-07-23 | 21FS+5d |  | 69.38d | 0d | start no earlier than 2014-05-05 | JANTON | 1h | 1 | verde | blanco | 0.00% |
| 23 | 1.1.3.11 | Informes de Estado del Proyecto 11 | 1h | 2018-07-30 | 2018-07-30 | 22FS+5d |  | 69.38d | 0d | start no earlier than 2014-05-12 | JANTON | 1h | 1 | verde | blanco | 0.00% |
| 24 | 1.1.3.12 | Informes de Estado del Proyecto 12 | 1h | 2018-08-06 | 2018-08-06 | 23FS+5d |  | 69.38d | 0d | start no earlier than 2014-05-19 | JANTON | 1h | 1 | verde | blanco | 0.00% |
| 25 | 1.1.3.13 | Informes de Estado del Proyecto 13 | 1h | 2018-08-13 | 2018-08-13 | 24FS+5d |  | 69.38d | 0d | start no earlier than 2014-05-26 | JANTON | 1h | 1 | verde | blanco | 0.00% |
| 26 | 1.1.3.14 | Informes de Estado del Proyecto 14 | 1h | 2018-08-20 | 2018-08-20 | 25FS+5d |  | 69.38d | 0d | start no earlier than 2014-06-02 | JANTON | 1h | 1 | verde | blanco | 0.00% |
| 27 | 1.1.3.15 | Informes de Estado del Proyecto 15 | 1h | 2018-08-28 | 2018-08-28 | 26FS+5d |  | 69.38d | 2.62d | start no earlier than 2014-06-09 | JANTON | 1h | 1 | verde | blanco | 0.00% |

| ID | WBS | Task | Duration | Start | Finish | Predecessors | Total slack | Free slack | Constraint | Resources | Work | Baseline cost | Estado Pj | Tarea Critica | % Avance Real - S |
| --- | --- | --- | --- | --- | --- | --- | --- | --- | --- | --- | --- | --- | --- | --- | --- |
| 28 | 1.1.4 | **Reunión de Coordinación Semanal** | 73.75d | 2018-05-21 | 2018-08-30 |  | 66.75d |  |  |  | 30h |  | verde |  |  |
| 29 | 1.1.4.1 | Reunión de Coordinación Semanal 1 | 2h | 2018-05-21 | 2018-05-21 | 5FS+18d | 66.75d | 0d | start no earlier than 2014-03-03 | JANTON | 2h |  | verde | verde |  |
| 30 | 1.1.4.2 | Reunión de Coordinación Semanal 2 | 2h | 2018-05-28 | 2018-05-28 | 29FS+5d | 66.75d | 0d | start no earlier than 2014-03-10 | JANTON | 2h |  | verde | rojo |  |
| 31 | 1.1.4.3 | Reunión de Coordinación Semanal 3 | 2h | 2018-06-04 | 2018-06-04 | 30FS+5d | 66.75d | 0d | start no earlier than 2014-03-17 | JANTON | 2h |  | verde | rojo |  |
| 32 | 1.1.4.4 | Reunión de Coordinación Semanal 4 | 2h | 2018-06-11 | 2018-06-11 | 31FS+5d | 66.75d | 0d | start no earlier than 2014-03-24 | JANTON | 2h |  | verde | rojo |  |
| 33 | 1.1.4.5 | Reunión de Coordinación Semanal 5 | 2h | 2018-06-19 | 2018-06-19 | 32FS+5d | 66.75d | 0d | start no earlier than 2014-03-31 | JANTON | 2h |  | verde | rojo |  |
| 34 | 1.1.4.6 | Reunión de Coordinación Semanal 6 | 2h | 2018-06-26 | 2018-06-26 | 33FS+5d | 66.75d | 0d | start no earlier than 2014-04-07 | JANTON | 2h |  | verde | blanco |  |
| 35 | 1.1.4.7 | Reunión de Coordinación Semanal 7 | 2h | 2018-07-03 | 2018-07-03 | 34FS+5d | 66.75d | 0d | start no earlier than 2014-04-14 | JANTON | 2h |  | verde | blanco |  |
| 36 | 1.1.4.8 | Reunión de Coordinación Semanal 8 | 2h | 2018-07-10 | 2018-07-10 | 35FS+5d | 66.75d | 0d | start no earlier than 2014-04-21 | JANTON | 2h |  | verde | blanco |  |
| 37 | 1.1.4.9 | Reunión de Coordinación Semanal 9 | 2h | 2018-07-18 | 2018-07-18 | 36FS+5d | 66.75d | 0d | start no earlier than 2014-04-28 | JANTON | 2h |  | verde | blanco |  |
| 38 | 1.1.4.10 | Reunión de Coordinación Semanal 10 | 2h | 2018-07-25 | 2018-07-25 | 37FS+5d | 66.75d | 0d | start no earlier than 2014-05-05 | JANTON | 2h |  | verde | blanco |  |
| 39 | 1.1.4.11 | Reunión de Coordinación Semanal 11 | 2h | 2018-08-01 | 2018-08-01 | 38FS+5d | 66.75d | 0d | start no earlier than 2014-05-12 | JANTON | 2h |  | verde | blanco |  |
| 40 | 1.1.4.12 | Reunión de Coordinación Semanal 12 | 2h | 2018-08-08 | 2018-08-08 | 39FS+5d | 66.75d | 0d | start no earlier than 2014-05-19 | JANTON | 2h |  | verde | blanco |  |
| 41 | 1.1.4.13 | Reunión de Coordinación Semanal 13 | 2h | 2018-08-16 | 2018-08-16 | 40FS+5d | 66.75d | 0d | start no earlier than 2014-05-26 | JANTON | 2h |  | verde | blanco |  |
| 42 | 1.1.4.14 | Reunión de Coordinación Semanal 14 | 2h | 2018-08-23 | 2018-08-23 | 41FS+5d | 66.75d | 0d | start no earlier than 2014-06-02 | JANTON | 2h |  | verde | blanco |  |
| 43 | 1.1.4.15 | Reunión de Coordinación Semanal 15 | 2h | 2018-08-30 | 2018-08-30 | 42FS+5d | 66.75d | 0d | start no earlier than 2014-06-09 | JANTON | 2h |  | verde | blanco |  |
| 44 | 1.1.5 | **Cierre del Proyecto** | 0.5d | 2018-08-30 | 2018-08-31 |  | 66.75d |  |  |  |  |  | verde |  |  |
| 45 | 1.1.5.1 | Elaborar Documentos de Cierre del Proyecto | 4h | 2018-08-30 | 2018-08-31 | 27, 43 | 66.75d |  |  |  |  |  | verde | blanco |  |
| 46 | 1.2 | **Disponibilidad de Información** | 41d | 2018-04-23 | 2018-06-19 |  | 119d |  |  |  |  |  | verde |  |  |
| 47 | 1.2.1 | **Desarrollo** | 32d | 2018-04-23 | 2018-06-06 |  | 119d |  |  |  |  |  | verde | rojo |  |
| 48 | 1.2.1.1 | **Modelo de PN – Teradata** | 32d | 2018-04-23 | 2018-06-06 |  | 119d |  |  |  |  |  | verde | rojo |  |
| 49 | 1.2.1.1.1 | DWE Insumos PPNN - Vehiculos Adquiridos | 32d | 2018-04-23 | 2018-06-06 |  | 123d | 0d |  |  |  | 32 | verde | naranja | 0.00% |
| 50 | 1.2.1.1.2 | Módulo batch Variables PPNN - Ingresos | 32d | 2018-04-23 | 2018-06-06 |  | 119d | 0d |  |  |  | 32 | verde | naranja | 0.00% |
| 51 | 1.2.1.1.3 | Módulo batch Variables PPNN - Salidas | 32d | 2018-04-23 | 2018-06-06 |  | 119d | 0d |  |  |  | 32 | verde | naranja | 0.00% |
| 52 | 1.2.1.1.4 | Módulo batch Variables PPNN - Patrimonio y otros | 32d | 2018-04-23 | 2018-06-06 |  | 119d | 0d |  |  |  | 32 | verde | naranja | 0.00% |

| ID | WBS | Task | Type | Duration | Start | Finish | Predecessors | Total slack | Free slack | Resources | Work | Estado Pj | Tarea Critica |
| --- | --- | --- | --- | --- | --- | --- | --- | --- | --- | --- | --- | --- | --- |
| 53 | 1.2.2 | **Control de Calidad** |  | 41d | 2018-04-23 | 2018-06-19 |  | 119d |  |  |  | verde |  |
| 54 | 1.2.2.1 | Revisar Modelo de IGV - Teradata |  | 28d | 2018-04-23 | 2018-05-31 |  | 132d | 0d |  |  | verde | rojo |
| 55 | 1.2.2.2 | **Revisar Modelo de PN – Teradata** |  | 41d | 2018-04-23 | 2018-06-19 |  | 119d |  |  |  | verde | rojo |
| 56 | 1.2.2.2.1 | DWE Insumos PPNN - Anexas F.617 |  | 34d | 2018-04-23 | 2018-06-08 |  | 126d |  |  |  | verde | naranja |
| 57 | 1.2.2.2.2 | DWE Insumos PPNN - Vehiculos Adquiridos |  | 5d | 2018-06-07 | 2018-06-13 | 49 | 123d |  |  |  | verde | rojo |
| 58 | 1.2.2.2.3 | DWE Insumos PPNN - SUNARP |  | 35d | 2018-04-23 | 2018-06-11 |  | 125d |  |  |  | verde | blanco |
| 59 | 1.2.2.2.4 | Panderos |  | 39d | 2018-04-23 | 2018-06-15 |  | 121d |  |  |  | verde | rojo |
| 60 | 1.2.2.2.5 | Módulo batch Variables PPNN - Ingresos |  | 9d | 2018-06-07 | 2018-06-19 | 50 | 119d |  |  |  | verde | rojo |
| 61 | 1.2.2.2.6 | Módulo batch Variables PPNN - Salidas |  | 9d | 2018-06-07 | 2018-06-19 | 51 | 119d |  |  |  | verde | rojo |
| 62 | 1.2.2.2.7 | Módulo batch Variables PPNN - Patrimonio y otros |  | 9d | 2018-06-07 | 2018-06-19 | 52 | 119d | 0d |  |  | verde | rojo |
| 63 | 1.2.3 | **Implantación** |  | 14d | 2018-05-31 | 2018-06-19 |  | 119d |  |  |  | verde |  |
| 64 | 1.2.3.1 | Modelo de IGV - Teradata |  | 1d | 2018-05-31 | 2018-05-31 | 54FS-1d | 132d | 13d |  |  | verde | verde |
| 65 | 1.2.3.2 | Modelo de PN – Teradata |  | 1d | 2018-06-19 | 2018-06-19 | 62FS-1d | 119d | 0d |  |  | verde | rojo |
| 66 | 1.2.4 | Entregable: Modelo del IGV y PN -Teradata - Implementado | milestone | 0d | 2018-06-19 | 2018-06-19 | 65, 64 | 119d |  |  |  | verde | rojo |
| 67 | 1.3 | **Gestión de Riesgo del Cumplimiento Tributario del IGV** |  | 49d | 2018-04-23 | 2018-06-29 |  | 111d |  |  | 2312h | verde |  |
| 68 | 1.3.1 | **Matriz de Riesgo del Contribuyente** |  | 49d | 2018-04-23 | 2018-06-29 |  | 111d |  |  | 2280h | verde | rojo |
| 69 | 1.3.1.1 | **Arquitectura** |  | 45d | 2018-04-23 | 2018-06-25 |  | 115d |  |  | 1120h | verde |  |
| 70 | 1.3.1.1.1 | **Construcción** |  | 45d | 2018-04-23 | 2018-06-25 |  | 115d |  |  | 1056h | verde |  |
| 71 | 1.3.1.1.1.1 | Ambiente Desarrollo |  | 19d | 2018-04-23 | 2018-05-18 |  | 115d | 0d | DAIA; DGIT; DAT | 456h | verde | verde |
| 72 | 1.3.1.1.1.2 | Ambiente Calidad |  | 23d | 2018-04-23 | 2018-05-24 |  | 134d | 0d | DAIA-1; DGIT-1; DAT-1 | 552h | verde | verde |
| 73 | 1.3.1.1.1.3 | Elaboración de Documentación Técnica e Instrucctivo. |  | 6d | 2018-06-18 | 2018-06-25 | 71FS+20d | 115d |  | DAIA | 48h | verde | rojo |
| 74 | 1.3.1.1.2 | **Implantación** |  | 5d | 2018-05-21 | 2018-05-25 |  | 136d |  |  | 48h | verde |  |
| 75 | 1.3.1.1.2.1 | Ambiente de Desarrollo |  | 1d | 2018-05-21 | 2018-05-21 | 71 | 140d | 4d | DAIA; DGIT; DAT | 24h | verde | verde |
| 76 | 1.3.1.1.2.2 | Ambiente de Calidad |  | 1d | 2018-05-25 | 2018-05-25 | 72 | 134d | 0d | DAIA-1; DGIT-1; DAT-1 | 24h | verde | verde |
| 77 | 1.3.1.1.2.3 | Entregable: Ambientes de Desarrollo y Calidad | milestone | 0d | 2018-05-25 | 2018-05-25 | 76, 75 | 136d |  |  |  | verde | rojo |

| ID | WBS | Task | Type | Duration | Start | Finish | Predecessors | Total slack | Free slack | Constraint | Resources | Work | Estado Pj | Tarea Critica |
| --- | --- | --- | --- | --- | --- | --- | --- | --- | --- | --- | --- | --- | --- | --- |
| 78 | 1.3.1.1.3 | **Post Implantación** |  | 2d | 2018-05-28 | 2018-05-29 |  | 134d |  |  |  | 16h | verde |  |
| 79 | 1.3.1.1.3.1 | Pruebas de rendimiento |  | 2d | 2018-05-28 | 2018-05-29 | 76 | 134d |  |  | DCC | 16h | verde | rojo |
| 80 | 1.3.1.2 | **Desarrollo** |  | 36d | 2018-04-23 | 2018-06-12 |  | 111d |  |  |  | 960h | verde |  |
| 81 | 1.3.1.2.1 | Matriz PRC - Variable de Condición de Domicilio - Estado del Contribuyente |  | 19d | 2018-04-23 | 2018-05-18 |  | 111d | 0d |  | WGALINDEZ | 152h | verde | verde |
| 82 | 1.3.1.2.2 | Matriz PRC - Variable de Omiso a la Declaración MEPECO |  | 19d | 2018-04-23 | 2018-05-18 |  | 112d | 0d |  | KAVILES | 152h | verde | verde |
| 83 | 1.3.1.2.3 | Matriz PRC - Variable de Omiso a la Declaración PRICO |  | 19d | 2018-04-23 | 2018-05-18 |  | 112d | 0d |  | EYATACO | 152h | verde | verde |
| 84 | 1.3.1.2.4 | Matriz PRC - Variable Omisos Libros Electrónicos - Padrón acotado |  | 19d | 2018-04-23 | 2018-05-18 |  | 112d | 0d |  | VMENDIETA | 152h | verde | verde |
| 85 | 1.3.1.2.5 | Matriz PRC - Servicio de Perfil |  | 19d | 2018-04-23 | 2018-05-18 |  | 136d | 0d |  | JQUENTA | 152h | verde | verde |
| 86 | 1.3.1.2.6 | Matriz PRC - Consulta |  | 5d | 2018-06-06 | 2018-06-12 |  | 112d | 0d | start no earlier than 2018-06-06 |  |  | verde | rojo |
| 87 | 1.3.1.2.7 | **Integración** |  | 5d | 2018-05-21 | 2018-05-25 |  | 111d |  |  |  | 200h | verde |  |
| 88 | 1.3.1.2.7.1 | Matriz PRC - Variable de Condición de Domicilio - Estado del Contribuyente |  | 5d | 2018-05-21 | 2018-05-25 | 81 | 111d | 0d |  | WGALINDEZ | 40h | verde | verde |
| 89 | 1.3.1.2.7.2 | Matriz PRC - Variable de Omiso a la Declaración MEPECO |  | 5d | 2018-05-21 | 2018-05-25 | 82 | 112d | 0d |  | KAVILES | 40h | verde | verde |
| 90 | 1.3.1.2.7.3 | Matriz PRC - Variable de Omiso a la Declaración PRICO |  | 5d | 2018-05-21 | 2018-05-25 | 83 | 112d | 0d |  | EYATACO | 40h | verde | verde |
| 91 | 1.3.1.2.7.4 | Matriz PRC - Variable Omisos Libros Electrónicos - Padrón acotado |  | 5d | 2018-05-21 | 2018-05-25 | 84 | 112d | 0d |  | VMENDIETA | 40h | verde | verde |
| 92 | 1.3.1.2.7.5 | Matriz PRC - Servicio de Perfil |  | 5d | 2018-05-21 | 2018-05-25 | 85 | 136d |  |  | JQUENTA | 40h | verde | verde |
| 93 | 1.3.1.3 | **Control de Calidad** |  | 24d | 2018-05-28 | 2018-06-28 |  | 111d |  |  |  | 192h | verde |  |
| 94 | 1.3.1.3.1 | Matriz PRC - Variable de Condición de Domicilio - Estado del Contribuyente |  | 24d | 2018-05-28 | 2018-06-28 | 88 | 111d | 0d |  | MPURILLA | 192h | verde | rojo |
| 95 | 1.3.1.3.2 | Matriz PRC - Variable de Omiso a la Declaración MEPECO |  | 24d | 2018-05-28 | 2018-06-28 | 89 | 112d |  |  |  |  | verde | rojo |
| 96 | 1.3.1.3.3 | Matriz PRC - Variable de Omiso a la Declaración PRICO |  | 24d | 2018-05-28 | 2018-06-28 | 90 | 112d |  |  |  |  | verde | rojo |
| 97 | 1.3.1.3.4 | Matriz PRC - Variable Omisos Libros Electrónicos - Padrón acotado |  | 24d | 2018-05-28 | 2018-06-28 | 91 | 112d |  |  |  |  | verde | rojo |
| 98 | 1.3.1.3.5 | Matriz PRC - Consulta |  | 12d | 2018-06-13 | 2018-06-28 | 86 | 112d |  |  |  |  | verde | rojo |
| 99 | 1.3.1.4 | **Implantación** |  | 1d | 2018-06-29 | 2018-06-29 |  | 111d |  |  |  | 8h | verde |  |
| 100 | 1.3.1.4.1 | Instalación de Matriz de Riesgos del Contribuyente |  | 1d | 2018-06-29 | 2018-06-29 | 94 | 111d | 0d |  | OPERACIONES | 8h | verde | blanco |
| 101 | 1.3.1.5 | Entregable: Matriz de Riesgos del Contribuyente -Implementada | milestone | 0d | 2018-06-29 | 2018-06-29 | 100 | 111d |  |  |  |  | verde | blanco |

| ID | WBS | Task | Type | Duration | Start | Finish | Predecessors | Total slack | Free slack | Resources | Work | Tarea Critica | Estado Pj |
| --- | --- | --- | --- | --- | --- | --- | --- | --- | --- | --- | --- | --- | --- |
| 102 | 1.3.2 | **Actualizar vinculaciones a los ONR** |  | 5d | 2018-04-23 | 2018-04-27 |  | 155d |  |  | 32h | rojo | verde |
| 103 | 1.3.2.1 | **Análisis** |  | 2d | 2018-04-23 | 2018-04-24 |  | 155d |  |  | 8h |  | verde |
| 104 | 1.3.2.1.1 | Revisión del MPN |  | 1d | 2018-04-23 | 2018-04-23 |  | 155d | 0d |  |  | rojo | verde |
| 105 | 1.3.2.1.2 | Elaboración del F2-AR1 |  | 1d | 2018-04-24 | 2018-04-24 | 104 | 155d | 0d | CQUENTA | 8h | rojo | verde |
| 106 | 1.3.2.2 | **Desarrollo** |  | 1d | 2018-04-25 | 2018-04-25 |  | 155d |  |  | 8h |  | verde |
| 107 | 1.3.2.2.1 | Desarrollar Actualizar vinculaciones a los ONR |  | 1d | 2018-04-25 | 2018-04-25 | 105 | 155d | 0d | CQUENTA | 8h | rojo | verde |
| 108 | 1.3.2.3 | **Control de Calidad** |  | 1d | 2018-04-26 | 2018-04-26 |  | 155d |  |  | 8h |  | verde |
| 109 | 1.3.2.3.1 | Actualizar vinculaciones a los ONR |  | 1d | 2018-04-26 | 2018-04-26 | 107 | 155d | 0d | CQUENTA | 8h | rojo | verde |
| 110 | 1.3.2.4 | **Implantación** |  | 1d | 2018-04-27 | 2018-04-27 |  | 155d |  |  | 8h |  | verde |
| 111 | 1.3.2.4.1 | Implementar Actualizar vinculaciones a los ONR |  | 1d | 2018-04-27 | 2018-04-27 | 109 | 155d | 0d | CQUENTA | 8h | rojo | verde |
| 112 | 1.3.2.5 | Entregable: Acta de Aprobación de Actualizar vinculaciones a los ONR - Implementada | milestone | 0d | 2018-04-27 | 2018-04-27 | 111 | 155d |  | CQUENTA |  | rojo | verde |
| 113 | 1.3.3 | **APP de Consulta de Cumplimiento Tributario del IGV** |  | 0d | 2018-04-23 | 2018-04-23 |  | 160d |  |  |  | rojo | verde |
| 114 | 1.3.3.1 | Entregable: APP de Consulta de Cumplimiento Tributario - Implementado | milestone | 0d | 2018-04-23 | 2018-04-23 |  | 160d |  |  |  | rojo | verde |
| 115 | 1.3.4 | **Tablero de Gestión y Seguimiento del Control Electrónico del IGV** |  | 0d | 2018-04-23 | 2018-04-23 |  | 160d |  |  |  | rojo | verde |
| 116 | 1.3.4.1 | Entregable: Tablero de Gestión y Seguimiento de Control Electónico del IGV - Implementado | milestone | 0d | 2018-04-23 | 2018-04-23 |  | 160d |  |  |  | rojo | verde |
| 117 | 1.4 | **Actualización del Registro Único de Contribuyente** |  | 49d | 2018-04-23 | 2018-06-29 |  | 111d |  |  | 120h |  | verde |
| 118 | 1.4.1 | **Campaña de Actualización email (configuración de 12 a 6 meses)** |  | 8d | 2018-05-14 | 2018-05-23 |  | 138d |  |  | 56h |  | verde |
| 119 | 1.4.1.1 | **Desarrollo** |  | 2d | 2018-05-14 | 2018-05-15 |  | 138d |  |  | 16h |  | verde |
| 120 | 1.4.1.1.1 | Campaña de Actualización email (configuración de 12 a 6 meses) |  | 2d | 2018-05-14 | 2018-05-15 | 5FS+13d | 138d | 0d | DDST1 | 16h | verde | verde |
| 121 | 1.4.1.2 | **Control de Calidad** |  | 5d | 2018-05-16 | 2018-05-22 |  | 138d |  |  | 40h |  | verde |
| 122 | 1.4.1.2.1 | Campaña de Actualización email (configuración de 12 a 6 meses) |  | 5d | 2018-05-16 | 2018-05-22 | 120 | 138d | 0d | DCC1 | 40h | naranja | verde |
| 123 | 1.4.1.3 | **Implantación** |  | 1d | 2018-05-23 | 2018-05-23 |  | 138d |  |  |  |  | verde |
| 124 | 1.4.1.3.1 | Implementar Campaña de Actualización email (configuración de 12 a 6 meses) |  | 1d | 2018-05-23 | 2018-05-23 | 122 | 138d | 0d |  |  | rojo | verde |
| 125 | 1.4.1.4 | Entregable: Acta de Aprobación de Campaña de Actualización email | milestone | 0d | 2018-05-23 | 2018-05-23 | 124 | 138d |  |  |  | rojo | verde |

Notes:
- 102: comentarios: Se esta evaluando implementar la 2da y 3ra fase del proyecto M_SNADE116.

| ID | WBS | Task | Type | Duration | Start | Finish | Predecessors | Complete | Remaining | Total slack | Free slack | Constraint | Resources | Work | Estado Pj | Tarea Critica |
| --- | --- | --- | --- | --- | --- | --- | --- | --- | --- | --- | --- | --- | --- | --- | --- | --- |
| 126 | 1.4.2 | **Campaña de Actualización celular** |  | 49d | 2018-04-23 | 2018-06-29 |  |  |  | 111d |  |  |  | 64h | verde |  |
| 127 | 1.4.2.1 | **Adquisición - Servicio de Centro de Contactos** |  | 5d | 2018-06-05 | 2018-06-11 |  |  |  | 125d |  |  |  | 64h | verde | rojo |
| 128 | 1.4.2.1.1 | Validación del TDR (Procesos y DDST) |  | 2d | 2018-06-05 | 2018-06-06 |  |  |  | 125d | 0d | start no earlier than 2018-06-05 | AGAMBOA; WGALINDEZ | 32h | verde | naranja |
| 129 | 1.4.2.1.2 | Levantamiento de observaciones |  | 1d | 2018-06-07 | 2018-06-07 | 128 |  |  | 125d | 0d |  | DESPINOZA; J.ANTON | 16h | verde | rojo |
| 130 | 1.4.2.1.3 | Visado del TDR |  | 1d | 2018-06-08 | 2018-06-08 | 129 |  |  | 125d | 0d |  | J.ANTON | 8h | verde | rojo |
| 131 | 1.4.2.1.4 | Envío del TDR para Adjudicación |  | 1d | 2018-06-11 | 2018-06-11 | 130 |  |  | 125d | 0d |  | J.ANTON | 8h | verde | rojo |
| 132 | 1.4.2.1.5 | Entregable: TDR Servicio de Centro de Contactos | milestone | 0d | 2018-06-11 | 2018-06-11 | 131 |  |  | 125d |  |  |  |  | verde | rojo |
| 133 | 1.4.2.2 | **Desarrollo** |  | 27d | 2018-04-23 | 2018-05-30 |  |  |  | 111d |  |  |  |  | verde |  |
| 134 | 1.4.2.2.1 | Desarrollar Campaña de Actualización celular |  | 27d | 2018-04-23 | 2018-05-30 |  |  |  | 111d | 0d |  |  |  | verde | naranja |
| 135 | 1.4.2.3 | **Control de Calidad** |  | 21d | 2018-05-31 | 2018-06-28 |  |  |  | 111d |  |  |  |  | verde |  |
| 136 | 1.4.2.3.1 | Campaña de Actualización celular |  | 21d | 2018-05-31 | 2018-06-28 | 134 |  |  | 111d | 0d |  |  |  | verde | rojo |
| 137 | 1.4.2.4 | **Implantación** |  | 1d | 2018-06-29 | 2018-06-29 |  |  |  | 111d |  |  |  |  | verde |  |
| 138 | 1.4.2.4.1 | Implementar Campaña de Actualización celular |  | 1d | 2018-06-29 | 2018-06-29 | 136 |  |  | 111d | 0d |  |  |  | verde | blanco |
| 139 | 1.4.2.5 | Entregable: Acta de Aprobación de Campaña de Actualización celular | milestone | 0d | 2018-06-29 | 2018-06-29 | 138 |  |  | 111d |  |  |  |  | verde | blanco |
| 140 | 1.5 | **Controles electrónicos a la autorización y emisión de CdP** |  | 72d | 2018-04-23 A | 2018-08-01 |  |  | 71.85d | 88d |  |  |  |  | verde |  |
| 141 | 1.5.1 | **Alertas de inconsistencias en el CPE** |  | 27d | 2018-04-23 A | 2018-05-30 |  | 3% | 26.07d | 133d |  |  |  |  | verde | rojo |
| 142 | 1.5.1.1 | **Análisis** |  | 2d | 2018-04-23 | 2018-04-24 |  |  |  | 0d |  |  |  |  | verde |  |
| 143 | 1.5.1.1.1 | Revisión del MPN |  | 1d | 2018-04-23 | 2018-04-23 |  |  |  | 0d |  |  |  |  | verde | rojo |
| 144 | 1.5.1.1.2 | Elaboración del F2-AR1 |  | 1d | 2018-04-24 | 2018-04-24 | 143 |  |  | 0d |  |  |  |  | verde | rojo |
| 145 | 1.5.1.2 | **Desarrollo** |  | 18d | 2018-04-24 A | 2018-05-18 |  | 6% | 17d | 133d |  |  |  |  | verde |  |
| 146 | 1.5.1.2.1 | Desarrollar Alertas de inconsistencias en el CPE |  | 18d | 2018-04-24 A | 2018-05-18 | 144 | 6% | 17d | 133d | 0d |  |  |  | verde | rojo |
| 147 | 1.5.1.3 | **Control de Calidad** |  | 8d | 2018-05-21 | 2018-05-30 |  |  |  | 133d |  |  |  |  | verde |  |
| 148 | 1.5.1.3.1 | Alertas de inconsistencias en el CPE |  | 8d | 2018-05-21 | 2018-05-30 | 146 |  |  | 133d | 0d |  |  |  | verde | rojo |
| 149 | 1.5.1.4 | **Implantación** |  | 1d | 2018-05-30 | 2018-05-30 |  |  |  | 133d |  |  |  |  | verde |  |
| 150 | 1.5.1.4.1 | Implementar Alertas de inconsistencias en el CPE |  | 1d | 2018-05-30 | 2018-05-30 | 148FS-1d |  |  | 133d | 0d |  |  |  | verde | rojo |
| 151 | 1.5.1.5 | Entregable: Acta de Aprobación de Alertas de inconsistencias en el CPE | milestone | 0d | 2018-05-30 | 2018-05-30 | 150 |  |  | 133d |  |  |  |  | verde | rojo |

| ID | WBS | Task | Type | Duration | Start | Finish | Predecessors | Total slack | Free slack | Estado Pj | Tarea Critica |
| --- | --- | --- | --- | --- | --- | --- | --- | --- | --- | --- | --- |
| 152 | 1.5.2 | **Restricción a la Autorización de CdP** |  | 35d | 2018-05-15 | 2018-07-02 |  | 110d |  | verde |  |
| 153 | 1.5.2.1 | **Desarrollo** |  | 14d | 2018-05-15 | 2018-06-01 |  | 110d |  | verde |  |
| 154 | 1.5.2.1.1 | Desarrollar Restricción a la Autorización de CdP |  | 14d | 2018-05-15 | 2018-06-01 | 5FS+14d | 110d | 0d | verde | naranja |
| 155 | 1.5.2.2 | **Control de Calidad** |  | 21d | 2018-06-04 | 2018-07-02 |  | 110d |  | verde |  |
| 156 | 1.5.2.2.1 | Restricción a la Autorización de CdP |  | 21d | 2018-06-04 | 2018-07-02 | 154 | 110d | 0d | verde | rojo |
| 157 | 1.5.2.3 | **Implantación** |  | 1d | 2018-07-02 | 2018-07-02 |  | 110d |  | verde |  |
| 158 | 1.5.2.3.1 | Implementar Restricción a la Autorización de CdP |  | 1d | 2018-07-02 | 2018-07-02 | 156FS-1d | 110d | 0d | verde | blanco |
| 159 | 1.5.2.4 | Entregable: Acta de Aprobación de Restricción a la Autorización de CdP | milestone | 0d | 2018-07-02 | 2018-07-02 | 158 | 110d |  | verde | blanco |
| 160 | 1.5.3 | **Limitación de CdP Autorizados** |  | 33.62d | 2018-05-14 | 2018-06-28 |  | 112.38d |  | verde |  |
| 161 | 1.5.3.1 | **Analítica** |  | 2d | 2018-06-21 | 2018-06-22 |  | 116d |  | verde | rojo |
| 162 | 1.5.3.1.1 | **Desarrollo** |  | 1d | 2018-06-21 | 2018-06-21 |  | 116d |  | verde |  |
| 163 | 1.5.3.1.1.1 | Desarrollar Limitación de CdP Autorizados |  | 1d | 2018-06-21 | 2018-06-21 | 5FS+41d | 116d | 0d | verde | blanco |
| 164 | 1.5.3.1.2 | **Control de Calidad** |  | 1d | 2018-06-22 | 2018-06-22 |  | 116d |  | verde |  |
| 165 | 1.5.3.1.2.1 | Limitación de CdP Autorizados |  | 1d | 2018-06-22 | 2018-06-22 | 163 | 116d | 0d | verde | blanco |
| 166 | 1.5.3.1.3 | **Implantación** |  | 1d | 2018-06-22 | 2018-06-22 |  | 116d |  | verde |  |
| 167 | 1.5.3.1.3.1 | Implementar Limitación de CdP Autorizados |  | 1d | 2018-06-22 | 2018-06-22 | 165FS-1d | 116d | 0d | verde | blanco |
| 168 | 1.5.3.2 | Entregable: Componente Análitico | milestone | 0d | 2018-06-22 | 2018-06-22 | 167 | 116d |  | verde | blanco |
| 169 | 1.5.3.3 | **FSW** |  | 33.62d | 2018-05-14 | 2018-06-28 |  | 112.38d |  | verde | rojo |
| 170 | 1.5.3.3.1 | **Analisis** |  | 20.5d | 2018-05-14 | 2018-06-11 |  | 119.38d |  | verde | rojo |
| 171 | 1.5.3.3.1.1 | Elaboración de Análisis |  | 100h | 2018-05-14 | 2018-05-30 | 5FS+13d | 119.38d | 0d | verde | rojo |
| 172 | 1.5.3.3.1.2 | Envío de Documento Análisis | milestone | 0d | 2018-06-04 | 2018-06-04 | 171FS+3d | 125.5d | 0d | verde | rojo |
| 173 | 1.5.3.3.1.3 | Aprobación de Documento Análisis |  | 40h | 2018-06-04 | 2018-06-11 | 172 | 125.5d |  | verde | rojo |
| 174 | 1.5.3.3.2 | **Desarrollo** |  | 21.62d | 2018-05-21 | 2018-06-19 |  | 112.38d |  | verde | rojo |
| 175 | 1.5.3.3.2.1 | **Diseño** |  | 13.12d | 2018-05-31 | 2018-06-19 |  | 119.38d |  | verde | rojo |
| 176 | 1.5.3.3.2.1.1 | Elaboración de Diseño |  | 73h | 2018-05-31 | 2018-06-13 | 171FS+1d | 119.38d | 0d | verde | rojo |
| 177 | 1.5.3.3.2.1.2 | Envío de Documento Diseño | milestone | 0d | 2018-06-14 | 2018-06-14 | 176FS+1d | 119.38d | 0d | verde | rojo |
| 178 | 1.5.3.3.2.1.3 | Aprobación de Documento Diseño |  | 24h | 2018-06-14 | 2018-06-19 | 177 | 119.38d |  | verde | rojo |

Notes:
- 160: comentarios: Falta que análitico planifique la entrega de sus componentes
- 161: comentarios: Se necesita componente Analitico para que SWF avance desarrollo
- 169: comentarios: Cronograma de SWF aún no es DEFINITIVO.

| ID | WBS | Task | Type | Duration | Start | Finish | Predecessors | Total slack | Free slack | Tarea Critica | Estado Pj |
| --- | --- | --- | --- | --- | --- | --- | --- | --- | --- | --- | --- |
| 179 | 1.5.3.3.2.2 | **Construcción** |  | 19.62d | 2018-05-21 | 2018-06-15 |  | 112.38d |  | rojo | verde |
| 180 | 1.5.3.3.2.2.1 | Construcción |  | 106h | 2018-05-21 | 2018-06-07 | 5FS+18d | 112.38d | 0d | rojo | verde |
| 181 | 1.5.3.3.2.2.2 | Pruebas Unitarias |  | 8h | 2018-06-07 | 2018-06-08 | 180 | 112.38d | 0d | rojo | verde |
| 182 | 1.5.3.3.2.2.3 | Pruebas de Integración y otros |  | 11h | 2018-06-08 | 2018-06-11 | 181 | 112.38d | 0d | rojo | verde |
| 183 | 1.5.3.3.2.2.4 | Elaboración del documento de pase a producción |  | 24h | 2018-06-11 | 2018-06-14 | 182 | 112.38d | 0d | rojo | verde |
| 184 | 1.5.3.3.2.2.5 | Actualización de documentación para el usuario |  | 16h | 2018-06-11 | 2018-06-13 | 182 | 123.38d |  | rojo | verde |
| 185 | 1.5.3.3.2.2.6 | Envío de Construcción | milestone | 0d | 2018-06-15 | 2018-06-15 | 183FS+1d | 112.38d | 0d | rojo | verde |
| 186 | 1.5.3.3.3 | Pruebas Desarrollo INSI |  | 24h | 2018-06-15 | 2018-06-20 | 185 | 112.38d | 0d | rojo | verde |
| 187 | 1.5.3.3.4 | Envío entregable de software (Formal) | milestone | 0d | 2018-06-21 | 2018-06-21 | 186FS+1d | 112.38d | 0d | blanco | verde |
| 188 | 1.5.3.3.5 | Aprobación de entregable de software |  | 40h | 2018-06-21 | 2018-06-28 | 187 | 112.38d |  | blanco | verde |
| 189 | 1.5.4 | **Restricción a la Emisión de CdP (web services)** |  | 3d | 2018-04-23 | 2018-04-25 |  | 157d |  |  | verde |
| 190 | 1.5.4.1 | **Desarrollo** |  | 1d | 2018-04-23 | 2018-04-23 |  | 157d |  |  | verde |
| 191 | 1.5.4.1.1 | Desarrollar Restricción a la Emisión de CdP (web services) |  | 1d | 2018-04-23 | 2018-04-23 |  | 157d | 0d | rojo | verde |
| 192 | 1.5.4.2 | **Control de Calidad** |  | 1d | 2018-04-24 | 2018-04-24 |  | 157d |  |  | verde |
| 193 | 1.5.4.2.1 | CC Restricción a la Emisión de CdP (web services) |  | 1d | 2018-04-24 | 2018-04-24 | 191 | 157d | 0d | rojo | verde |
| 194 | 1.5.4.3 | **Implantación** |  | 1d | 2018-04-25 | 2018-04-25 |  | 157d |  |  | verde |
| 195 | 1.5.4.3.1 | Implementar Restricción a la Emisión de CdP (web services) |  | 1d | 2018-04-25 | 2018-04-25 | 193 | 157d | 0d | rojo | verde |
| 196 | 1.5.4.4 | Entregable: Acta de Aprobación de Restricción a la Emisión de CdP (web services) | milestone | 0d | 2018-04-25 | 2018-04-25 | 195 | 157d |  | rojo | verde |
| 197 | 1.5.5 | **Restricción a la Emisión de CPE** |  | 49d | 2018-04-23 | 2018-06-29 |  | 111d |  |  | verde |
| 198 | 1.5.5.1 | **Desarrollo** |  | 19d | 2018-04-23 | 2018-05-18 |  | 111d |  |  | verde |
| 199 | 1.5.5.1.1 | Desarrollar Restricción a la Emisión de CPE |  | 19d | 2018-04-23 | 2018-05-18 |  | 111d | 0d | rojo | verde |
| 200 | 1.5.5.2 | **Control de Calidad** |  | 30d | 2018-05-21 | 2018-06-29 |  | 111d |  |  | verde |
| 201 | 1.5.5.2.1 | Restricción a la Emisión de CPE |  | 30d | 2018-05-21 | 2018-06-29 | 199 | 111d | 0d | rojo | verde |
| 202 | 1.5.5.3 | **Implantación** |  | 1d | 2018-06-29 | 2018-06-29 |  | 111d |  |  | verde |
| 203 | 1.5.5.3.1 | Implementar Restricción a la Emisión de CPE |  | 1d | 2018-06-29 | 2018-06-29 | 201FS-1d | 111d | 0d | blanco | verde |
| 204 | 1.5.5.4 | Entregable: Acta de Aprobación de Restricción a la Emisión de CPE | milestone | 0d | 2018-06-29 | 2018-06-29 | 203 | 111d |  | blanco | verde |

Notes:
- 189: comentarios: No Planificado
- 197: comentarios: El normativo (Michael) no confirma la definición del MPN. Se solicitará fecha máxima en que debemos contar con MPN.

| ID | WBS | Task | Type | Duration | Start | Finish | Predecessors | Total slack | Free slack | Constraint | Resources | Work | Estado Pj | Tarea Critica |
| --- | --- | --- | --- | --- | --- | --- | --- | --- | --- | --- | --- | --- | --- | --- |
| 205 | 1.5.6 | **Comprobante de contingencia al CPE** |  | 72d | 2018-04-23 | 2018-08-01 |  | 88d |  |  |  |  | verde |  |
| 206 | 1.5.6.1 | **Desarrollo** |  | 57d | 2018-04-23 | 2018-07-11 |  | 88d |  |  |  |  | verde |  |
| 207 | 1.5.6.1.1 | Formulario 816-Solicitud de autorización-Contingencia CPE ( RF1/RF2) |  | 22d | 2018-04-23 | 2018-05-23 |  | 118d | 0d |  |  |  | verde | naranja |
| 208 | 1.5.6.1.2 | Proceso de Carga de Obligados- Contingencia CPE ( RF12) |  | 22d | 2018-04-23 | 2018-05-23 |  | 118d | 0d |  |  |  | verde | naranja |
| 209 | 1.5.6.1.3 | Factura BVE Portal - Contingencia CPE ( RF3/RF7/RF8) |  | 39d | 2018-04-23 | 2018-06-15 |  | 91d | 0d |  |  |  | verde | naranja |
| 210 | 1.5.6.1.4 | Receptor Contingencia CPE ( RF5/RF6) |  | 39d | 2018-04-23 | 2018-06-15 |  | 91d | 0d |  |  |  | verde | rojo |
| 211 | 1.5.6.1.5 | Consultas SOL /Intranet - Contingencia CPE ( RF9/RF10/RF11) |  | 57d | 2018-04-23 | 2018-07-11 |  | 88d | 0d |  |  |  | verde | rojo |
| 212 | 1.5.6.2 | **Control de Calidad** |  | 49d | 2018-05-24 | 2018-07-31 |  | 89d |  |  |  |  | verde |  |
| 213 | 1.5.6.2.1 | Formulario 816-Solicitud de autorización-Contingencia CPE ( RF1/RF2) |  | 20d | 2018-05-24 | 2018-06-20 | 207 | 118d |  |  |  |  | verde | rojo |
| 214 | 1.5.6.2.2 | Proceso de Carga de Obligados- Contingencia CPE ( RF12) |  | 20d | 2018-05-24 | 2018-06-20 | 208 | 118d |  |  |  |  | verde | rojo |
| 215 | 1.5.6.2.3 | Factura BVE Portal - Contingencia CPE ( RF3/RF7/RF8) |  | 30d | 2018-06-18 | 2018-07-27 | 209 | 91d |  |  |  |  | verde | rojo |
| 216 | 1.5.6.2.4 | Receptor Contingencia CPE ( RF5/RF6) |  | 30d | 2018-06-18 | 2018-07-27 | 210 | 91d |  |  |  |  | verde | rojo |
| 217 | 1.5.6.2.5 | Consultas SOL /Intranet - Contingencia CPE ( RF9/RF10/RF11) |  | 14d | 2018-07-12 | 2018-07-31 | 211 | 88d | 0d |  |  |  | verde | blanco |
| 218 | 1.5.6.3 | **Implantación** |  | 1d | 2018-08-01 | 2018-08-01 |  | 88d |  |  |  |  | verde |  |
| 219 | 1.5.6.3.1 | Implementar Comprobante de contingencia al CPE |  | 1d | 2018-08-01 | 2018-08-01 | 211, 217 | 88d | 0d |  |  |  | verde | blanco |
| 220 | 1.5.6.4 | Entregable: Acta de Aprobación de Comprobante de contingencia al CPE | milestone | 0d | 2018-08-01 | 2018-08-01 | 219 | 88d |  |  |  |  | verde | blanco |
| 221 | 1.6 | **Control del registro de compras y ventas electrónico (RCVE)** |  | 82d | 2018-04-23 | 2018-08-15 |  | 78d |  |  |  | 128h | verde |  |
| 222 | 1.6.1 | **Nuevo Padrón de omisos a la presentación del RCVE** |  | 76d | 2018-05-02 | 2018-08-15 |  | 78d |  |  |  | 128h | verde |  |
| 223 | 1.6.1.1 | **Iteración 1** |  | 16d | 2018-05-28 | 2018-06-18 |  | 120d |  |  |  | 128h | verde | rojo |
| 224 | 1.6.1.1.1 | Preparación de datos para Padrón de Obligados y Omisos a LE |  | 8d | 2018-05-28 | 2018-06-06 |  | 120d | 0d | start no earlier than 2018-05-28 | EYATACO | 64h | verde | rojo |
| 225 | 1.6.1.1.2 | Elaboración del Padrón de Obligados y Omisos a LE |  | 7d | 2018-06-07 | 2018-06-15 | 224 | 120d | 0d |  | LHONDERMAN | 56h | verde | rojo |
| 226 | 1.6.1.1.3 | Carga de archivos de Padrón de Obligados y Omisos a LE en Base de Datos |  | 1d | 2018-06-18 | 2018-06-18 | 225 | 120d | 0d |  | VMENDIETA | 8h | verde | rojo |
| 227 | 1.6.1.1.4 | Entregable : Padrón de Obligados y Omisos a LE | milestone | 0d | 2018-06-18 | 2018-06-18 | 226 | 120d |  |  |  |  | verde | rojo |
| 228 | 1.6.1.2 | **Iteración 2** |  | 76d | 2018-05-02 | 2018-08-15 |  | 78d |  |  |  |  | verde | rojo |
| 229 | 1.6.1.2.1 | **Análisis** |  | 5d | 2018-05-02 | 2018-05-08 |  | 78d |  |  |  |  | verde | rojo |
| 230 | 1.6.1.2.1.1 | Revisión del MPN |  | 2d | 2018-05-02 | 2018-05-03 | 5FS+5d | 78d | 0d |  |  |  | verde | verde |
| 231 | 1.6.1.2.1.2 | Elaboración del F2-AR1 |  | 3d | 2018-05-04 | 2018-05-08 | 230 | 78d | 0d |  |  |  | verde | verde |

| ID | WBS | Task | Type | Duration | Start | Finish | Predecessors | Total slack | Free slack | Estado Pj | Tarea Critica |
| --- | --- | --- | --- | --- | --- | --- | --- | --- | --- | --- | --- |
| 232 | 1.6.1.2.2 | **Desarrollo** |  | 38d | 2018-05-09 | 2018-06-29 |  | 78d |  | verde |  |
| 233 | 1.6.1.2.2.1 | Determinación de omisos y obligados |  | 38d | 2018-05-09 | 2018-06-29 | 231 | 78d | 0d | verde | rojo |
| 234 | 1.6.1.2.2.2 | Consulta de obligados-Reporte del mes siguiente-Consulta de omisos |  | 38d | 2018-05-09 | 2018-06-29 | 231 | 78d | 0d | verde | rojo |
| 235 | 1.6.1.2.2.3 | Opción libre consulta de obligados |  | 38d | 2018-05-09 | 2018-06-29 | 231 | 78d | 0d | verde | rojo |
| 236 | 1.6.1.2.3 | **Control de Calidad** |  | 33d | 2018-07-02 | 2018-08-15 |  | 78d |  | verde |  |
| 237 | 1.6.1.2.3.1 | Determinación de omisos y obligados |  | 33d | 2018-07-02 | 2018-08-15 | 233 | 78d |  | verde | blanco |
| 238 | 1.6.1.2.3.2 | Consulta de obligados-Reporte del mes siguiente-Consulta de omisos |  | 33d | 2018-07-02 | 2018-08-15 | 234 | 78d |  | verde | blanco |
| 239 | 1.6.1.2.3.3 | Opción libre consulta de obligados |  | 33d | 2018-07-02 | 2018-08-15 | 235 | 78d | 0d | verde | blanco |
| 240 | 1.6.1.2.4 | **Implantación** |  | 1d | 2018-08-15 | 2018-08-15 |  | 78d |  | verde |  |
| 241 | 1.6.1.2.4.1 | Implementar Padrón de omisos a la presentación del RCVE |  | 1d | 2018-08-15 | 2018-08-15 | 239FS-1d | 78d | 0d | verde | blanco |
| 242 | 1.6.1.2.5 | Entregable: Acta de Aprobación de Padrón de omisos a la presentación del RCVE | milestone | 0d | 2018-08-15 | 2018-08-15 | 241 | 78d |  | verde | blanco |
| 243 | 1.6.2 | **Determinación y control de Omisos a Libros automatizada** |  | 5d | 2018-04-23 | 2018-04-27 |  | 155d |  | verde |  |
| 244 | 1.6.2.1 | **Análisis** |  | 2d | 2018-04-23 | 2018-04-24 |  | 155d |  | verde | rojo |
| 245 | 1.6.2.1.1 | Revisión del MPN |  | 1d | 2018-04-23 | 2018-04-23 |  | 155d | 0d | verde | rojo |
| 246 | 1.6.2.1.2 | Elaboración del F2-AR1 |  | 1d | 2018-04-24 | 2018-04-24 | 245 | 155d | 0d | verde | rojo |
| 247 | 1.6.2.2 | **Desarrollo** |  | 1d | 2018-04-25 | 2018-04-25 |  | 155d |  | verde |  |
| 248 | 1.6.2.2.1 | Desarrollar Control de omisos con padrón de RCVE |  | 1d | 2018-04-25 | 2018-04-25 | 246 | 155d | 0d | verde | rojo |
| 249 | 1.6.2.3 | **Control de Calidad** |  | 1d | 2018-04-26 | 2018-04-26 |  | 155d |  | verde |  |
| 250 | 1.6.2.3.1 | CC Control de omisos con padrón de RCVE |  | 1d | 2018-04-26 | 2018-04-26 | 248 | 155d | 0d | verde | rojo |
| 251 | 1.6.2.4 | **Implantación** |  | 1d | 2018-04-27 | 2018-04-27 |  | 155d |  | verde |  |
| 252 | 1.6.2.4.1 | Implementar Control de omisos con padrón de RCVE |  | 1d | 2018-04-27 | 2018-04-27 | 250 | 155d | 0d | verde | rojo |
| 253 | 1.6.2.5 | Entregable: Acta de Aprobación de Control de omisos con padrón de RCVE | milestone | 0d | 2018-04-27 | 2018-04-27 | 252 | 155d |  | verde | rojo |
| 254 | 1.7 | **Control de Declaración IGV - Renta Mensual** |  | 93d | 2018-04-23 | 2018-08-30 |  | 67d |  | verde | rojo |
| 255 | 1.7.1 | **Reemplazo de PDT por Declara Fácil con propuesta de DJ** |  | 93d | 2018-04-23 | 2018-08-30 |  | 67d |  | verde | rojo |
| 256 | 1.7.1.1 | **Análisis** |  | 2d | 2018-04-23 | 2018-04-24 |  | 67d |  | verde |  |
| 257 | 1.7.1.1.1 | Revisión del MPN |  | 1d | 2018-04-23 | 2018-04-23 |  | 67d | 0d | verde | rojo |
| 258 | 1.7.1.1.2 | Elaboración del F2-AR1 |  | 1d | 2018-04-24 | 2018-04-24 | 257 | 67d | 0d | verde | rojo |

| ID | WBS | Task | Type | Duration | Start | Finish | Predecessors | Total slack | Free slack | Estado Pj | Tarea Critica | comentarios |
| --- | --- | --- | --- | --- | --- | --- | --- | --- | --- | --- | --- | --- |
| 259 | 1.7.1.2 | **Desarrollo** |  | 70d | 2018-04-25 | 2018-08-01 |  | 67d |  | verde |  |  |
| 260 | 1.7.1.2.1 | Reemplazo de PDT por Declara Fácil con propuesta de DJ |  | 70d | 2018-04-25 | 2018-08-01 | 258 | 67d | 0d | verde | rojo |  |
| 261 | 1.7.1.3 | **Control de Calidad** |  | 21d | 2018-08-02 | 2018-08-30 |  | 67d |  | verde |  |  |
| 262 | 1.7.1.3.1 | Control de Calidad a reemplazo de PDT por Declara Fácil con propuesta de DJ |  | 21d | 2018-08-02 | 2018-08-30 | 260 | 67d | 0d | verde | blanco |  |
| 263 | 1.7.1.4 | **Implantación** |  | 0d | 2018-08-30 | 2018-08-30 |  | 67d |  | verde |  |  |
| 264 | 1.7.1.4.1 | Reemplazo de PDT por Declara Fácil con propuesta de DJ | milestone | 0d | 2018-08-30 | 2018-08-30 | 262 | 67d |  | verde | blanco |  |
| 265 | 1.7.2 | **Integración del control de inconsistencias del RCVE y la propuesta de la Dec. IGV Renta Mensual** |  | 5d | 2018-04-23 | 2018-04-27 |  | 155d |  | verde | rojo | No existe definición. Se consultará a C.Drago del alcance. |
| 266 | 1.7.2.1 | **Análisis** |  | 2d | 2018-04-23 | 2018-04-24 |  | 155d |  | verde |  |  |
| 267 | 1.7.2.1.1 | Revisión del MPN |  | 1d | 2018-04-23 | 2018-04-23 |  | 155d | 0d | verde | rojo |  |
| 268 | 1.7.2.1.2 | Elaboración del F2-AR1 |  | 1d | 2018-04-24 | 2018-04-24 | 267 | 155d | 0d | verde | rojo |  |
| 269 | 1.7.2.2 | **Desarrollo** |  | 1d | 2018-04-25 | 2018-04-25 |  | 155d |  | verde |  |  |
| 270 | 1.7.2.2.1 | Integración del control de inconsistencias del RCVE y la propuesta de la Dec. IGV Renta Mensual |  | 1d | 2018-04-25 | 2018-04-25 | 268 | 155d | 0d | verde | rojo |  |
| 271 | 1.7.2.3 | **Control de Calidad** |  | 1d | 2018-04-26 | 2018-04-26 |  | 155d |  | verde |  |  |
| 272 | 1.7.2.3.1 | Integración del control de inconsistencias del RCVE y la propuesta de la Dec. IGV Renta Mensual |  | 1d | 2018-04-26 | 2018-04-26 | 270 | 155d | 0d | verde | rojo |  |
| 273 | 1.7.2.4 | **Implantación** |  | 1d | 2018-04-27 | 2018-04-27 |  | 155d |  | verde |  |  |
| 274 | 1.7.2.4.1 | Integración del control de inconsistencias del RCVE y la propuesta de la Dec. IGV Renta Mensual |  | 1d | 2018-04-27 | 2018-04-27 | 272 | 155d |  | verde | rojo |  |
| 275 | 1.7.3 | **Determinación de omisos a la DJ del IGV Renta Mensual** |  | 27d | 2018-04-23 | 2018-05-30 |  | 133d |  | verde | rojo |  |
| 276 | 1.7.3.1 | **Análisis** |  | 2d | 2018-04-23 | 2018-04-24 |  | 133d |  | verde |  |  |
| 277 | 1.7.3.1.1 | Revisión del MPN |  | 1d | 2018-04-23 | 2018-04-23 |  | 133d | 0d | verde | rojo |  |
| 278 | 1.7.3.1.2 | Elaboración del F2-AR1 |  | 1d | 2018-04-24 | 2018-04-24 | 277 | 133d | 0d | verde | rojo |  |
| 279 | 1.7.3.2 | **Desarrollo** |  | 15d | 2018-04-25 | 2018-05-16 |  | 133d |  | verde |  |  |
| 280 | 1.7.3.2.1 | Determinación de omisos a la DJ del IGV Renta Mensual |  | 15d | 2018-04-25 | 2018-05-16 | 278 | 133d | 0d | verde | rojo |  |
| 281 | 1.7.3.3 | **Control de Calidad** |  | 10d | 2018-05-17 | 2018-05-30 |  | 133d |  | verde |  |  |
| 282 | 1.7.3.3.1 | Determinación de omisos a la DJ del IGV Renta Mensual |  | 10d | 2018-05-17 | 2018-05-30 | 280 | 133d | 0d | verde | rojo |  |

| ID | WBS | Task | Type | Duration | Start | Finish | Predecessors | Total slack | Free slack | Estado Pj | Tarea Critica |
| --- | --- | --- | --- | --- | --- | --- | --- | --- | --- | --- | --- |
| 283 | 1.7.3.4 | **Implantación** |  | 1d | 2018-05-30 | 2018-05-30 |  | 133d |  | verde |  |
| 284 | 1.7.3.4.1 | Determinación de omisos a la DJ del IGV Renta Mensual |  | 1d | 2018-05-30 | 2018-05-30 | 282FS-1d | 133d | 0d | verde | rojo |
| 285 | 1.7.3.5 | Entregable: Determinación de omisos a la DJ del IGV renta Mensual Implementado | milestone | 0d | 2018-05-30 | 2018-05-30 | 284 | 133d |  | verde | rojo |
| 286 | 1.7.4 | **Determinación de omisos a la DDJJ IGV Renta Mensual - Comprobante Único** |  | 5d | 2018-04-23 | 2018-04-27 |  | 155d |  | verde | rojo |
| 287 | 1.7.4.1 | **Análisis** |  | 2d | 2018-04-23 | 2018-04-24 |  | 155d |  | verde |  |
| 288 | 1.7.4.1.1 | Revisión del MPN |  | 1d | 2018-04-23 | 2018-04-23 |  | 155d | 0d | verde | rojo |
| 289 | 1.7.4.1.2 | Elaboración del F2-AR1 |  | 1d | 2018-04-24 | 2018-04-24 | 288 | 155d | 0d | verde | rojo |
| 290 | 1.7.4.2 | **Desarrollo** |  | 1d | 2018-04-25 | 2018-04-25 |  | 155d |  | verde |  |
| 291 | 1.7.4.2.1 | Determinación de omisos a la DDJJ IGV Renta Mensual - Comprobante Único |  | 1d | 2018-04-25 | 2018-04-25 | 289 | 155d | 0d | verde | rojo |
| 292 | 1.7.4.3 | **Control de Calidad** |  | 1d | 2018-04-26 | 2018-04-26 |  | 155d |  | verde |  |
| 293 | 1.7.4.3.1 | Determinación de omisos a la DDJJ IGV Renta Mensual - Comprobante Único |  | 1d | 2018-04-26 | 2018-04-26 | 291 | 155d | 0d | verde | rojo |
| 294 | 1.7.4.4 | **Implantación** |  | 1d | 2018-04-27 | 2018-04-27 |  | 155d |  | verde |  |
| 295 | 1.7.4.4.1 | Determinación de omisos a la DDJJ IGV Renta Mensual - Comprobante Único |  | 1d | 2018-04-27 | 2018-04-27 | 293 | 155d | 0d | verde | rojo |
| 296 | 1.7.4.5 | Entregable: Determinación de omisos a la DDJJ IGV Renta Mensual - Comprobante Único Implementado | milestone | 0d | 2018-04-27 | 2018-04-27 | 295 | 155d |  | verde | rojo |
| 297 | 1.7.5 | **Actualización en línea de las presentaciones de DJ - MEPECO** |  | 44d | 2018-04-23 | 2018-06-22 |  | 116d |  | verde | rojo |
| 298 | 1.7.5.1 | **Análisis** |  | 2d | 2018-04-23 | 2018-04-24 |  | 116d |  | verde |  |
| 299 | 1.7.5.1.1 | Revisión del MPN |  | 1d | 2018-04-23 | 2018-04-23 |  | 116d | 0d | verde | rojo |
| 300 | 1.7.5.1.2 | Elaboración del F2-AR1 |  | 1d | 2018-04-24 | 2018-04-24 | 299 | 116d | 0d | verde | rojo |
| 301 | 1.7.5.2 | **Desarrollo** |  | 17d | 2018-04-25 | 2018-05-18 |  | 116d |  | verde |  |
| 302 | 1.7.5.2.1 | Actualización en línea de las presentaciones de DJ - MEPECO |  | 17d | 2018-04-25 | 2018-05-18 | 300 | 116d | 0d | verde | rojo |
| 303 | 1.7.5.3 | **Control de Calidad** |  | 25d | 2018-05-21 | 2018-06-22 |  | 116d |  | verde |  |
| 304 | 1.7.5.3.1 | Actualización en línea de las presentaciones de DJ - MEPECO |  | 25d | 2018-05-21 | 2018-06-22 | 302 | 116d | 0d | verde | rojo |
| 305 | 1.7.5.4 | **Implantación** |  | 1d | 2018-06-22 | 2018-06-22 |  | 116d |  | verde |  |
| 306 | 1.7.5.4.1 | Actualización en línea de las presentaciones de DJ - MEPECO |  | 1d | 2018-06-22 | 2018-06-22 | 304FS-1d | 116d | 0d | verde | blanco |
| 307 | 1.7.5.5 | Entregable: Actualización en línea de las presentaciones de DJ - MEPECO Implementado | milestone | 0d | 2018-06-22 | 2018-06-22 | 306 | 116d |  | verde | blanco |

Notes:
- 286: comentarios: No existe definición. Se informará a Y.Lecca del riesgo de no cumplir con lo requerido por el negocio.

| ID | WBS | Task | Type | Duration | Start | Finish | Predecessors | Total slack | Free slack | Tarea Critica | Estado Pj |
| --- | --- | --- | --- | --- | --- | --- | --- | --- | --- | --- | --- |
| 308 | 1.8 | **Fiscalización: Gestión Masiva de Control del IGV** |  | 5d | 2018-04-23 | 2018-04-27 |  | 155d |  | rojo | verde |
| 309 | 1.8.1 | **Perfil para seleccionar Accion masiva** |  | 5d | 2018-04-23 | 2018-04-27 |  | 155d |  | rojo | verde |
| 310 | 1.8.1.1 | **Análisis** |  | 2d | 2018-04-23 | 2018-04-24 |  | 155d |  |  | verde |
| 311 | 1.8.1.1.1 | Revisión del MPN |  | 1d | 2018-04-23 | 2018-04-23 |  | 155d | 0d | rojo | verde |
| 312 | 1.8.1.1.2 | Elaboración del F2-AR1 |  | 1d | 2018-04-24 | 2018-04-24 | 311 | 155d | 0d | rojo | verde |
| 313 | 1.8.1.2 | **Desarrollo** |  | 1d | 2018-04-25 | 2018-04-25 |  | 155d |  |  | verde |
| 314 | 1.8.1.2.1 | Perfil para seleccionar Accion masiva |  | 1d | 2018-04-25 | 2018-04-25 | 312 | 155d | 0d | rojo | verde |
| 315 | 1.8.1.3 | **Control de Calidad** |  | 1d | 2018-04-26 | 2018-04-26 |  | 155d |  |  | verde |
| 316 | 1.8.1.3.1 | Perfil para seleccionar Accion masiva |  | 1d | 2018-04-26 | 2018-04-26 | 314 | 155d | 0d | rojo | verde |
| 317 | 1.8.1.4 | **Implantación** |  | 1d | 2018-04-27 | 2018-04-27 |  | 155d |  |  | verde |
| 318 | 1.8.1.4.1 | Perfil para seleccionar Accion masiva |  | 1d | 2018-04-27 | 2018-04-27 | 316 | 155d | 0d | rojo | verde |
| 319 | 1.8.1.5 | Entregable: Perfil para seleccionar Accion masiva Implementado | milestone | 0d | 2018-04-27 | 2018-04-27 | 318 | 155d |  | rojo | verde |
| 320 | 1.8.2 | **Nuevo CCV que integra el Gema WEB** |  | 5d | 2018-04-23 | 2018-04-27 |  | 155d |  | rojo | verde |
| 321 | 1.8.2.1 | **Análisis** |  | 2d | 2018-04-23 | 2018-04-24 |  | 155d |  |  | verde |
| 322 | 1.8.2.1.1 | Revisión del MPN |  | 1d | 2018-04-23 | 2018-04-23 |  | 155d | 0d | rojo | verde |
| 323 | 1.8.2.1.2 | Elaboración del F2-AR1 |  | 1d | 2018-04-24 | 2018-04-24 | 322 | 155d | 0d | rojo | verde |
| 324 | 1.8.2.2 | **Desarrollo** |  | 1d | 2018-04-25 | 2018-04-25 |  | 155d |  |  | verde |
| 325 | 1.8.2.2.1 | Nuevo CCV que integra el Gema WEB |  | 1d | 2018-04-25 | 2018-04-25 | 323 | 155d | 0d | rojo | verde |
| 326 | 1.8.2.3 | **Control de Calidad** |  | 1d | 2018-04-26 | 2018-04-26 |  | 155d |  |  | verde |
| 327 | 1.8.2.3.1 | Nuevo CCV que integra el Gema WEB |  | 1d | 2018-04-26 | 2018-04-26 | 325 | 155d | 0d | rojo | verde |
| 328 | 1.8.2.4 | **Implantación** |  | 1d | 2018-04-27 | 2018-04-27 |  | 155d |  |  | verde |
| 329 | 1.8.2.4.1 | Nuevo CCV que integra el Gema WEB |  | 1d | 2018-04-27 | 2018-04-27 | 327 | 155d | 0d | rojo | verde |
| 330 | 1.8.2.5 | Entregable: Nuevo CCV que integra el Gema WEB Implementado | milestone | 0d | 2018-04-27 | 2018-04-27 | 329 | 155d |  | rojo | verde |
| 331 | 1.8.3 | **SINE para las carta inductivas y esquelas** |  | 5d | 2018-04-23 | 2018-04-27 |  | 155d |  | rojo | verde |
| 332 | 1.8.3.1 | **Análisis** |  | 2d | 2018-04-23 | 2018-04-24 |  | 155d |  |  | verde |
| 333 | 1.8.3.1.1 | Revisión del MPN |  | 1d | 2018-04-23 | 2018-04-23 |  | 155d | 0d | rojo | verde |
| 334 | 1.8.3.1.2 | Elaboración del F2-AR1 |  | 1d | 2018-04-24 | 2018-04-24 | 333 | 155d | 0d | rojo | verde |

| ID | WBS | Task | Type | Duration | Start | Finish | Predecessors | Total slack | Free slack | Estado Pj | Tarea Critica |
| --- | --- | --- | --- | --- | --- | --- | --- | --- | --- | --- | --- |
| 335 | 1.8.3.2 | **Desarrollo** |  | 1d | 2018-04-25 | 2018-04-25 |  | 155d |  | verde |  |
| 336 | 1.8.3.2.1 | SINE para las carta inductivas y esquelas |  | 1d | 2018-04-25 | 2018-04-25 | 334 | 155d | 0d | verde | rojo |
| 337 | 1.8.3.3 | **Control de Calidad** |  | 1d | 2018-04-26 | 2018-04-26 |  | 155d |  | verde |  |
| 338 | 1.8.3.3.1 | SINE para las carta inductivas y esquelas |  | 1d | 2018-04-26 | 2018-04-26 | 336 | 155d | 0d | verde | rojo |
| 339 | 1.8.3.4 | **Implantación** |  | 1d | 2018-04-27 | 2018-04-27 |  | 155d |  | verde |  |
| 340 | 1.8.3.4.1 | SINE para las carta inductivas y esquelas |  | 1d | 2018-04-27 | 2018-04-27 | 338 | 155d | 0d | verde | rojo |
| 341 | 1.8.3.5 | Entregable: SINE para las carta inductivas y esquelas Implementado | milestone | 0d | 2018-04-27 | 2018-04-27 | 340 | 155d |  | verde | rojo |
| 342 | 1.8.4 | **SIEV para la gestión inductiva** |  | 5d | 2018-04-23 | 2018-04-27 |  | 155d |  | verde | rojo |
| 343 | 1.8.4.1 | **Análisis** |  | 2d | 2018-04-23 | 2018-04-24 |  | 155d |  | verde |  |
| 344 | 1.8.4.1.1 | Revisión del MPN |  | 1d | 2018-04-23 | 2018-04-23 |  | 155d | 0d | verde | rojo |
| 345 | 1.8.4.1.2 | Elaboración del F2-AR1 |  | 1d | 2018-04-24 | 2018-04-24 | 344 | 155d | 0d | verde | rojo |
| 346 | 1.8.4.2 | **Desarrollo** |  | 1d | 2018-04-25 | 2018-04-25 |  | 155d |  | verde |  |
| 347 | 1.8.4.2.1 | SIEV para la gestión inductiva |  | 1d | 2018-04-25 | 2018-04-25 | 345 | 155d | 0d | verde | rojo |
| 348 | 1.8.4.3 | **Control de Calidad** |  | 1d | 2018-04-26 | 2018-04-26 |  | 155d |  | verde |  |
| 349 | 1.8.4.3.1 | SIEV para la gestión inductiva |  | 1d | 2018-04-26 | 2018-04-26 | 347 | 155d | 0d | verde | rojo |
| 350 | 1.8.4.4 | **Implantación** |  | 1d | 2018-04-27 | 2018-04-27 |  | 155d |  | verde |  |
| 351 | 1.8.4.4.1 | SIEV para la gestión inductiva |  | 1d | 2018-04-27 | 2018-04-27 | 349 | 155d | 0d | verde | rojo |
| 352 | 1.8.4.5 | Entregable: SIEV para la gestión inductiva Implementado | milestone | 0d | 2018-04-27 | 2018-04-27 | 351 | 155d |  | verde | rojo |
| 353 | 1.8.5 | **Utilización del CRM como soporte a las campañas de gestión inductiva** |  | 5d | 2018-04-23 | 2018-04-27 |  | 155d |  | verde | rojo |
| 354 | 1.8.5.1 | **Análisis** |  | 2d | 2018-04-23 | 2018-04-24 |  | 155d |  | verde | rojo |
| 355 | 1.8.5.1.1 | Revisión del MPN |  | 1d | 2018-04-23 | 2018-04-23 |  | 155d | 0d | verde | rojo |
| 356 | 1.8.5.1.2 | Elaboración del F2-AR1 |  | 1d | 2018-04-24 | 2018-04-24 | 355 | 155d | 0d | verde | rojo |
| 357 | 1.8.5.2 | **Desarrollo** |  | 1d | 2018-04-25 | 2018-04-25 |  | 155d |  | verde |  |
| 358 | 1.8.5.2.1 | CRM como soporte a las campañas de gestión inductiva |  | 1d | 2018-04-25 | 2018-04-25 | 356 | 155d | 0d | verde | rojo |

| ID | WBS | Task | Type | Duration | Start | Finish | Predecessors | Total slack | Free slack | Estado Pj | Tarea Critica |
| --- | --- | --- | --- | --- | --- | --- | --- | --- | --- | --- | --- |
| 359 | 1.8.5.3 | **Control de Calidad** |  | 1d | 2018-04-26 | 2018-04-26 |  | 155d |  | verde |  |
| 360 | 1.8.5.3.1 | CRM como soporte a las campañas de gestión inductiva |  | 1d | 2018-04-26 | 2018-04-26 | 358 | 155d | 0d | verde | rojo |
| 361 | 1.8.5.4 | **Implantación** |  | 1d | 2018-04-27 | 2018-04-27 |  | 155d |  | verde |  |
| 362 | 1.8.5.4.1 | CRM como soporte a las campañas de gestión inductiva |  | 1d | 2018-04-27 | 2018-04-27 | 360 | 155d | 0d | verde | rojo |
| 363 | 1.8.5.5 | Entregable: CRM como soporte a las campañas de gestión inductiva-Implementado | milestone | 0d | 2018-04-27 | 2018-04-27 | 362 | 155d |  | verde | rojo |
| 364 | 1.9 | **Fiscalización Parcial Electrónica del IGV** |  | 48d | 2018-04-23 | 2018-06-28 |  | 112d |  | verde | rojo |
| 365 | 1.9.1 | **Piloto de fiscalización parcial electrónica de comprobantes duplicados** |  | 48d | 2018-04-23 | 2018-06-28 |  | 112d |  | verde | rojo |
| 366 | 1.9.1.1 | **Análisis** |  | 2d | 2018-04-23 | 2018-04-24 |  | 112d |  | verde |  |
| 367 | 1.9.1.1.1 | Revisión del MPN |  | 1d | 2018-04-23 | 2018-04-23 |  | 112d | 0d | verde | rojo |
| 368 | 1.9.1.1.2 | Elaboración del F2-AR1 |  | 1d | 2018-04-24 | 2018-04-24 | 367 | 112d | 0d | verde | rojo |
| 369 | 1.9.1.2 | **Desarrollo** |  | 26d | 2018-04-25 | 2018-05-31 |  | 112d |  | verde |  |
| 370 | 1.9.1.2.1 | Piloto de fiscalización parcial electrónica de comprobantes duplicados |  | 26d | 2018-04-25 | 2018-05-31 | 368 | 112d | 0d | verde | rojo |
| 371 | 1.9.1.3 | **Control de Calidad** |  | 20d | 2018-06-01 | 2018-06-28 |  | 112d |  | verde |  |
| 372 | 1.9.1.3.1 | Piloto de fiscalización parcial electrónica de comprobantes duplicados |  | 20d | 2018-06-01 | 2018-06-28 | 370 | 112d | 0d | verde | rojo |
| 373 | 1.9.1.4 | **Implantación** |  | 1d | 2018-06-28 | 2018-06-28 |  | 112d |  | verde |  |
| 374 | 1.9.1.4.1 | Piloto de fiscalización parcial electrónica de comprobantes duplicados |  | 1d | 2018-06-28 | 2018-06-28 | 372FS-1d | 112d | 0d | verde | blanco |
| 375 | 1.9.1.5 | Entregable: Piloto de fiscalización parcial electrónica de comprobantes duplicados- Implementado | milestone | 0d | 2018-06-28 | 2018-06-28 | 374 | 112d |  | verde | blanco |
| 376 | 1.9.2 | **Fiscalización parcial electrónica de diferencias entre RCVE y DJ de IGV** |  | 6d | 2018-04-23 | 2018-04-30 |  | 154d |  | verde | rojo |
| 377 | 1.9.2.1 | **Análisis** |  | 2d | 2018-04-23 | 2018-04-24 |  | 154d |  | verde |  |
| 378 | 1.9.2.1.1 | Revisión del MPN |  | 1d | 2018-04-23 | 2018-04-23 |  | 154d | 0d | verde | rojo |
| 379 | 1.9.2.1.2 | Elaboración del F2-AR1 |  | 1d | 2018-04-24 | 2018-04-24 | 378 | 154d | 0d | verde | rojo |
| 380 | 1.9.2.2 | **Desarrollo** |  | 1d | 2018-04-25 | 2018-04-25 |  | 154d |  | verde |  |
| 381 | 1.9.2.2.1 | Fiscalización parcial electrónica de diferencias entre RCVE y DJ de IGV |  | 1d | 2018-04-25 | 2018-04-25 | 379 | 154d | 0d | verde | rojo |
| 382 | 1.9.2.3 | **Control de Calidad** |  | 1d | 2018-04-26 | 2018-04-26 |  | 154d |  | verde |  |
| 383 | 1.9.2.3.1 | Fiscalización parcial electrónica de diferencias entre RCVE y DJ de IGV |  | 1d | 2018-04-26 | 2018-04-26 | 381 | 154d | 0d | verde | rojo |

| ID | WBS | Task | Type | Duration | Start | Finish | Predecessors | Total slack | Free slack | Estado Pj | Tarea Critica |
| --- | --- | --- | --- | --- | --- | --- | --- | --- | --- | --- | --- |
| 384 | 1.9.2.4 | **Implantación** |  | 1d | 2018-04-27 | 2018-04-27 |  | 154d |  | verde |  |
| 385 | 1.9.2.4.1 | Fiscalización parcial electrónica de diferencias entre RCVE y DJ de IGV |  | 1d | 2018-04-27 | 2018-04-27 | 383 | 154d | 0d | verde | rojo |
| 386 | 1.9.2.5 | Entregable: Fiscalización parcial electrónica de diferencias entre RCVE y DJ de IGV- Implementado |  | 1d | 2018-04-30 | 2018-04-30 | 385 | 154d |  | verde | rojo |
| 387 | 1.10 | **Flujo de Caja** |  | 5d | 2018-04-23 | 2018-04-27 |  | 155d |  | verde | rojo |
| 388 | 1.10.1 | **Análisis** |  | 2d | 2018-04-23 | 2018-04-24 |  | 155d |  | verde |  |
| 389 | 1.10.1.1 | Revisión del MPN |  | 1d | 2018-04-23 | 2018-04-23 |  | 155d | 0d | verde | rojo |
| 390 | 1.10.1.2 | Elaboración del F2-AR1 |  | 1d | 2018-04-24 | 2018-04-24 | 389 | 155d | 0d | verde | rojo |
| 391 | 1.10.2 | **Desarrollo** |  | 1d | 2018-04-25 | 2018-04-25 |  | 155d |  | verde |  |
| 392 | 1.10.2.1 | Flujo de ingresos e Egresos de efectivo y/o cuentas bancarias |  | 1d | 2018-04-25 | 2018-04-25 | 390 | 155d | 0d | verde | rojo |
| 393 | 1.10.3 | **Control de Calidad** |  | 1d | 2018-04-26 | 2018-04-26 |  | 155d |  | verde |  |
| 394 | 1.10.3.1 | Flujo de ingresos e Egresos de efectivo y/o cuentas bancarias |  | 1d | 2018-04-26 | 2018-04-26 | 392 | 155d | 0d | verde | rojo |
| 395 | 1.10.4 | **Implantación** |  | 1d | 2018-04-27 | 2018-04-27 |  | 155d |  | verde |  |
| 396 | 1.10.4.1 | Flujo de ingresos e Egresos de efectivo y/o cuentas bancarias |  | 1d | 2018-04-27 | 2018-04-27 | 394 | 155d | 0d | verde | rojo |
| 397 | 1.10.5 | Entregable: Flujo de ingresos e Egresos de efectivo y/o cuentas bancarias- Implementado | milestone | 0d | 2018-04-27 | 2018-04-27 | 396 | 155d |  | verde | rojo |
| 398 | 1.11 | **CEI Alineado a Procesos** |  | 160d | 2018-04-23 | 2018-12-03 |  | 0d |  | verde |  |
| 399 | 1.11.1 | **Iteración 1** |  | 100d | 2018-04-23 | 2018-09-10 |  | 0d |  | verde |  |
| 400 | 1.11.1.1 | Elaborar Documento de Reglas de Negocio |  | 10d | 2018-04-23 | 2018-05-07 |  | 0d |  | verde | rojo |
| 401 | 1.11.1.2 | Elaborar Mapa de Procesos AS IS |  | 30d | 2018-05-08 | 2018-06-18 | 400 | 0d |  | verde | rojo |
| 402 | 1.11.1.3 | Elaborar Mapa de Procesos TO BE |  | 30d | 2018-06-19 | 2018-07-30 | 401 | 0d |  | verde | rojo |
| 403 | 1.11.1.4 | Elaborar Ficha del Proceso |  | 30d | 2018-07-31 | 2018-09-10 | 402 | 0d |  | verde | blanco |
| 404 | 1.11.2 | **Iteración 2** |  | 60d | 2018-09-11 | 2018-12-03 |  | 0d |  | verde |  |
| 405 | 1.11.2.1 | Elaborar Documento de Reglas de Negocio |  | 15d | 2018-09-11 | 2018-10-01 | 403 | 0d |  | verde | blanco |
| 406 | 1.11.2.2 | Elaborar Mapa de Procesos AS IS |  | 15d | 2018-10-02 | 2018-10-22 | 405 | 0d |  | verde | blanco |
| 407 | 1.11.2.3 | Elaborar Mapa de Procesos TO BE |  | 15d | 2018-10-23 | 2018-11-12 | 406 | 0d |  | verde | blanco |
| 408 | 1.11.2.4 | Elaborar Ficha del Proceso |  | 15d | 2018-11-13 | 2018-12-03 | 407 | 0d |  | verde | blanco |
