# Control Electrónico del IGV - INER 23-04-2018 Cronograma

Schedule from MS Project, 2018-04-13 to 2018-12-31.

## Calendars

- Estándar: Mon-Fri 09:00-13:00, 15:00-19:00; Sat-Sun off.

## Resources

| Resource |
| --- |
| Jose Luis Orellana |
| José Luis Orellana |
| José André |
| Wilfredo Albarracin |
| Marcela Vargas |
| Elvira Truel |
| Mariam Valdivia |
| Miguel Ortiz |
| Michael Ruiz |
| Patricia Silva |
| Luis Zarate |
| César Gamarra |
| German Macavilca |
| Juan Carlos Henrich |
| Aida Bautista |
| Marco Mostacero |
| Hugo Gonzales |
| Ricardo Rejas |
| INJ |
| Felipe Iannacone} |
| Felipe Iannacone |
| Miguel Gavidia |
| Leonardo Zamudio |
| Rocio Altamirano |

## Schedule

| ID | WBS | Task | Type | Duration | Start | Finish | Predecessors | Total slack | Resources | Work |
| --- | --- | --- | --- | --- | --- | --- | --- | --- | --- | --- |
| 1 | 1 | **CONTROL ELECTRÓNICO DEL IGV** |  | 187d | 2018-04-13 | 2018-12-31 |  | 0d |  | 35520h |
| 2 | 1.1 | **Disponibilidad de Información** |  | 55d | 2018-04-16 | 2018-06-30 |  | 0d |  | 1376h |
| 3 | 1.1.1 | Modelo de IGV - Teradata | manual | 11d | 2018-04-16 | 2018-04-30 |  |  | José André; José Luis Orellana | 176h |
| 4 | 1.1.2 | Modelo de PN - Teradata | manual | 47d | 2018-04-16 | 2018-06-19 |  |  | José André; José Luis Orellana | 752h |
| 5 | 1.1.3 | Plan de Información para PN | manual | 56d | 2018-04-16 | 2018-06-30 |  |  | Leonardo Zamudio | 448h |
| 6 | 1.2 | **Gestión de Riesgo del Cumplimiento Tributario del IGV** |  | 77d | 2018-04-16 | 2018-07-31 |  | 0d |  | 4672h |
| 7 | 1.2.1 | Matriz: Perfil de Riesgo del Contribuyente (PRC) (Declaración, No presentar RCVE y la Información solicitada), incluye retroalimentación | manual | 56d | 2018-04-16 | 2018-06-30 |  |  | Wilfredo Albarracin; Marcela Vargas | 896h |
| 8 | 1.2.2 | Variables del IGV: actualizar variables e incorporar en el catalogo para aplicar las reglas de selección en la gestión masiva y selectiva | manual | 49d | 2018-04-25 | 2018-06-30 | 3 |  | Marcela Vargas; Aida Bautista; Elvira Truel | 1176h |
| 9 | 1.2.3 | Variables de Incremento Patrimonial No Justificado:actualizar variables e incorporar en el catalogo para aplicar las reglas de selección en la gestión masiva y selectiva | manual | 22d | 2018-07-02 | 2018-07-31 | 4 |  | Marcela Vargas; Aida Bautista; Elvira Truel | 528h |
| 10 | 1.2.4 | Actualizar vinculaciones a los ONR | manual | 49d | 2018-04-25 | 2018-06-30 | 3 |  | Marcela Vargas; Aida Bautista; Elvira Truel | 1176h |
| 11 | 1.2.5 | Variables de inconsistencias del RCVE | manual | 56d | 2018-04-16 | 2018-06-30 |  |  | Marcela Vargas; Elvira Truel | 896h |
| 12 | 1.3 | **Actualización del Registro Único de contribuyente** |  | 34d | 2018-04-16 | 2018-05-31 |  | 0d |  | 816h |
| 13 | 1.3.1 | Campaña de Actualización email y celular con confirmación | manual | 34d | 2018-04-16 | 2018-05-31 |  |  | Ricardo Rejas | 272h |
| 14 | 1.3.2 | Procedimiento RUC Activo con la confirmación de capacidad operativa | manual | 34d | 2018-04-16 | 2018-05-31 |  |  | Ricardo Rejas; Elvira Truel | 544h |
| 15 | 1.4 | **Controles electrónicos a la autorización y emisión de comprobantes de pago** |  | 100d | 2018-04-16 | 2018-08-31 |  | 0d |  | 4256h |
| 16 | 1.4.1 | Alertas de inconsistencias en el CdPe | manual | 34d | 2018-04-16 | 2018-05-31 |  |  | Hugo Gonzales; Marcela Vargas; Elvira Truel | 816h |
| 17 | 1.4.2 | Restricción a la Autorización de CdP Físico | manual | 34d | 2018-04-16 | 2018-05-31 | 7FF, 35FF |  | Wilfredo Albarracin | 272h |
| 18 | 1.4.3 | Limitación de CdP Autorizados | manual | 12d | 2018-05-16 | 2018-05-31 |  |  | Wilfredo Albarracin; Elvira Truel | 192h |
| 19 | 1.4.4 | RS de restricción y limitación a la autorización de CdP | manual | 12d | 2018-05-16 | 2018-05-31 |  |  | INJ; Wilfredo Albarracin; Felipe Iannacone | 288h |
| 20 | 1.4.5 | Restricción a la Emisión de CdP: Servicio Web de Consulta Integrada de Comrpobantes de Pago | manual | 34d | 2018-05-16 | 2018-06-30 |  |  | Wilfredo Albarracin; Elvira Truel | 544h |
| 21 | 1.4.6 | Restricción a la Emisión de CPE | manual | 78d | 2018-05-16 | 2018-08-31 |  |  | Michael Ruiz | 624h |
| 22 | 1.4.7 | RS de restricción a la emisión de CdP y CPE (La INJ esta evaluando si se requiere Ley para incluirlo en las facultades) | manual | 34d | 2018-05-16 | 2018-06-30 |  |  | Felipe Iannacone; Michael Ruiz; Wilfredo Albarracin | 816h |
| 23 | 1.4.8 | Comprobante de contingencia al CPE | manual | 77d | 2018-04-16 | 2018-07-31 | 24FF |  | Michael Ruiz | 616h |
| 24 | 1.4.9 | RS de Comprobantes de Contingencia | manual | 11d | 2018-04-16 | 2018-04-30 |  |  | Michael Ruiz | 88h |

| ID | WBS | Task | Type | Duration | Start | Finish | Predecessors | Total slack | Resources | Work |
| --- | --- | --- | --- | --- | --- | --- | --- | --- | --- | --- |
| 25 | 1.5 | **Control del registro de compras y ventas electrónico** |  | 89d | 2018-04-13 | 2018-08-15 |  | 0d |  | 1160h |
| 26 | 1.5.1 | Campaña de omisos al RVCE | manual | 11d | 2018-04-16 | 2018-04-30 |  |  | Juan Carlos Henrich; Elvira Truel | 176h |
| 27 | 1.5.2 | Padron de omisos a la presentación del RCVE | manual | 88d | 2018-04-16 | 2018-08-15 |  |  | Elvira Truel | 704h |
| 28 | 1.5.3 | Control de omisos con padrón de RCVE | manual | 1d | 2018-04-13 | 2018-04-16 | 27SF |  | Juan Carlos Henrich; Luis Zarate | 16h |
| 29 | 1.5.4 | Campaña Masiva de Inconsistencias de libros | manual | 11d | 2018-04-16 | 2018-04-30 |  |  | Marcela Vargas; Aida Bautista; Elvira Truel | 264h |
| 30 | 1.6 | **Control de la declaración IGV - Renta Mensual** |  | 120d | 2018-04-16 | 2018-09-30 |  | 0d |  | 5376h |
| 31 | 1.6.1 | Reemplazo de PDT por Declara Fácil con propuesta de DJ | manual | 56d | 2018-04-16 | 2018-06-30 |  |  | Patricia Silva; Luis Zarate | 896h |
| 32 | 1.6.2 | Integración del control de inconsistencias del RCVE y la propuesta de la Dec. IGV Renta MensualIntegración del control de inconsistencias y la propuesta de la Dec. IGV Renta Mensual | manual | 87d | 2018-06-01 | 2018-09-30 | 31 |  | Marcela Vargas; Patricia Silva; Elvira Truel | 2088h |
| 33 | 1.6.3 | Determinación de omisos a la declaración pago del IGV Renta Mensual - Nuevo Esquema | manual | 11d | 2018-04-16 | 2018-04-30 |  |  | Luis Zarate | 88h |
| 34 | 1.6.4 | Determinación de omisos a la declaración pago del IGV Renta Mensual - Incorporando comprobante único | manual | 66d | 2018-05-01 | 2018-07-31 |  |  | Aida Bautista; Elvira Truel; Luis Zarate; Marcela Vargas | 2112h |
| 35 | 1.6.5 | Actualización en línea de las presentaciones de declaraciones - MEPECO | manual | 24d | 2018-05-21 | 2018-06-22 |  |  | César Gamarra | 192h |
| 36 | 1.7 | **Fiscalización: Gestión Masiva de Inconsistencias** |  | 186d | 2018-04-16 | 2018-12-31 |  | 0d |  | 13096h |
| 37 | 1.7.1 | Perfil para seleccionar Acción Masiva | manual | 51d | 2018-04-23 | 2018-06-30 | 11FF |  | Marcela Vargas; Wilfredo Albarracin; Elvira Truel | 1224h |
| 38 | 1.7.2 | Nuevo CCV que integra el Gema WEB | manual | 143d | 2018-04-16 | 2018-10-31 |  |  | Wilfredo Albarracin; Elvira Truel | 2288h |
| 39 | 1.7.3 | Gestionar a través del SINE las cartas inductivas y esquelas | manual | 100d | 2018-04-16 | 2018-08-31 |  |  | German Macavilca; Wilfredo Albarracin | 1600h |
| 40 | 1.7.4 | RS de Notificación Electrónica de Cartas Inductivas y Esquelas | manual | 66d | 2018-05-01 | 2018-07-31 |  |  | German Macavilca; Wilfredo Albarracin | 1056h |
| 41 | 1.7.5 | Gestionar a través del SIEV la Gestión Inductiva y la Fiscalización Selectiva | manual | 88d | 2018-04-16 | 2018-08-15 |  |  | German Macavilca; Wilfredo Albarracin | 1408h |
| 42 | 1.7.6 | RS de Expediente Electrónico de Gestión de Masivos | manual | 66d | 2018-05-01 | 2018-07-31 |  |  | German Macavilca; Wilfredo Albarracin | 1056h |
| 43 | 1.7.7 | Utilización del CRM como soporte a las campañas de gestión inductiva y esquelas | manual | 186d | 2018-04-16 | 2018-12-31 |  |  | Wilfredo Albarracin; Luis Zarate; Elvira Truel | 4464h |
| 44 | 1.8 | **Fiscalización: Gestión Selectiva de control del IGV** |  | 77d | 2018-04-16 | 2018-07-31 |  |  |  | 2832h |
| 45 | 1.8.1 | Seleccionar contribuyentes para el control del IGV | manual | 56d | 2018-04-16 | 2018-06-30 |  |  | Rocio Altamirano; Marcela Vargas | 896h |
| 46 | 1.8.2 | Seleccionar contribuyentes para el control del incremento patrimonial no justificado | manual | 65d | 2018-05-02 | 2018-07-31 | 5FF |  | Marcela Vargas; Rocio Altamirano | 1040h |
| 47 | 1.8.3 | Lineamiento de la acción de control del IGV - formato flujo de caja | manual | 56d | 2018-04-16 | 2018-06-30 |  |  | Miguel Gavidia; Elvira Truel | 896h |
| 48 | 1.9 | **Fiscalización Parcial Electónica del IGV** |  | 120d | 2018-04-16 | 2018-09-30 |  | 0d |  | 1936h |
| 49 | 1.9.1 | Piloto de fiscalización parcial electrónica de comprobantes duplicados | manual | 34d | 2018-04-16 | 2018-05-31 |  |  | Elvira Truel; Marcela Vargas | 544h |
| 50 | 1.9.2 | Fiscalización parcial electrónica de diferencias entre libros y declaración de IGV | manual | 87d | 2018-06-01 | 2018-09-30 | 49 |  | Elvira Truel; Marcela Vargas | 1392h |
