# Cronograma del Proyecto al 20180704

Schedule from MS Project, 2018-04-23 to 2018-12-31, status date 2018-05-18, costs in S/..

## Calendars

- Estándar: Mon-Fri 09:00-13:00, 15:00-19:00; Sat-Sun off. Exceptions (off unless hours are given): 2018-05-01 (Dia del Trabajador), 2018-06-29 (Dia del Pescador), 2018-08-30 (santa rosa), 2018-10-08 (combate de angamos), 2018-11-01 (dia de los santos), 2018-12-25 (navidad).

## Resources

| Resource |
| --- |
| JAN |

## Schedule

| ID | WBS | Task | Duration | Start | Finish | Predecessors | Baseline start | Baseline finish | Baseline duration | Total slack | Free slack | Constraint | Resources | Work | Cost | Baseline cost |
| --- | --- | --- | --- | --- | --- | --- | --- | --- | --- | --- | --- | --- | --- | --- | --- | --- |
| 1 | 1 | **Control Electrónico del IGV** | 175d? | 2018-04-23 | 2018-12-31 |  | 2018-04-23 | 2018-12-31 | 175d | 0d |  |  |  | 344h | 43 | 43 |
| 2 | 1.1 | **Gestión del Proyecto** | 175d | 2018-04-23 | 2018-12-31 |  | 2018-04-23 | 2018-12-31 | 175d | 0d |  |  |  | 344h | 43 | 43 |
| 3 | 1.1.1 | **Iniciación** | 4d | 2018-04-23 | 2018-04-26 |  | 2018-04-23 | 2018-04-26 | 4d | 168d |  |  |  | 32h | 4 | 4 |
| 4 | 1.1.1.1 | **Project Charter** | 2d | 2018-04-23 | 2018-04-24 |  | 2018-04-23 | 2018-04-24 | 2d | 168d |  |  |  | 16h | 2 | 2 |
| 5 | 1.1.1.1.1 | Elaborar el Project Charter | 1d | 2018-04-23 | 2018-04-23 |  | 2018-04-23 | 2018-04-23 | 1d | 168d | 0d |  | JAN | 8h | 1 | 1 |
| 6 | 1.1.1.1.2 | Revisar el Project Charter | 1d | 2018-04-24 | 2018-04-24 | 5 | 2018-04-24 | 2018-04-24 | 1d | 168d | 0d |  | JAN | 8h | 1 | 1 |
| 7 | 1.1.1.2 | **Scope Statement** | 2d | 2018-04-25 | 2018-04-26 |  | 2018-04-25 | 2018-04-26 | 2d | 168d |  |  |  | 16h | 2 | 2 |
| 8 | 1.1.1.2.1 | Elaborar el Scope Statement | 1d | 2018-04-25 | 2018-04-25 | 6 | 2018-04-25 | 2018-04-25 | 1d | 168d | 0d |  | JAN | 8h | 1 | 1 |
| 9 | 1.1.1.2.2 | Revisar el Scope Statement | 1d | 2018-04-26 | 2018-04-26 | 8 | 2018-04-26 | 2018-04-26 | 1d | 168d | 0d |  | JAN | 8h | 1 | 1 |
| 10 | 1.1.2 | **Plan de Proyecto** | 57.5d | 2018-04-27 | 2018-07-19 |  | 2018-04-27 | 2018-07-19 | 57.5d | 113.5d |  |  |  | 64h | 8 | 8 |
| 11 | 1.1.2.1 | Elaborar el Plan de Proyecto | 3d | 2018-04-27 | 2018-05-02 | 9 | 2018-04-27 | 2018-05-02 | 3d | 168d |  |  | JAN | 24h | 3 | 3 |
| 12 | 1.1.2.2 | Actualizar documentos del Proyecto 1 | 0.5d | 2018-05-17 | 2018-05-17 |  | 2018-05-17 | 2018-05-17 | 0.5d | 157.5d |  | start no earlier than 2018-05-17 | JAN | 4h | 0.5 | 0.5 |
| 13 | 1.1.2.3 | Actualizar documentos del Proyecto 2 | 0.5d | 2018-05-24 | 2018-05-24 |  | 2018-05-24 | 2018-05-24 | 0.5d | 152.5d |  | start no earlier than 2018-05-24 | JAN | 4h | 0.5 | 0.5 |
| 14 | 1.1.2.4 | Actualizar documentos del Proyecto 3 | 0.5d | 2018-05-31 | 2018-05-31 |  | 2018-05-31 | 2018-05-31 | 0.5d | 147.5d |  | start no earlier than 2018-05-31 | JAN | 4h | 0.5 | 0.5 |
| 15 | 1.1.2.5 | Actualizar documentos del Proyecto 4 | 0.5d | 2018-06-07 | 2018-06-07 |  | 2018-06-07 | 2018-06-07 | 0.5d | 142.5d |  | start no earlier than 2018-06-07 | JAN | 4h | 0.5 | 0.5 |
| 16 | 1.1.2.6 | Actualizar documentos del Proyecto 5 | 0.5d | 2018-06-14 | 2018-06-14 |  | 2018-06-14 | 2018-06-14 | 0.5d | 137.5d |  | start no earlier than 2018-06-14 | JAN | 4h | 0.5 | 0.5 |
| 17 | 1.1.2.7 | Actualizar documentos del Proyecto 6 | 0.5d | 2018-06-21 | 2018-06-21 |  | 2018-06-21 | 2018-06-21 | 0.5d | 132.5d |  | start no earlier than 2018-06-21 | JAN | 4h | 0.5 | 0.5 |
| 18 | 1.1.2.8 | Actualizar documentos del Proyecto 7 | 0.5d | 2018-06-28 | 2018-06-28 |  | 2018-06-28 | 2018-06-28 | 0.5d | 127.5d |  | start no earlier than 2018-06-28 | JAN | 4h | 0.5 | 0.5 |
| 19 | 1.1.2.9 | Actualizar documentos del Proyecto 8 | 0.5d | 2018-07-05 | 2018-07-05 |  | 2018-07-05 | 2018-07-05 | 0.5d | 123.5d |  | start no earlier than 2018-07-05 | JAN | 4h | 0.5 | 0.5 |
| 20 | 1.1.2.10 | Actualizar documentos del Proyecto 9 | 0.5d | 2018-07-12 | 2018-07-12 |  | 2018-07-12 | 2018-07-12 | 0.5d | 118.5d |  | start no earlier than 2018-07-12 | JAN | 4h | 0.5 | 0.5 |
| 21 | 1.1.2.11 | Actualizar documentos del Proyecto 10 | 0.5d | 2018-07-19 | 2018-07-19 |  | 2018-07-19 | 2018-07-19 | 0.5d | 113.5d |  | start no earlier than 2018-07-19 | JAN | 4h | 0.5 | 0.5 |
| 22 | 1.1.3 | **Informes de Estado del Proyecto** | 72d | 2018-05-18 | 2018-08-28 |  | 2018-05-18 | 2018-08-28 | 72d | 85d |  |  |  | 120h | 15 | 15 |
| 23 | 1.1.3.1 | Informes de Estado del Proyecto 1 | 1d | 2018-05-18 | 2018-05-18 |  | 2018-05-18 | 2018-05-18 | 1d | 156d |  | start no earlier than 2018-05-18 | JAN | 8h | 1 | 1 |
| 24 | 1.1.3.2 | Informes de Estado del Proyecto 2 | 1d | 2018-05-25 | 2018-05-25 |  | 2018-05-25 | 2018-05-25 | 1d | 151d |  | start no earlier than 2018-05-25 | JAN | 8h | 1 | 1 |
| 25 | 1.1.3.3 | Informes de Estado del Proyecto 3 | 1d | 2018-06-01 | 2018-06-01 |  | 2018-06-01 | 2018-06-01 | 1d | 146d |  | start no earlier than 2018-06-01 | JAN | 8h | 1 | 1 |
| 26 | 1.1.3.4 | Informes de Estado del Proyecto 4 | 1d | 2018-06-08 | 2018-06-08 |  | 2018-06-08 | 2018-06-08 | 1d | 141d |  | start no earlier than 2018-06-08 | JAN | 8h | 1 | 1 |
| 27 | 1.1.3.5 | Informes de Estado del Proyecto 5 | 1d | 2018-06-15 | 2018-06-15 |  | 2018-06-15 | 2018-06-15 | 1d | 136d |  | start no earlier than 2018-06-15 | JAN | 8h | 1 | 1 |
| 28 | 1.1.3.6 | Informes de Estado del Proyecto 6 | 1d | 2018-06-22 | 2018-06-22 |  | 2018-06-22 | 2018-06-22 | 1d | 131d |  | start no earlier than 2018-06-22 | JAN | 8h | 1 | 1 |
| 29 | 1.1.3.7 | Informes de Estado del Proyecto 7 | 1d | 2018-07-02 | 2018-07-02 |  | 2018-07-02 | 2018-07-02 | 1d | 126d |  | start no earlier than 2018-07-02 | JAN | 8h | 1 | 1 |
| 30 | 1.1.3.8 | Informes de Estado del Proyecto 8 | 1d | 2018-07-09 | 2018-07-09 |  | 2018-07-09 | 2018-07-09 | 1d | 121d |  | start no earlier than 2018-07-09 | JAN | 8h | 1 | 1 |
| 31 | 1.1.3.9 | Informes de Estado del Proyecto 9 | 1d | 2018-07-16 | 2018-07-16 |  | 2018-07-16 | 2018-07-16 | 1d | 116d |  | start no earlier than 2018-07-16 | JAN | 8h | 1 | 1 |
| 32 | 1.1.3.10 | Informes de Estado del Proyecto 10 | 1d | 2018-07-23 | 2018-07-23 |  | 2018-07-23 | 2018-07-23 | 1d | 111d |  | start no earlier than 2018-07-23 | JAN | 8h | 1 | 1 |
| 33 | 1.1.3.11 | Informes de Estado del Proyecto 11 | 1d | 2018-07-30 | 2018-07-30 |  | 2018-07-30 | 2018-07-30 | 1d | 106d |  | start no earlier than 2018-07-30 | JAN | 8h | 1 | 1 |
| 34 | 1.1.3.12 | Informes de Estado del Proyecto 12 | 1d | 2018-08-06 | 2018-08-06 |  | 2018-08-06 | 2018-08-06 | 1d | 101d |  | start no earlier than 2018-08-06 | JAN | 8h | 1 | 1 |
| 35 | 1.1.3.13 | Informes de Estado del Proyecto 13 | 1d | 2018-08-13 | 2018-08-13 |  | 2018-08-13 | 2018-08-13 | 1d | 96d |  | start no earlier than 2018-08-13 | JAN | 8h | 1 | 1 |
| 36 | 1.1.3.14 | Informes de Estado del Proyecto 14 | 1d | 2018-08-20 | 2018-08-20 |  | 2018-08-20 | 2018-08-20 | 1d | 91d |  | start no earlier than 2018-08-20 | JAN | 8h | 1 | 1 |
| 37 | 1.1.3.15 | Informes de Estado del Proyecto 15 | 1d | 2018-08-28 | 2018-08-28 |  | 2018-08-28 | 2018-08-28 | 1d | 85d |  | start no earlier than 2018-08-28 | JAN | 8h | 1 | 1 |

| ID | WBS | Task | Duration | Start | Finish | Baseline start | Baseline finish | Baseline duration | Total slack | Constraint | Resources | Work | Cost | Baseline cost |
| --- | --- | --- | --- | --- | --- | --- | --- | --- | --- | --- | --- | --- | --- | --- |
| 38 | 1.1.4 | **Reunión de Coordinación Semanal** | 73d | 2018-05-21 | 2018-08-31 | 2018-05-21 | 2018-08-31 | 73d | 83d |  |  | 120h | 15 | 15 |
| 39 | 1.1.4.1 | Reunión de Coordinación Semanal 1 | 1d | 2018-05-21 | 2018-05-21 | 2018-05-21 | 2018-05-21 | 1d | 155d | start no earlier than 2018-05-21 | JAN | 8h | 1 | 1 |
| 40 | 1.1.4.2 | Reunión de Coordinación Semanal 2 | 1d | 2018-05-28 | 2018-05-28 | 2018-05-28 | 2018-05-28 | 1d | 150d | start no earlier than 2018-05-28 | JAN | 8h | 1 | 1 |
| 41 | 1.1.4.3 | Reunión de Coordinación Semanal 3 | 1d | 2018-06-04 | 2018-06-04 | 2018-06-04 | 2018-06-04 | 1d | 145d | start no earlier than 2018-06-04 | JAN | 8h | 1 | 1 |
| 42 | 1.1.4.4 | Reunión de Coordinación Semanal 4 | 1d | 2018-06-11 | 2018-06-11 | 2018-06-11 | 2018-06-11 | 1d | 140d | start no earlier than 2018-06-11 | JAN | 8h | 1 | 1 |
| 43 | 1.1.4.5 | Reunión de Coordinación Semanal 5 | 1d | 2018-06-19 | 2018-06-19 | 2018-06-19 | 2018-06-19 | 1d | 134d | start no earlier than 2018-06-19 | JAN | 8h | 1 | 1 |
| 44 | 1.1.4.6 | Reunión de Coordinación Semanal 6 | 1d | 2018-06-26 | 2018-06-26 | 2018-06-26 | 2018-06-26 | 1d | 129d | start no earlier than 2018-06-26 | JAN | 8h | 1 | 1 |
| 45 | 1.1.4.7 | Reunión de Coordinación Semanal 7 | 1d | 2018-07-03 | 2018-07-03 | 2018-07-03 | 2018-07-03 | 1d | 125d | start no earlier than 2018-07-03 | JAN | 8h | 1 | 1 |
| 46 | 1.1.4.8 | Reunión de Coordinación Semanal 8 | 1d | 2018-07-10 | 2018-07-10 | 2018-07-10 | 2018-07-10 | 1d | 120d | start no earlier than 2018-07-10 | JAN | 8h | 1 | 1 |
| 47 | 1.1.4.9 | Reunión de Coordinación Semanal 9 | 1d | 2018-07-18 | 2018-07-18 | 2018-07-18 | 2018-07-18 | 1d | 114d | start no earlier than 2018-07-18 | JAN | 8h | 1 | 1 |
| 48 | 1.1.4.10 | Reunión de Coordinación Semanal 10 | 1d | 2018-07-25 | 2018-07-25 | 2018-07-25 | 2018-07-25 | 1d | 109d | start no earlier than 2018-07-25 | JAN | 8h | 1 | 1 |
| 49 | 1.1.4.11 | Reunión de Coordinación Semanal 11 | 1d | 2018-08-01 | 2018-08-01 | 2018-08-01 | 2018-08-01 | 1d | 104d | start no earlier than 2018-08-01 | JAN | 8h | 1 | 1 |
| 50 | 1.1.4.12 | Reunión de Coordinación Semanal 12 | 1d | 2018-08-08 | 2018-08-08 | 2018-08-08 | 2018-08-08 | 1d | 99d | start no earlier than 2018-08-08 | JAN | 8h | 1 | 1 |
| 51 | 1.1.4.13 | Reunión de Coordinación Semanal 13 | 1d | 2018-08-16 | 2018-08-16 | 2018-08-16 | 2018-08-16 | 1d | 93d | start no earlier than 2018-08-16 | JAN | 8h | 1 | 1 |
| 52 | 1.1.4.14 | Reunión de Coordinación Semanal 14 | 1d | 2018-08-23 | 2018-08-23 | 2018-08-23 | 2018-08-23 | 1d | 88d | start no earlier than 2018-08-23 | JAN | 8h | 1 | 1 |
| 53 | 1.1.4.15 | Reunión de Coordinación Semanal 15 | 1d | 2018-08-31 | 2018-08-31 | 2018-08-31 | 2018-08-31 | 1d | 83d | start no earlier than 2018-08-30 | JAN | 8h | 1 | 1 |
| 54 | 1.1.5 | **Cierre del Proyecto** | 1d | 2018-12-31 | 2018-12-31 | 2018-12-31 | 2018-12-31 | 1d | 0d |  |  | 8h | 1 | 1 |
| 55 | 1.1.5.1 | Elaborar Documentos de Cierre del Proyecto | 1d | 2018-12-31 | 2018-12-31 | 2018-12-31 | 2018-12-31 | 1d | 0d | start no earlier than 2018-12-31 | JAN | 8h | 1 | 1 |
| 56 | 1.2 | **Disponibilidad de Información** | 1d? | 2018-04-23 | 2018-04-23 |  |  |  | 174d |  |  |  |  |  |
| 57 | 1.2.1 | **Desarrollo** | 1d? | 2018-04-23 | 2018-04-23 |  |  |  | 174d |  |  |  |  |  |
| 58 | 1.2.1.1 | **Modelo de PN – Teradata** | 1d? | 2018-04-23 | 2018-04-23 |  |  |  | 174d |  |  |  |  |  |
| 59 | 1.2.1.1.1 | DWE Insumos PPNN - Vehiculos Adquiridos | 1d? | 2018-04-23 | 2018-04-23 |  |  |  | 174d |  |  |  |  |  |
| 60 | 1.2.1.1.2 | Módulo batch Variables PPNN - Ingresos | 1d? | 2018-04-23 | 2018-04-23 |  |  |  | 174d |  |  |  |  |  |
| 61 | 1.2.1.1.3 | Módulo batch Variables PPNN - Salidas | 1d? | 2018-04-23 | 2018-04-23 |  |  |  | 174d |  |  |  |  |  |
| 62 | 1.2.1.1.4 | Módulo batch Variables PPNN - Patrimonio y otros | 1d? | 2018-04-23 | 2018-04-23 |  |  |  | 174d |  |  |  |  |  |

| ID | WBS | Task | Duration | Start | Finish | Total slack |
| --- | --- | --- | --- | --- | --- | --- |
| 63 | 1.2.2 | **Control de Calidad** | 1d? | 2018-04-23 | 2018-04-23 | 174d |
| 64 | 1.2.2.1 | Revisar Modelo de IGV - Teradata | 1d? | 2018-04-23 | 2018-04-23 | 174d |
| 65 | 1.2.2.2 | **Revisar Modelo de PN – Teradata** | 1d? | 2018-04-23 | 2018-04-23 | 174d |
| 66 | 1.2.2.2.1 | DWE Insumos PPNN - Anexas F.617 | 1d? | 2018-04-23 | 2018-04-23 | 174d |
| 67 | 1.2.2.2.2 | DWE Insumos PPNN - Vehiculos Adquiridos | 1d? | 2018-04-23 | 2018-04-23 | 174d |
| 68 | 1.2.2.2.3 | DWE Insumos PPNN - SUNARP | 1d? | 2018-04-23 | 2018-04-23 | 174d |
| 69 | 1.2.2.2.4 | Panderos | 1d? | 2018-04-23 | 2018-04-23 | 174d |
| 70 | 1.2.2.2.5 | Módulo batch Variables PPNN - Ingresos | 1d? | 2018-04-23 | 2018-04-23 | 174d |
| 71 | 1.2.2.2.6 | Módulo batch Variables PPNN - Salidas | 1d? | 2018-04-23 | 2018-04-23 | 174d |
| 72 | 1.2.2.2.7 | Módulo batch Variables PPNN - Patrimonio y otros | 1d? | 2018-04-23 | 2018-04-23 | 174d |
| 73 | 1.2.3 | **Implantación** | 1d? | 2018-04-23 | 2018-04-23 | 174d |
| 74 | 1.2.3.1 | Modelo de IGV - Teradata | 1d? | 2018-04-23 | 2018-04-23 | 174d |
| 75 | 1.2.3.2 | Modelo de PN – Teradata | 1d? | 2018-04-23 | 2018-04-23 | 174d |
| 76 | 1.2.4 | Entregable: Modelo del IGV y PN -Teradata - Implementado | 1d? | 2018-04-23 | 2018-04-23 | 174d |
