# Cronograma del Proyecto al 20180709

Schedule from MS Project, 2018-04-23 to 2018-12-31, status date 2018-05-18, costs in S/..

## Calendars

- Estándar: Mon-Fri 09:00-13:00, 15:00-19:00; Sat-Sun off. Exceptions (off unless hours are given): 2018-05-01 (Dia del Trabajador), 2018-06-29 (Dia del Pescador), 2018-08-30 (santa rosa), 2018-10-08 (combate de angamos), 2018-11-01 (dia de los santos), 2018-12-25 (navidad).

## Resources

| Resource |
| --- |
| JAN |

## Schedule

| ID | WBS | Task | Duration | Start | Finish | Predecessors | Baseline start | Baseline finish | Baseline duration | Total slack | Free slack | Constraint | Resources | Work | Cost | Baseline cost |
| --- | --- | --- | --- | --- | --- | --- | --- | --- | --- | --- | --- | --- | --- | --- | --- | --- |
| 1 | 1 | **Control Electrónico del IGV** | 175d | 2018-04-23 | 2018-12-31 |  | 2018-04-23 | 2018-12-31 | 175d | 0d |  |  |  | 344h | 43 | 43 |
| 2 | 1.1 | **Gestión del Proyecto** | 175d | 2018-04-23 | 2018-12-31 |  | 2018-04-23 | 2018-12-31 | 175d | 0d |  |  |  | 344h | 43 | 43 |
| 3 | 1.1.1 | **Iniciación** | 4d | 2018-04-23 | 2018-04-26 |  | 2018-04-23 | 2018-04-26 | 4d | 168d |  |  |  | 32h | 4 | 4 |
| 4 | 1.1.1.1 | **Project Charter** | 2d | 2018-04-23 | 2018-04-24 |  | 2018-04-23 | 2018-04-24 | 2d | 168d |  |  |  | 16h | 2 | 2 |
| 5 | 1.1.1.1.1 | Elaborar el Project Charter | 1d | 2018-04-23 | 2018-04-23 |  | 2018-04-23 | 2018-04-23 | 1d | 168d | 0d |  | JAN | 8h | 1 | 1 |
| 6 | 1.1.1.1.2 | Revisar el Project Charter | 1d | 2018-04-24 | 2018-04-24 | 5 | 2018-04-24 | 2018-04-24 | 1d | 168d | 0d |  | JAN | 8h | 1 | 1 |
| 7 | 1.1.1.2 | **Scope Statement** | 2d | 2018-04-25 | 2018-04-26 |  | 2018-04-25 | 2018-04-26 | 2d | 168d |  |  |  | 16h | 2 | 2 |
| 8 | 1.1.1.2.1 | Elaborar el Scope Statement | 1d | 2018-04-25 | 2018-04-25 | 6 | 2018-04-25 | 2018-04-25 | 1d | 168d | 0d |  | JAN | 8h | 1 | 1 |
| 9 | 1.1.1.2.2 | Revisar el Scope Statement | 1d | 2018-04-26 | 2018-04-26 | 8 | 2018-04-26 | 2018-04-26 | 1d | 168d | 0d |  | JAN | 8h | 1 | 1 |
| 10 | 1.1.2 | **Plan de Proyecto** | 57.5d | 2018-04-27 | 2018-07-19 |  | 2018-04-27 | 2018-07-19 | 57.5d | 113.5d |  |  |  | 64h | 8 | 8 |
| 11 | 1.1.2.1 | Elaborar el Plan de Proyecto | 3d | 2018-04-27 | 2018-05-02 | 9 | 2018-04-27 | 2018-05-02 | 3d | 168d |  |  | JAN | 24h | 3 | 3 |
| 12 | 1.1.2.2 | Actualizar documentos del Proyecto 1 | 0.5d | 2018-05-17 | 2018-05-17 |  | 2018-05-17 | 2018-05-17 | 0.5d | 157.5d |  | start no earlier than 2018-05-17 | JAN | 4h | 0.5 | 0.5 |
| 13 | 1.1.2.3 | Actualizar documentos del Proyecto 2 | 0.5d | 2018-05-24 | 2018-05-24 |  | 2018-05-24 | 2018-05-24 | 0.5d | 152.5d |  | start no earlier than 2018-05-24 | JAN | 4h | 0.5 | 0.5 |
| 14 | 1.1.2.4 | Actualizar documentos del Proyecto 3 | 0.5d | 2018-05-31 | 2018-05-31 |  | 2018-05-31 | 2018-05-31 | 0.5d | 147.5d |  | start no earlier than 2018-05-31 | JAN | 4h | 0.5 | 0.5 |
| 15 | 1.1.2.5 | Actualizar documentos del Proyecto 4 | 0.5d | 2018-06-07 | 2018-06-07 |  | 2018-06-07 | 2018-06-07 | 0.5d | 142.5d |  | start no earlier than 2018-06-07 | JAN | 4h | 0.5 | 0.5 |
| 16 | 1.1.2.6 | Actualizar documentos del Proyecto 5 | 0.5d | 2018-06-14 | 2018-06-14 |  | 2018-06-14 | 2018-06-14 | 0.5d | 137.5d |  | start no earlier than 2018-06-14 | JAN | 4h | 0.5 | 0.5 |
| 17 | 1.1.2.7 | Actualizar documentos del Proyecto 6 | 0.5d | 2018-06-21 | 2018-06-21 |  | 2018-06-21 | 2018-06-21 | 0.5d | 132.5d |  | start no earlier than 2018-06-21 | JAN | 4h | 0.5 | 0.5 |
| 18 | 1.1.2.8 | Actualizar documentos del Proyecto 7 | 0.5d | 2018-06-28 | 2018-06-28 |  | 2018-06-28 | 2018-06-28 | 0.5d | 127.5d |  | start no earlier than 2018-06-28 | JAN | 4h | 0.5 | 0.5 |
| 19 | 1.1.2.9 | Actualizar documentos del Proyecto 8 | 0.5d | 2018-07-05 | 2018-07-05 |  | 2018-07-05 | 2018-07-05 | 0.5d | 123.5d |  | start no earlier than 2018-07-05 | JAN | 4h | 0.5 | 0.5 |
| 20 | 1.1.2.10 | Actualizar documentos del Proyecto 9 | 0.5d | 2018-07-12 | 2018-07-12 |  | 2018-07-12 | 2018-07-12 | 0.5d | 118.5d |  | start no earlier than 2018-07-12 | JAN | 4h | 0.5 | 0.5 |
| 21 | 1.1.2.11 | Actualizar documentos del Proyecto 10 | 0.5d | 2018-07-19 | 2018-07-19 |  | 2018-07-19 | 2018-07-19 | 0.5d | 113.5d |  | start no earlier than 2018-07-19 | JAN | 4h | 0.5 | 0.5 |
| 22 | 1.1.3 | **Informes de Estado del Proyecto** | 72d | 2018-05-18 | 2018-08-28 |  | 2018-05-18 | 2018-08-28 | 72d | 85d |  |  |  | 120h | 15 | 15 |
| 23 | 1.1.3.1 | Informes de Estado del Proyecto 1 | 1d | 2018-05-18 | 2018-05-18 |  | 2018-05-18 | 2018-05-18 | 1d | 156d |  | start no earlier than 2018-05-18 | JAN | 8h | 1 | 1 |
| 24 | 1.1.3.2 | Informes de Estado del Proyecto 2 | 1d | 2018-05-25 | 2018-05-25 |  | 2018-05-25 | 2018-05-25 | 1d | 151d |  | start no earlier than 2018-05-25 | JAN | 8h | 1 | 1 |
| 25 | 1.1.3.3 | Informes de Estado del Proyecto 3 | 1d | 2018-06-01 | 2018-06-01 |  | 2018-06-01 | 2018-06-01 | 1d | 146d |  | start no earlier than 2018-06-01 | JAN | 8h | 1 | 1 |
| 26 | 1.1.3.4 | Informes de Estado del Proyecto 4 | 1d | 2018-06-08 | 2018-06-08 |  | 2018-06-08 | 2018-06-08 | 1d | 141d |  | start no earlier than 2018-06-08 | JAN | 8h | 1 | 1 |
| 27 | 1.1.3.5 | Informes de Estado del Proyecto 5 | 1d | 2018-06-15 | 2018-06-15 |  | 2018-06-15 | 2018-06-15 | 1d | 136d |  | start no earlier than 2018-06-15 | JAN | 8h | 1 | 1 |
| 28 | 1.1.3.6 | Informes de Estado del Proyecto 6 | 1d | 2018-06-22 | 2018-06-22 |  | 2018-06-22 | 2018-06-22 | 1d | 131d |  | start no earlier than 2018-06-22 | JAN | 8h | 1 | 1 |
| 29 | 1.1.3.7 | Informes de Estado del Proyecto 7 | 1d | 2018-07-02 | 2018-07-02 |  | 2018-07-02 | 2018-07-02 | 1d | 126d |  | start no earlier than 2018-07-02 | JAN | 8h | 1 | 1 |
| 30 | 1.1.3.8 | Informes de Estado del Proyecto 8 | 1d | 2018-07-09 | 2018-07-09 |  | 2018-07-09 | 2018-07-09 | 1d | 121d |  | start no earlier than 2018-07-09 | JAN | 8h | 1 | 1 |
| 31 | 1.1.3.9 | Informes de Estado del Proyecto 9 | 1d | 2018-07-16 | 2018-07-16 |  | 2018-07-16 | 2018-07-16 | 1d | 116d |  | start no earlier than 2018-07-16 | JAN | 8h | 1 | 1 |
| 32 | 1.1.3.10 | Informes de Estado del Proyecto 10 | 1d | 2018-07-23 | 2018-07-23 |  | 2018-07-23 | 2018-07-23 | 1d | 111d |  | start no earlier than 2018-07-23 | JAN | 8h | 1 | 1 |
| 33 | 1.1.3.11 | Informes de Estado del Proyecto 11 | 1d | 2018-07-30 | 2018-07-30 |  | 2018-07-30 | 2018-07-30 | 1d | 106d |  | start no earlier than 2018-07-30 | JAN | 8h | 1 | 1 |
| 34 | 1.1.3.12 | Informes de Estado del Proyecto 12 | 1d | 2018-08-06 | 2018-08-06 |  | 2018-08-06 | 2018-08-06 | 1d | 101d |  | start no earlier than 2018-08-06 | JAN | 8h | 1 | 1 |
| 35 | 1.1.3.13 | Informes de Estado del Proyecto 13 | 1d | 2018-08-13 | 2018-08-13 |  | 2018-08-13 | 2018-08-13 | 1d | 96d |  | start no earlier than 2018-08-13 | JAN | 8h | 1 | 1 |
| 36 | 1.1.3.14 | Informes de Estado del Proyecto 14 | 1d | 2018-08-20 | 2018-08-20 |  | 2018-08-20 | 2018-08-20 | 1d | 91d |  | start no earlier than 2018-08-20 | JAN | 8h | 1 | 1 |
| 37 | 1.1.3.15 | Informes de Estado del Proyecto 15 | 1d | 2018-08-28 | 2018-08-28 |  | 2018-08-28 | 2018-08-28 | 1d | 85d |  | start no earlier than 2018-08-28 | JAN | 8h | 1 | 1 |

| ID | WBS | Task | Type | Duration | Start | Finish | Predecessors | Baseline start | Baseline finish | Baseline duration | Total slack | Free slack | Constraint | Resources | Work | Cost | Baseline cost |
| --- | --- | --- | --- | --- | --- | --- | --- | --- | --- | --- | --- | --- | --- | --- | --- | --- | --- |
| 38 | 1.1.4 | **Reunión de Coordinación Semanal** |  | 73d | 2018-05-21 | 2018-08-31 |  | 2018-05-21 | 2018-08-31 | 73d | 83d |  |  |  | 120h | 15 | 15 |
| 39 | 1.1.4.1 | Reunión de Coordinación Semanal 1 |  | 1d | 2018-05-21 | 2018-05-21 |  | 2018-05-21 | 2018-05-21 | 1d | 155d |  | start no earlier than 2018-05-21 | JAN | 8h | 1 | 1 |
| 40 | 1.1.4.2 | Reunión de Coordinación Semanal 2 |  | 1d | 2018-05-28 | 2018-05-28 |  | 2018-05-28 | 2018-05-28 | 1d | 150d |  | start no earlier than 2018-05-28 | JAN | 8h | 1 | 1 |
| 41 | 1.1.4.3 | Reunión de Coordinación Semanal 3 |  | 1d | 2018-06-04 | 2018-06-04 |  | 2018-06-04 | 2018-06-04 | 1d | 145d |  | start no earlier than 2018-06-04 | JAN | 8h | 1 | 1 |
| 42 | 1.1.4.4 | Reunión de Coordinación Semanal 4 |  | 1d | 2018-06-11 | 2018-06-11 |  | 2018-06-11 | 2018-06-11 | 1d | 140d |  | start no earlier than 2018-06-11 | JAN | 8h | 1 | 1 |
| 43 | 1.1.4.5 | Reunión de Coordinación Semanal 5 |  | 1d | 2018-06-19 | 2018-06-19 |  | 2018-06-19 | 2018-06-19 | 1d | 134d |  | start no earlier than 2018-06-19 | JAN | 8h | 1 | 1 |
| 44 | 1.1.4.6 | Reunión de Coordinación Semanal 6 |  | 1d | 2018-06-26 | 2018-06-26 |  | 2018-06-26 | 2018-06-26 | 1d | 129d |  | start no earlier than 2018-06-26 | JAN | 8h | 1 | 1 |
| 45 | 1.1.4.7 | Reunión de Coordinación Semanal 7 |  | 1d | 2018-07-03 | 2018-07-03 |  | 2018-07-03 | 2018-07-03 | 1d | 125d |  | start no earlier than 2018-07-03 | JAN | 8h | 1 | 1 |
| 46 | 1.1.4.8 | Reunión de Coordinación Semanal 8 |  | 1d | 2018-07-10 | 2018-07-10 |  | 2018-07-10 | 2018-07-10 | 1d | 120d |  | start no earlier than 2018-07-10 | JAN | 8h | 1 | 1 |
| 47 | 1.1.4.9 | Reunión de Coordinación Semanal 9 |  | 1d | 2018-07-18 | 2018-07-18 |  | 2018-07-18 | 2018-07-18 | 1d | 114d |  | start no earlier than 2018-07-18 | JAN | 8h | 1 | 1 |
| 48 | 1.1.4.10 | Reunión de Coordinación Semanal 10 |  | 1d | 2018-07-25 | 2018-07-25 |  | 2018-07-25 | 2018-07-25 | 1d | 109d |  | start no earlier than 2018-07-25 | JAN | 8h | 1 | 1 |
| 49 | 1.1.4.11 | Reunión de Coordinación Semanal 11 |  | 1d | 2018-08-01 | 2018-08-01 |  | 2018-08-01 | 2018-08-01 | 1d | 104d |  | start no earlier than 2018-08-01 | JAN | 8h | 1 | 1 |
| 50 | 1.1.4.12 | Reunión de Coordinación Semanal 12 |  | 1d | 2018-08-08 | 2018-08-08 |  | 2018-08-08 | 2018-08-08 | 1d | 99d |  | start no earlier than 2018-08-08 | JAN | 8h | 1 | 1 |
| 51 | 1.1.4.13 | Reunión de Coordinación Semanal 13 |  | 1d | 2018-08-16 | 2018-08-16 |  | 2018-08-16 | 2018-08-16 | 1d | 93d |  | start no earlier than 2018-08-16 | JAN | 8h | 1 | 1 |
| 52 | 1.1.4.14 | Reunión de Coordinación Semanal 14 |  | 1d | 2018-08-23 | 2018-08-23 |  | 2018-08-23 | 2018-08-23 | 1d | 88d |  | start no earlier than 2018-08-23 | JAN | 8h | 1 | 1 |
| 53 | 1.1.4.15 | Reunión de Coordinación Semanal 15 |  | 1d | 2018-08-31 | 2018-08-31 |  | 2018-08-31 | 2018-08-31 | 1d | 83d |  | start no earlier than 2018-08-30 | JAN | 8h | 1 | 1 |
| 54 | 1.1.5 | **Cierre del Proyecto** |  | 1d | 2018-12-31 | 2018-12-31 |  | 2018-12-31 | 2018-12-31 | 1d | 0d |  |  |  | 8h | 1 | 1 |
| 55 | 1.1.5.1 | Elaborar Documentos de Cierre del Proyecto |  | 1d | 2018-12-31 | 2018-12-31 |  | 2018-12-31 | 2018-12-31 | 1d | 0d |  | start no earlier than 2018-12-31 | JAN | 8h | 1 | 1 |
| 56 | 1.2 | **Disponibilidad de Información** |  | 41d | 2018-04-23 | 2018-06-19 |  |  |  |  | 134d |  |  |  |  |  |  |
| 57 | 1.2.1 | **Modelo de IGV - Teradata** |  | 28d | 2018-04-23 | 2018-05-31 |  |  |  |  | 147d |  |  |  |  |  |  |
| 58 | 1.2.1.1 | **Calidad** |  | 28d | 2018-04-23 | 2018-05-31 |  |  |  |  | 147d |  |  |  |  |  |  |
| 59 | 1.2.1.1.1 | Revisar Modelo de IGV - Teradata |  | 28d | 2018-04-23 | 2018-05-31 |  |  |  |  | 147d | 0d |  |  |  |  |  |
| 60 | 1.2.1.2 | **Implantación** |  | 1d | 2018-05-31 | 2018-05-31 |  |  |  |  | 147d |  |  |  |  |  |  |
| 61 | 1.2.1.2.1 | Modelo de IGV - Teradata |  | 1d | 2018-05-31 | 2018-05-31 | 59FS-1d |  |  |  | 147d | 0d |  |  |  |  |  |
| 62 | 1.2.1.2.2 | Entregable: Modelo del IGV Teradata - Implementado | milestone | 0d | 2018-05-31 | 2018-05-31 | 61FS-1d |  |  |  | 148d |  |  |  |  |  |  |

| ID | WBS | Task | Type | Duration | Start | Finish | Predecessors | Total slack | Free slack | Constraint |
| --- | --- | --- | --- | --- | --- | --- | --- | --- | --- | --- |
| 63 | 1.2.2 | **Modelo de PN – Teradata** |  | 41d | 2018-04-23 | 2018-06-19 |  | 134d |  |  |
| 64 | 1.2.2.1 | **Desarrollo** |  | 32d | 2018-04-23 | 2018-06-06 |  | 134d |  |  |
| 65 | 1.2.2.1.1 | DWE Insumos PPNN - Vehiculos Adquiridos |  | 32d | 2018-04-23 | 2018-06-06 |  | 138d | 0d |  |
| 66 | 1.2.2.1.2 | Módulo batch Variables PPNN - Ingresos |  | 32d | 2018-04-23 | 2018-06-06 |  | 134d | 0d |  |
| 67 | 1.2.2.1.3 | Módulo batch Variables PPNN - Salidas |  | 32d | 2018-04-23 | 2018-06-06 |  | 134d | 0d |  |
| 68 | 1.2.2.1.4 | Módulo batch Variables PPNN - Patrimonio y otros |  | 32d | 2018-04-23 | 2018-06-06 |  | 134d | 0d |  |
| 69 | 1.2.2.2 | **Control de Calidad** |  | 41d | 2018-04-23 | 2018-06-19 |  | 134d |  |  |
| 70 | 1.2.2.2.1 | DWE Insumos PPNN - Anexas F.617 |  | 34d | 2018-04-23 | 2018-06-08 |  | 141d |  |  |
| 71 | 1.2.2.2.2 | DWE Insumos PPNN - Vehiculos Adquiridos |  | 5d | 2018-06-07 | 2018-06-13 | 65 | 138d |  |  |
| 72 | 1.2.2.2.3 | DWE Insumos PPNN - SUNARP |  | 35d | 2018-04-23 | 2018-06-11 |  | 140d |  |  |
| 73 | 1.2.2.2.4 | Panderos |  | 39d | 2018-04-23 | 2018-06-15 |  | 136d |  |  |
| 74 | 1.2.2.2.5 | Módulo batch Variables PPNN - Ingresos |  | 9d | 2018-06-07 | 2018-06-19 | 66 | 134d |  |  |
| 75 | 1.2.2.2.6 | Módulo batch Variables PPNN - Salidas |  | 9d | 2018-06-07 | 2018-06-19 | 67 | 134d |  |  |
| 76 | 1.2.2.2.7 | Módulo batch Variables PPNN - Patrimonio y otros |  | 9d | 2018-06-07 | 2018-06-19 | 68 | 134d | 0d |  |
| 77 | 1.2.2.3 | **Implantación** |  | 1d | 2018-06-19 | 2018-06-19 |  | 134d |  |  |
| 78 | 1.2.2.3.1 | Modelo de PN – Teradata |  | 1d | 2018-06-19 | 2018-06-19 | 76FS-1d | 134d | 0d |  |
| 79 | 1.2.2.3.2 | Entregable: Modelo del PN Teradata - Implementado | milestone | 0d | 2018-06-19 | 2018-06-19 | 78FS-1d | 135d |  |  |
| 80 | 1.3 | **Gestión de Riesgo del Cumplimiento Tributario del IGV** |  | 65d | 2018-04-23 | 2018-07-24 |  | 110d |  |  |
| 81 | 1.3.1 | **Matriz de Riesgo del Contribuyente** |  | 65d | 2018-04-23 | 2018-07-24 |  | 110d |  |  |
| 82 | 1.3.1.1 | **Arquitectura** |  | 47d | 2018-04-23 | 2018-06-27 |  | 128d |  |  |
| 83 | 1.3.1.1.1 | **Construcción** |  | 18d | 2018-06-04 | 2018-06-27 |  | 128d |  |  |
| 84 | 1.3.1.1.1.1 | Ambiente Desarrollo |  | 6d | 2018-06-04 | 2018-06-11 |  | 128d | 0d | finish no earlier than 2018-06-11 |
| 85 | 1.3.1.1.1.2 | Ambiente Calidad |  | 6d | 2018-06-12 | 2018-06-19 | 84 | 128d | 0d |  |
| 86 | 1.3.1.1.1.3 | Elaboración de Documentación Técnica e Instrucctivo. |  | 6d | 2018-06-20 | 2018-06-27 | 85 | 128d |  |  |

| ID | WBS | Task | Type | Duration | Start | Finish | Predecessors | Total slack | Free slack | Constraint |
| --- | --- | --- | --- | --- | --- | --- | --- | --- | --- | --- |
| 87 | 1.3.1.1.2 | **Implantación** |  | 42d | 2018-04-23 | 2018-06-20 |  | 133d |  |  |
| 88 | 1.3.1.1.2.1 | Ambiente de Desarrollo |  | 1d | 2018-06-12 | 2018-06-12 | 84 | 139d |  |  |
| 89 | 1.3.1.1.2.2 | Ambiente de Calidad |  | 1d | 2018-06-20 | 2018-06-20 | 85 | 133d |  |  |
| 90 | 1.3.1.1.2.3 | Entregable: Ambientes de Desarrollo y Calidad | milestone | 0d | 2018-04-23 | 2018-04-23 |  | 175d |  |  |
| 91 | 1.3.1.2 | **Desarrollo** |  | 54d | 2018-04-23 | 2018-07-09 |  | 110d |  |  |
| 92 | 1.3.1.2.1 | Matriz PRC - Variable de Condición de Domicilio - Estado del Contribuyente |  | 19d | 2018-04-23 | 2018-05-18 |  | 127d | 0d |  |
| 93 | 1.3.1.2.2 | Matriz PRC - Variable de Omiso a la Declaración MEPECO |  | 19d | 2018-04-23 | 2018-05-18 |  | 127d | 0d |  |
| 94 | 1.3.1.2.3 | Matriz PRC - Variable de Omiso a la Declaración PRICO |  | 19d | 2018-04-23 | 2018-05-18 |  | 127d | 0d |  |
| 95 | 1.3.1.2.4 | Matriz PRC - Variable Omisos Libros Electrónicos - Padrón acotado |  | 19d | 2018-04-23 | 2018-05-18 |  | 127d | 0d |  |
| 96 | 1.3.1.2.5 | Matriz PRC - Servicio de Perfil |  | 19d | 2018-04-23 | 2018-05-18 |  | 126d | 0d |  |
| 97 | 1.3.1.2.6 | Matriz PRC - Consulta |  | 16d | 2018-06-15 | 2018-07-09 |  | 110d | 0d | start no earlier than 2018-06-15 |
| 98 | 1.3.1.2.7 | **Integración** |  | 5d | 2018-05-21 | 2018-05-25 |  | 126d |  |  |
| 99 | 1.3.1.2.7.1 | Matriz PRC - Variable de Condición de Domicilio - Estado del Contribuyente |  | 5d | 2018-05-21 | 2018-05-25 | 92 | 127d | 0d |  |
| 100 | 1.3.1.2.7.2 | Matriz PRC - Variable de Omiso a la Declaración MEPECO |  | 5d | 2018-05-21 | 2018-05-25 | 93 | 127d | 0d |  |
| 101 | 1.3.1.2.7.3 | Matriz PRC - Variable de Omiso a la Declaración PRICO |  | 5d | 2018-05-21 | 2018-05-25 | 94 | 127d | 0d |  |
| 102 | 1.3.1.2.7.4 | Matriz PRC - Variable Omisos Libros Electrónicos - Padrón acotado |  | 5d | 2018-05-21 | 2018-05-25 | 95 | 127d | 0d |  |
| 103 | 1.3.1.2.7.5 | Matriz PRC - Servicio de Perfil |  | 5d | 2018-05-21 | 2018-05-25 | 96 | 126d | 0d |  |
| 104 | 1.3.1.3 | **Control de Calidad** |  | 40d | 2018-05-28 | 2018-07-23 |  | 111d |  |  |
| 105 | 1.3.1.3.1 | Matriz PRC - Variable de Condición de Domicilio - Estado del Contribuyente |  | 24d | 2018-05-28 | 2018-06-28 | 99 | 127d |  |  |
| 106 | 1.3.1.3.2 | Matriz PRC - Variable de Omiso a la Declaración MEPECO |  | 24d | 2018-05-28 | 2018-06-28 | 100 | 127d |  |  |
| 107 | 1.3.1.3.3 | Matriz PRC - Variable de Omiso a la Declaración PRICO |  | 24d | 2018-05-28 | 2018-06-28 | 101 | 127d |  |  |
| 108 | 1.3.1.3.4 | Matriz PRC - Variable Omisos Libros Electrónicos - Padrón acotado |  | 24d | 2018-05-28 | 2018-06-28 | 102 | 127d |  |  |
| 109 | 1.3.1.3.5 | Matriz PRC - Servicio de Perfil |  | 24d | 2018-05-28 | 2018-06-28 | 103 | 126d | 0d |  |
| 110 | 1.3.1.3.6 | Matriz PRC - Consulta |  | 10d | 2018-07-10 | 2018-07-23 | 97 | 110d | 0d |  |

| ID | WBS | Task | Type | Duration | Start | Finish | Predecessors | Total slack | Free slack | Constraint |
| --- | --- | --- | --- | --- | --- | --- | --- | --- | --- | --- |
| 111 | 1.3.1.4 | **Implantación** |  | 17d | 2018-07-02 | 2018-07-24 |  | 110d |  |  |
| 112 | 1.3.1.4.1 | Instalación de Matriz de Riesgos del Contribuyente |  | 1d | 2018-07-02 | 2018-07-02 | 109 | 126d |  |  |
| 113 | 1.3.1.4.2 | Implantación de Consulta de Matriz de Riesgo |  | 1d | 2018-07-24 | 2018-07-24 | 110 | 110d | 0d |  |
| 114 | 1.3.1.5 | Entregable: Matriz de Riesgos del Contribuyente -Implementada | milestone | 0d | 2018-06-28 | 2018-06-28 | 109 | 127d |  |  |
| 115 | 1.3.1.6 | Entregable: Consulta Matriz de Riesgos -Implementada | milestone | 0d | 2018-07-24 | 2018-07-24 | 113 | 110d |  |  |
| 116 | 1.3.2 | **Actualizar vinculaciones a los ONR** |  | 1d | 2018-04-23 | 2018-04-23 |  | 174d |  |  |
| 117 | 1.3.2.1 | **Análisis** |  | 1d | 2018-04-23 | 2018-04-23 |  | 174d |  |  |
| 118 | 1.3.2.1.1 | Revisión del MPN |  | 1d | 2018-04-23 | 2018-04-23 |  | 174d |  |  |
| 119 | 1.3.2.1.2 | Elaboración del F2-AR1 |  | 1d | 2018-04-23 | 2018-04-23 |  | 174d |  |  |
| 120 | 1.3.2.2 | **Desarrollo** |  | 1d | 2018-04-23 | 2018-04-23 |  | 174d |  |  |
| 121 | 1.3.2.2.1 | Desarrollar Actualizar vinculaciones a los ONR |  | 1d | 2018-04-23 | 2018-04-23 |  | 174d |  |  |
| 122 | 1.3.2.3 | **Control de Calidad** |  | 1d | 2018-04-23 | 2018-04-23 |  | 174d |  |  |
| 123 | 1.3.2.3.1 | Actualizar vinculaciones a los ONR |  | 1d | 2018-04-23 | 2018-04-23 |  | 174d |  |  |
| 124 | 1.3.2.4 | **Implantación** |  | 1d | 2018-04-23 | 2018-04-23 |  | 174d |  |  |
| 125 | 1.3.2.4.1 | Implementar Actualizar vinculaciones a los ONR |  | 1d | 2018-04-23 | 2018-04-23 |  | 174d |  |  |
| 126 | 1.3.2.5 | Entregable: Acta de Aprobación de Actualizar vinculaciones a los ONR - Implementada | milestone | 0d | 2018-04-23 | 2018-04-23 |  | 175d |  |  |
| 127 | 1.3.3 | **APP de Consulta de Cumplimiento Tributario del IGV** |  | 0d | 2018-04-23 | 2018-04-23 |  | 175d |  |  |
| 128 | 1.3.3.1 | Entregable: APP de Consulta de Cumplimiento Tributario - Implementado | milestone | 0d | 2018-04-23 | 2018-04-23 |  | 175d |  |  |
| 129 | 1.3.4 | **Tablero de Gestión y Seguimiento del Control Electrónico del IGV** |  | 0d | 2018-04-23 | 2018-04-23 |  | 175d |  |  |
| 130 | 1.3.4.1 | Entregable: Tablero de Gestión y Seguimiento de Control Electónico del IGV - Implementado | milestone | 0d | 2018-04-23 | 2018-04-23 |  | 175d |  |  |
| 131 | 1.4 | **Actualización del Registro Único de Contribuyente** |  | 59d | 2018-04-23 | 2018-07-16 |  | 116d |  |  |
| 132 | 1.4.1 | **Campaña de Actualización email (configuración de 12 a 6 meses)** |  | 8d | 2018-05-14 | 2018-05-23 |  | 153d |  |  |
| 133 | 1.4.1.1 | **Desarrollo** |  | 2d | 2018-05-14 | 2018-05-15 |  | 153d |  |  |
| 134 | 1.4.1.1.1 | Campaña de Actualización email (configuración de 12 a 6 meses) |  | 2d | 2018-05-14 | 2018-05-15 |  | 153d | 0d | start no earlier than 2018-05-14 |

| ID | WBS | Task | Type | Duration | Start | Finish | Predecessors | Total slack | Free slack | Constraint |
| --- | --- | --- | --- | --- | --- | --- | --- | --- | --- | --- |
| 135 | 1.4.1.2 | **Control de Calidad** |  | 5d | 2018-05-16 | 2018-05-22 |  | 153d |  |  |
| 136 | 1.4.1.2.1 | Campaña de Actualización email (configuración de 12 a 6 meses) |  | 5d | 2018-05-16 | 2018-05-22 | 134 | 153d | 0d |  |
| 137 | 1.4.1.3 | **Implantación** |  | 1d | 2018-05-23 | 2018-05-23 |  | 153d |  |  |
| 138 | 1.4.1.3.1 | Implementar Campaña de Actualización email (configuración de 12 a 6 meses) |  | 1d | 2018-05-23 | 2018-05-23 | 136 | 153d | 0d |  |
| 139 | 1.4.1.4 | Entregable: Acta de Aprobación de Campaña de Actualización email | milestone | 0d | 2018-05-23 | 2018-05-23 | 138 | 153d |  |  |
| 140 | 1.4.2 | **Campaña de Actualización celular** |  | 59d | 2018-04-23 | 2018-07-16 |  | 116d |  |  |
| 141 | 1.4.2.1 | **Adquisición - Servicio de Centro de Contactos** |  | 29d | 2018-06-05 | 2018-07-16 |  | 116d |  |  |
| 142 | 1.4.2.1.1 | Validación del TDR (Procesos y DDST) |  | 2d | 2018-06-05 | 2018-06-06 |  | 116d | 0d | start no earlier than 2018-06-05 |
| 143 | 1.4.2.1.2 | Levantamiento de observaciones |  | 3d | 2018-06-07 | 2018-06-11 | 142 | 116d | 0d |  |
| 144 | 1.4.2.1.3 | Revisión con INA |  | 15d | 2018-06-12 | 2018-07-03 | 143 | 116d | 0d |  |
| 145 | 1.4.2.1.4 | Revisión con Proyecto Control Electrónico del IGV |  | 1d | 2018-07-04 | 2018-07-04 | 144 | 116d | 0d |  |
| 146 | 1.4.2.1.5 | Levantamiento de observaciones de INA y CEI |  | 2d | 2018-07-05 | 2018-07-06 | 145 | 116d | 0d |  |
| 147 | 1.4.2.1.6 | Visado del TDR |  | 5d | 2018-07-09 | 2018-07-13 | 146 | 116d | 0d |  |
| 148 | 1.4.2.1.7 | Envío del TDR para Adjudicación |  | 1d | 2018-07-16 | 2018-07-16 | 147 | 116d | 0d |  |
| 149 | 1.4.2.1.8 | Entregable: TDR Servicio de Centro de Contactos | milestone | 0d | 2018-07-16 | 2018-07-16 | 148 | 116d |  |  |
| 150 | 1.4.2.2 | **Desarrollo** |  | 27d | 2018-04-23 | 2018-05-30 |  | 127d |  |  |
| 151 | 1.4.2.2.1 | Desarrollar Campaña de Actualización celular |  | 27d | 2018-04-23 | 2018-05-30 |  | 127d | 0d |  |
| 152 | 1.4.2.3 | **Control de Calidad** |  | 21d | 2018-05-31 | 2018-06-28 |  | 127d |  |  |
| 153 | 1.4.2.3.1 | Campaña de Actualización celular |  | 21d | 2018-05-31 | 2018-06-28 | 151 | 127d | 0d |  |
| 154 | 1.4.2.4 | **Implantación** |  | 1d | 2018-06-28 | 2018-06-28 |  | 127d |  |  |
| 155 | 1.4.2.4.1 | Implementar Campaña de Actualización celular |  | 1d | 2018-06-28 | 2018-06-28 | 153FS-1d | 127d | 0d |  |
| 156 | 1.4.2.5 | Entregable: Acta de Aprobación de Campaña de Actualización celular | milestone | 0d | 2018-06-28 | 2018-06-28 | 155 | 127d |  |  |
| 157 | 1.5 | **Controles electrónicos a la autorización y emisión de CdP** |  | 72d | 2018-04-23 | 2018-08-02 |  | 103d |  |  |
| 158 | 1.5.1 | **Alertas de inconsistencias en el CPE** |  | 29d | 2018-04-23 | 2018-06-01 |  | 146d |  |  |
| 159 | 1.5.1.1 | **Análisis** |  | 2d | 2018-04-23 | 2018-04-24 |  | 146d |  |  |
| 160 | 1.5.1.1.1 | Revisión del MPN |  | 1d | 2018-04-23 | 2018-04-23 |  | 146d | 0d |  |
| 161 | 1.5.1.1.2 | Elaboración del F2-AR1 |  | 1d | 2018-04-24 | 2018-04-24 | 160 | 146d | 0d |  |

| ID | WBS | Task | Type | Duration | Start | Finish | Predecessors | Total slack | Free slack | Constraint |
| --- | --- | --- | --- | --- | --- | --- | --- | --- | --- | --- |
| 162 | 1.5.1.2 | **Desarrollo** |  | 18d | 2018-04-25 | 2018-05-21 |  | 146d |  |  |
| 163 | 1.5.1.2.1 | Desarrollar Alertas de inconsistencias en el CPE |  | 18d | 2018-04-25 | 2018-05-21 | 161 | 146d | 0d |  |
| 164 | 1.5.1.3 | **Control de Calidad** |  | 8d | 2018-05-22 | 2018-05-31 |  | 146d |  |  |
| 165 | 1.5.1.3.1 | Alertas de inconsistencias en el CPE |  | 8d | 2018-05-22 | 2018-05-31 | 163 | 146d | 0d |  |
| 166 | 1.5.1.4 | **Implantación** |  | 1d | 2018-06-01 | 2018-06-01 |  | 146d |  |  |
| 167 | 1.5.1.4.1 | Implementar Alertas de inconsistencias en el CPE |  | 1d | 2018-06-01 | 2018-06-01 | 165 | 146d | 0d |  |
| 168 | 1.5.1.5 | Entregable: Acta de Aprobación de Alertas de inconsistencias en el CPE | milestone | 0d | 2018-06-01 | 2018-06-01 | 167 | 146d |  |  |
| 169 | 1.5.2 | **Restricción a la Autorización de CdP** |  | 34d | 2018-05-15 | 2018-07-02 |  | 126d |  |  |
| 170 | 1.5.2.1 | **Desarrollo** |  | 14d | 2018-05-15 | 2018-06-01 |  | 126d |  |  |
| 171 | 1.5.2.1.1 | Desarrollar Restricción a la Autorización de CdP |  | 14d | 2018-05-15 | 2018-06-01 |  | 126d | 0d | start no earlier than 2018-05-15 |
| 172 | 1.5.2.2 | **Control de Calidad** |  | 20d | 2018-06-04 | 2018-07-02 |  | 126d |  |  |
| 173 | 1.5.2.2.1 | Restricción a la Autorización de CdP |  | 20d | 2018-06-04 | 2018-07-02 | 171 | 126d | 0d |  |
| 174 | 1.5.2.3 | **Implantación** |  | 1d | 2018-07-02 | 2018-07-02 |  | 126d |  |  |
| 175 | 1.5.2.3.1 | Implementar Restricción a la Autorización de CdP |  | 1d | 2018-07-02 | 2018-07-02 | 173FS-1d | 126d | 0d |  |
| 176 | 1.5.2.4 | Entregable: Acta de Aprobación de Restricción a la Autorización de CdP | milestone | 0d | 2018-07-02 | 2018-07-02 | 175 | 126d |  |  |
| 177 | 1.5.3 | **Limitación de CdP Autorizados** |  | 33.62d | 2018-05-14 | 2018-06-28 |  | 127.38d |  |  |
| 178 | 1.5.3.1 | **Analítica** |  | 3d | 2018-06-21 | 2018-06-25 |  | 130d |  |  |
| 179 | 1.5.3.1.1 | **Desarrollo** |  | 1d | 2018-06-21 | 2018-06-21 |  | 130d |  |  |
| 180 | 1.5.3.1.1.1 | Desarrollar Limitación de CdP Autorizados |  | 1d | 2018-06-21 | 2018-06-21 |  | 130d | 0d | start no earlier than 2018-06-21 |
| 181 | 1.5.3.1.2 | **Control de Calidad** |  | 1d | 2018-06-22 | 2018-06-22 |  | 130d |  |  |
| 182 | 1.5.3.1.2.1 | Limitación de CdP Autorizados |  | 1d | 2018-06-22 | 2018-06-22 | 180 | 130d | 0d |  |
| 183 | 1.5.3.1.3 | **Implantación** |  | 1d | 2018-06-25 | 2018-06-25 |  | 130d |  |  |
| 184 | 1.5.3.1.3.1 | Implementar Limitación de CdP Autorizados |  | 1d | 2018-06-25 | 2018-06-25 | 182 | 130d | 0d |  |
| 185 | 1.5.3.2 | Entregable: Componente Análitico | milestone | 0d | 2018-06-25 | 2018-06-25 | 184 | 130d |  |  |

| ID | WBS | Task | Type | Duration | Start | Finish | Predecessors | Total slack | Free slack | Constraint |
| --- | --- | --- | --- | --- | --- | --- | --- | --- | --- | --- |
| 186 | 1.5.3.3 | **FSW** |  | 33.62d | 2018-05-14 | 2018-06-28 |  | 127.38d |  |  |
| 187 | 1.5.3.3.1 | **Analisis** |  | 20.5d | 2018-05-14 | 2018-06-11 |  | 134.38d |  |  |
| 188 | 1.5.3.3.1.1 | Elaboración de Análisis |  | 100h | 2018-05-14 | 2018-05-30 |  | 134.38d | 0d | start no earlier than 2018-05-14 |
| 189 | 1.5.3.3.1.2 | Envío de Documento Análisis | milestone | 0d | 2018-06-04 | 2018-06-04 | 188FS+3d | 140.5d | 0d |  |
| 190 | 1.5.3.3.1.3 | Aprobación de Documento Análisis |  | 40h | 2018-06-04 | 2018-06-11 | 189 | 140.5d |  |  |
| 191 | 1.5.3.3.2 | **Desarrollo** |  | 21.62d | 2018-05-21 | 2018-06-19 |  | 127.38d |  |  |
| 192 | 1.5.3.3.2.1 | **Diseño** |  | 13.12d | 2018-05-31 | 2018-06-19 |  | 134.38d |  |  |
| 193 | 1.5.3.3.2.1.1 | Elaboración de Diseño |  | 73h | 2018-05-31 | 2018-06-13 | 188FS+1d | 134.38d | 0d |  |
| 194 | 1.5.3.3.2.1.2 | Envío de Documento Diseño | milestone | 0d | 2018-06-14 | 2018-06-14 | 193FS+1d | 134.38d | 0d |  |
| 195 | 1.5.3.3.2.1.3 | Aprobación de Documento Diseño |  | 24h | 2018-06-14 | 2018-06-19 | 194 | 134.38d |  |  |
| 196 | 1.5.3.3.2.2 | **Construcción** |  | 20.62d | 2018-05-21 | 2018-06-18 |  | 127.38d |  |  |
| 197 | 1.5.3.3.2.2.1 | Construcción |  | 106h | 2018-05-21 | 2018-06-07 |  | 127.38d | 0d | start no earlier than 2018-05-21 |
| 198 | 1.5.3.3.2.2.2 | Pruebas Unitarias |  | 8h | 2018-06-07 | 2018-06-08 | 197 | 127.38d | 0d |  |
| 199 | 1.5.3.3.2.2.3 | Pruebas de Integración y otros |  | 11h | 2018-06-08 | 2018-06-11 | 198 | 127.38d | 0d |  |
| 200 | 1.5.3.3.2.2.4 | Elaboración del documento de pase a producción |  | 24h | 2018-06-11 | 2018-06-14 | 199 | 127.38d | 0d |  |
| 201 | 1.5.3.3.2.2.5 | Actualización de documentación para el usuario |  | 16h | 2018-06-14 | 2018-06-18 | 200 | 135.38d |  |  |
| 202 | 1.5.3.3.2.2.6 | Envío de Construcción | milestone | 0d | 2018-06-15 | 2018-06-15 | 200FS+1d | 127.38d | 0d |  |
| 203 | 1.5.3.3.3 | Pruebas Desarrollo INSI |  | 24h | 2018-06-15 | 2018-06-20 | 202 | 127.38d | 0d |  |
| 204 | 1.5.3.3.4 | Envío entregable de software (Formal) | milestone | 0d | 2018-06-21 | 2018-06-21 | 203FS+1d | 127.38d | 0d |  |
| 205 | 1.5.3.3.5 | Aprobación de entregable de software |  | 40h | 2018-06-21 | 2018-06-28 | 204 | 127.38d |  |  |
| 206 | 1.5.4 | **Restricción a la Emisión de CdP (web services)** |  | 1d | 2018-04-23 | 2018-04-23 |  | 174d |  |  |
| 207 | 1.5.4.1 | **Desarrollo** |  | 1d | 2018-04-23 | 2018-04-23 |  | 174d |  |  |
| 208 | 1.5.4.1.1 | Desarrollar Restricción a la Emisión de CdP (web services) |  | 1d | 2018-04-23 | 2018-04-23 |  | 174d |  |  |
| 209 | 1.5.4.2 | **Control de Calidad** |  | 1d | 2018-04-23 | 2018-04-23 |  | 174d |  |  |
| 210 | 1.5.4.2.1 | CC Restricción a la Emisión de CdP (web services) |  | 1d | 2018-04-23 | 2018-04-23 |  | 174d |  |  |

| ID | WBS | Task | Type | Duration | Start | Finish | Predecessors | Total slack | Free slack |
| --- | --- | --- | --- | --- | --- | --- | --- | --- | --- |
| 211 | 1.5.4.3 | **Implantación** |  | 1d | 2018-04-23 | 2018-04-23 |  | 174d |  |
| 212 | 1.5.4.3.1 | Implementar Restricción a la Emisión de CdP (web services) |  | 1d | 2018-04-23 | 2018-04-23 |  | 174d |  |
| 213 | 1.5.4.4 | Entregable: Acta de Aprobación de Restricción a la Emisión de CdP (web services) | milestone | 0d | 2018-04-23 | 2018-04-23 |  | 175d |  |
| 214 | 1.5.5 | **Restricción a la Emisión de CPE** |  | 30d | 2018-04-23 | 2018-06-04 |  | 145d |  |
| 215 | 1.5.5.1 | **Desarrollo** |  | 19d | 2018-04-23 | 2018-05-18 |  | 156d |  |
| 216 | 1.5.5.1.1 | Desarrollar Restricción a la Emisión de CPE |  | 19d | 2018-04-23 | 2018-05-18 |  | 156d |  |
| 217 | 1.5.5.2 | **Control de Calidad** |  | 30d | 2018-04-23 | 2018-06-04 |  | 145d |  |
| 218 | 1.5.5.2.1 | Restricción a la Emisión de CPE |  | 30d | 2018-04-23 | 2018-06-04 |  | 145d |  |
| 219 | 1.5.5.3 | **Implantación** |  | 1d | 2018-04-23 | 2018-04-23 |  | 174d |  |
| 220 | 1.5.5.3.1 | Implementar Restricción a la Emisión de CPE |  | 1d | 2018-04-23 | 2018-04-23 |  | 174d |  |
| 221 | 1.5.5.4 | Entregable: Acta de Aprobación de Restricción a la Emisión de CPE | milestone | 0d | 2018-04-23 | 2018-04-23 |  | 175d |  |
| 222 | 1.5.6 | **Comprobante de contingencia al CPE** |  | 72d | 2018-04-23 | 2018-08-02 |  | 103d |  |
| 223 | 1.5.6.1 | **Desarrollo** |  | 57d | 2018-04-23 | 2018-07-12 |  | 103d |  |
| 224 | 1.5.6.1.1 | Formulario 816-Solicitud de autorización-Contingencia CPE ( RF1/RF2) |  | 22d | 2018-04-23 | 2018-05-23 |  | 133d | 0d |
| 225 | 1.5.6.1.2 | Proceso de Carga de Obligados- Contingencia CPE ( RF12) |  | 22d | 2018-04-23 | 2018-05-23 |  | 133d | 0d |
| 226 | 1.5.6.1.3 | Factura BVE Portal - Contingencia CPE ( RF3/RF7/RF8) |  | 39d | 2018-04-23 | 2018-06-15 |  | 106d | 0d |
| 227 | 1.5.6.1.4 | Receptor Contingencia CPE ( RF5/RF6) |  | 39d | 2018-04-23 | 2018-06-15 |  | 106d | 0d |
| 228 | 1.5.6.1.5 | Consultas SOL /Intranet - Contingencia CPE ( RF9/RF10/RF11) |  | 57d | 2018-04-23 | 2018-07-12 |  | 103d | 0d |
| 229 | 1.5.6.2 | **Control de Calidad** |  | 49d | 2018-05-24 | 2018-08-01 |  | 104d |  |
| 230 | 1.5.6.2.1 | Formulario 816-Solicitud de autorización-Contingencia CPE ( RF1/RF2) |  | 20d | 2018-05-24 | 2018-06-20 | 224 | 133d |  |
| 231 | 1.5.6.2.2 | Proceso de Carga de Obligados- Contingencia CPE ( RF12) |  | 20d | 2018-05-24 | 2018-06-20 | 225 | 133d |  |
| 232 | 1.5.6.2.3 | Factura BVE Portal - Contingencia CPE ( RF3/RF7/RF8) |  | 30d | 2018-06-18 | 2018-07-30 | 226 | 106d |  |
| 233 | 1.5.6.2.4 | Receptor Contingencia CPE ( RF5/RF6) |  | 30d | 2018-06-18 | 2018-07-30 | 227 | 106d |  |
| 234 | 1.5.6.2.5 | Consultas SOL /Intranet - Contingencia CPE ( RF9/RF10/RF11) |  | 14d | 2018-07-13 | 2018-08-01 | 228 | 103d | 0d |

| ID | WBS | Task | Type | Duration | Start | Finish | Predecessors | Total slack | Free slack | Constraint |
| --- | --- | --- | --- | --- | --- | --- | --- | --- | --- | --- |
| 235 | 1.5.6.3 | **Implantación** |  | 1d | 2018-08-02 | 2018-08-02 |  | 103d |  |  |
| 236 | 1.5.6.3.1 | Implementar Comprobante de contingencia al CPE |  | 1d | 2018-08-02 | 2018-08-02 | 234 | 103d | 0d |  |
| 237 | 1.5.6.4 | Entregable: Acta de Aprobación de Comprobante de contingencia al CPE | milestone | 0d | 2018-08-02 | 2018-08-02 | 236 | 103d |  |  |
| 238 | 1.6 | **Control del registro de compras y ventas electrónico (RCVE)** |  | 83d | 2018-04-23 | 2018-08-17 |  | 92d |  |  |
| 239 | 1.6.1 | **Nuevo Padrón de omisos a la presentación del RCVE** |  | 77d | 2018-05-02 | 2018-08-17 |  | 92d |  |  |
| 240 | 1.6.1.1 | **Iteración 1** |  | 25d | 2018-05-28 | 2018-07-02 |  | 126d |  |  |
| 241 | 1.6.1.1.1 | Preparación de datos para Padrón de Obligados y Omisos a LE |  | 15d | 2018-05-28 | 2018-06-15 |  | 126d | 0d | start no earlier than 2018-05-28 |
| 242 | 1.6.1.1.2 | Elaboración del Padrón de Obligados y Omisos a LE |  | 8d | 2018-06-18 | 2018-06-27 | 241 | 126d | 0d |  |
| 243 | 1.6.1.1.3 | Carga de archivos de Padrón de Obligados y Omisos a LE en Base de Datos |  | 2d | 2018-06-28 | 2018-07-02 | 242 | 126d | 0d |  |
| 244 | 1.6.1.1.4 | Entregable : Padrón de Obligados y Omisos a LE | milestone | 0d | 2018-07-02 | 2018-07-02 | 243 | 126d |  |  |
| 245 | 1.6.1.2 | **Iteración 2** |  | 77d | 2018-05-02 | 2018-08-17 |  | 92d |  |  |
| 246 | 1.6.1.2.1 | **Análisis** |  | 5d | 2018-05-02 | 2018-05-08 |  | 92d |  |  |
| 247 | 1.6.1.2.1.1 | Revisión del MPN |  | 2d | 2018-05-02 | 2018-05-03 |  | 92d | 0d | start no earlier than 2018-05-02 |
| 248 | 1.6.1.2.1.2 | Elaboración del F2-AR1 |  | 3d | 2018-05-04 | 2018-05-08 | 247 | 92d | 0d |  |
| 249 | 1.6.1.2.2 | **Desarrollo** |  | 38d | 2018-05-09 | 2018-07-02 |  | 92d |  |  |
| 250 | 1.6.1.2.2.1 | Determinación de omisos y obligados |  | 38d | 2018-05-09 | 2018-07-02 | 248 | 93d | 0d |  |
| 251 | 1.6.1.2.2.2 | Consulta de obligados-Reporte del mes siguiente-Consulta de omisos |  | 38d | 2018-05-09 | 2018-07-02 | 248 | 93d | 0d |  |
| 252 | 1.6.1.2.2.3 | Opción libre consulta de obligados |  | 38d | 2018-05-09 | 2018-07-02 | 248 | 92d | 0d |  |
| 253 | 1.6.1.2.3 | **Control de Calidad** |  | 33d | 2018-07-03 | 2018-08-16 |  | 92d |  |  |
| 254 | 1.6.1.2.3.1 | Determinación de omisos y obligados |  | 33d | 2018-07-03 | 2018-08-16 | 250 | 93d |  |  |
| 255 | 1.6.1.2.3.2 | Consulta de obligados-Reporte del mes siguiente-Consulta de omisos |  | 33d | 2018-07-03 | 2018-08-16 | 251 | 93d |  |  |
| 256 | 1.6.1.2.3.3 | Opción libre consulta de obligados |  | 33d | 2018-07-03 | 2018-08-16 | 252 | 92d | 0d |  |
| 257 | 1.6.1.2.4 | **Implantación** |  | 1d | 2018-08-17 | 2018-08-17 |  | 92d |  |  |
| 258 | 1.6.1.2.4.1 | Implementar Padrón de omisos a la presentación del RCVE |  | 1d | 2018-08-17 | 2018-08-17 | 256 | 92d | 0d |  |
| 259 | 1.6.1.2.5 | Entregable: Acta de Aprobación de Padrón de omisos a la presentación del RCVE | milestone | 0d | 2018-08-17 | 2018-08-17 | 258 | 92d |  |  |

| ID | WBS | Task | Type | Duration | Start | Finish | Predecessors | Total slack | Free slack |
| --- | --- | --- | --- | --- | --- | --- | --- | --- | --- |
| 260 | 1.6.2 | **Determinación y control de Omisos a Libros automatizada** |  | 5d | 2018-04-23 | 2018-04-27 |  | 170d |  |
| 261 | 1.6.2.1 | **Análisis** |  | 2d | 2018-04-23 | 2018-04-24 |  | 170d |  |
| 262 | 1.6.2.1.1 | Revisión del MPN |  | 1d | 2018-04-23 | 2018-04-23 |  | 170d | 0d |
| 263 | 1.6.2.1.2 | Elaboración del F2-AR1 |  | 1d | 2018-04-24 | 2018-04-24 | 262 | 170d | 0d |
| 264 | 1.6.2.2 | **Desarrollo** |  | 1d | 2018-04-25 | 2018-04-25 |  | 170d |  |
| 265 | 1.6.2.2.1 | Desarrollar Control de omisos con padrón de RCVE |  | 1d | 2018-04-25 | 2018-04-25 | 263 | 170d | 0d |
| 266 | 1.6.2.3 | **Control de Calidad** |  | 1d | 2018-04-26 | 2018-04-26 |  | 170d |  |
| 267 | 1.6.2.3.1 | CC Control de omisos con padrón de RCVE |  | 1d | 2018-04-26 | 2018-04-26 | 265 | 170d | 0d |
| 268 | 1.6.2.4 | **Implantación** |  | 1d | 2018-04-27 | 2018-04-27 |  | 170d |  |
| 269 | 1.6.2.4.1 | Implementar Control de omisos con padrón de RCVE |  | 1d | 2018-04-27 | 2018-04-27 | 267 | 170d | 0d |
| 270 | 1.6.2.5 | Entregable: Acta de Aprobación de Control de omisos con padrón de RCVE | milestone | 0d | 2018-04-27 | 2018-04-27 | 269 | 170d |  |
| 271 | 1.7 | **Control de Declaración IGV - Renta Mensual** |  | 93d | 2018-04-23 | 2018-09-03 |  | 82d |  |
| 272 | 1.7.1 | **Reemplazo de PDT por Declara Fácil con propuesta de DJ** |  | 93d | 2018-04-23 | 2018-09-03 |  | 82d |  |
| 273 | 1.7.1.1 | **Análisis** |  | 2d | 2018-04-23 | 2018-04-24 |  | 82d |  |
| 274 | 1.7.1.1.1 | Revisión del MPN |  | 1d | 2018-04-23 | 2018-04-23 |  | 82d | 0d |
| 275 | 1.7.1.1.2 | Elaboración del F2-AR1 |  | 1d | 2018-04-24 | 2018-04-24 | 274 | 82d | 0d |
| 276 | 1.7.1.2 | **Desarrollo** |  | 70d | 2018-04-25 | 2018-08-02 |  | 82d |  |
| 277 | 1.7.1.2.1 | Reemplazo de PDT por Declara Fácil con propuesta de DJ |  | 70d | 2018-04-25 | 2018-08-02 | 275 | 82d | 0d |
| 278 | 1.7.1.3 | **Control de Calidad** |  | 21d | 2018-08-03 | 2018-09-03 |  | 82d |  |
| 279 | 1.7.1.3.1 | Control de Calidad a reemplazo de PDT por Declara Fácil con propuesta de DJ |  | 21d | 2018-08-03 | 2018-09-03 | 277 | 82d | 0d |
| 280 | 1.7.1.4 | **Implantación** |  | 0d | 2018-09-03 | 2018-09-03 |  | 82d |  |
| 281 | 1.7.1.4.1 | Reemplazo de PDT por Declara Fácil con propuesta de DJ | milestone | 0d | 2018-09-03 | 2018-09-03 | 279 | 82d |  |
| 282 | 1.7.2 | **Integración del control de inconsistencias del RCVE y la propuesta de la Dec. IGV Renta Mensual** |  | 5d | 2018-04-23 | 2018-04-27 |  | 170d |  |
| 283 | 1.7.2.1 | **Análisis** |  | 2d | 2018-04-23 | 2018-04-24 |  | 170d |  |
| 284 | 1.7.2.1.1 | Revisión del MPN |  | 1d | 2018-04-23 | 2018-04-23 |  | 170d | 0d |
| 285 | 1.7.2.1.2 | Elaboración del F2-AR1 |  | 1d | 2018-04-24 | 2018-04-24 | 284 | 170d | 0d |

| ID | WBS | Task | Type | Duration | Start | Finish | Predecessors | Total slack | Free slack |
| --- | --- | --- | --- | --- | --- | --- | --- | --- | --- |
| 286 | 1.7.2.2 | **Desarrollo** |  | 1d | 2018-04-25 | 2018-04-25 |  | 170d |  |
| 287 | 1.7.2.2.1 | Integración del control de inconsistencias del RCVE y la propuesta de la Dec. IGV Renta Mensual |  | 1d | 2018-04-25 | 2018-04-25 | 285 | 170d | 0d |
| 288 | 1.7.2.3 | **Control de Calidad** |  | 1d | 2018-04-26 | 2018-04-26 |  | 170d |  |
| 289 | 1.7.2.3.1 | Integración del control de inconsistencias del RCVE y la propuesta de la Dec. IGV Renta Mensual |  | 1d | 2018-04-26 | 2018-04-26 | 287 | 170d | 0d |
| 290 | 1.7.2.4 | **Implantación** |  | 1d | 2018-04-27 | 2018-04-27 |  | 170d |  |
| 291 | 1.7.2.4.1 | Integración del control de inconsistencias del RCVE y la propuesta de la Dec. IGV Renta Mensual |  | 1d | 2018-04-27 | 2018-04-27 | 289 | 170d |  |
| 292 | 1.7.3 | **Determinación de omisos a la DJ del IGV Renta Mensual** |  | 28d | 2018-04-23 | 2018-05-31 |  | 147d |  |
| 293 | 1.7.3.1 | **Análisis** |  | 2d | 2018-04-23 | 2018-04-24 |  | 147d |  |
| 294 | 1.7.3.1.1 | Revisión del MPN |  | 1d | 2018-04-23 | 2018-04-23 |  | 147d | 0d |
| 295 | 1.7.3.1.2 | Elaboración del F2-AR1 |  | 1d | 2018-04-24 | 2018-04-24 | 294 | 147d | 0d |
| 296 | 1.7.3.2 | **Desarrollo** |  | 15d | 2018-04-25 | 2018-05-16 |  | 147d |  |
| 297 | 1.7.3.2.1 | Determinación de omisos a la DJ del IGV Renta Mensual |  | 15d | 2018-04-25 | 2018-05-16 | 295 | 147d | 0d |
| 298 | 1.7.3.3 | **Control de Calidad** |  | 10d | 2018-05-17 | 2018-05-30 |  | 147d |  |
| 299 | 1.7.3.3.1 | Determinación de omisos a la DJ del IGV Renta Mensual |  | 10d | 2018-05-17 | 2018-05-30 | 297 | 147d | 0d |
| 300 | 1.7.3.4 | **Implantación** |  | 1d | 2018-05-31 | 2018-05-31 |  | 147d |  |
| 301 | 1.7.3.4.1 | Determinación de omisos a la DJ del IGV Renta Mensual |  | 1d | 2018-05-31 | 2018-05-31 | 299 | 147d | 0d |
| 302 | 1.7.3.5 | Entregable: Determinación de omisos a la DJ del IGV renta Mensual Implementado | milestone | 0d | 2018-05-31 | 2018-05-31 | 301 | 147d |  |
| 303 | 1.7.4 | **Determinación de omisos a la DDJJ IGV Renta Mensual - Comprobante Único** |  | 5d | 2018-04-23 | 2018-04-27 |  | 170d |  |
| 304 | 1.7.4.1 | **Análisis** |  | 2d | 2018-04-23 | 2018-04-24 |  | 170d |  |
| 305 | 1.7.4.1.1 | Revisión del MPN |  | 1d | 2018-04-23 | 2018-04-23 |  | 170d | 0d |
| 306 | 1.7.4.1.2 | Elaboración del F2-AR1 |  | 1d | 2018-04-24 | 2018-04-24 | 305 | 170d | 0d |
| 307 | 1.7.4.2 | **Desarrollo** |  | 1d | 2018-04-25 | 2018-04-25 |  | 170d |  |
| 308 | 1.7.4.2.1 | Determinación de omisos a la DDJJ IGV Renta Mensual - Comprobante Único |  | 1d | 2018-04-25 | 2018-04-25 | 306 | 170d | 0d |
| 309 | 1.7.4.3 | **Control de Calidad** |  | 1d | 2018-04-26 | 2018-04-26 |  | 170d |  |
| 310 | 1.7.4.3.1 | Determinación de omisos a la DDJJ IGV Renta Mensual - Comprobante Único |  | 1d | 2018-04-26 | 2018-04-26 | 308 | 170d | 0d |

| ID | WBS | Task | Type | Duration | Start | Finish | Predecessors | Total slack | Free slack |
| --- | --- | --- | --- | --- | --- | --- | --- | --- | --- |
| 311 | 1.7.4.4 | **Implantación** |  | 1d | 2018-04-27 | 2018-04-27 |  | 170d |  |
| 312 | 1.7.4.4.1 | Determinación de omisos a la DDJJ IGV Renta Mensual - Comprobante Único |  | 1d | 2018-04-27 | 2018-04-27 | 310 | 170d | 0d |
| 313 | 1.7.4.5 | Entregable: Determinación de omisos a la DDJJ IGV Renta Mensual - Comprobante Único Implementado | milestone | 0d | 2018-04-27 | 2018-04-27 | 312 | 170d |  |
| 314 | 1.8 | **Fiscalización: Gestión Masiva de Control del IGV** |  | 5d | 2018-04-23 | 2018-04-27 |  | 170d |  |
| 315 | 1.8.1 | **Perfil para seleccionar Accion masiva** |  | 5d | 2018-04-23 | 2018-04-27 |  | 170d |  |
| 316 | 1.8.1.1 | **Análisis** |  | 2d | 2018-04-23 | 2018-04-24 |  | 170d |  |
| 317 | 1.8.1.1.1 | Revisión del MPN |  | 1d | 2018-04-23 | 2018-04-23 |  | 170d | 0d |
| 318 | 1.8.1.1.2 | Elaboración del F2-AR1 |  | 1d | 2018-04-24 | 2018-04-24 | 317 | 170d | 0d |
| 319 | 1.8.1.2 | **Desarrollo** |  | 1d | 2018-04-25 | 2018-04-25 |  | 170d |  |
| 320 | 1.8.1.2.1 | Perfil para seleccionar Accion masiva |  | 1d | 2018-04-25 | 2018-04-25 | 318 | 170d | 0d |
| 321 | 1.8.1.3 | **Control de Calidad** |  | 1d | 2018-04-26 | 2018-04-26 |  | 170d |  |
| 322 | 1.8.1.3.1 | Perfil para seleccionar Accion masiva |  | 1d | 2018-04-26 | 2018-04-26 | 320 | 170d | 0d |
| 323 | 1.8.1.4 | **Implantación** |  | 1d | 2018-04-27 | 2018-04-27 |  | 170d |  |
| 324 | 1.8.1.4.1 | Perfil para seleccionar Accion masiva |  | 1d | 2018-04-27 | 2018-04-27 | 322 | 170d | 0d |
| 325 | 1.8.1.5 | Entregable: Perfil para seleccionar Accion masiva Implementado | milestone | 0d | 2018-04-27 | 2018-04-27 | 324 | 170d |  |
| 326 | 1.8.2 | **Nuevo CCV que integra el Gema WEB** |  | 5d | 2018-04-23 | 2018-04-27 |  | 170d |  |
| 327 | 1.8.2.1 | **Análisis** |  | 2d | 2018-04-23 | 2018-04-24 |  | 170d |  |
| 328 | 1.8.2.1.1 | Revisión del MPN |  | 1d | 2018-04-23 | 2018-04-23 |  | 170d | 0d |
| 329 | 1.8.2.1.2 | Elaboración del F2-AR1 |  | 1d | 2018-04-24 | 2018-04-24 | 328 | 170d | 0d |
| 330 | 1.8.2.2 | **Desarrollo** |  | 1d | 2018-04-25 | 2018-04-25 |  | 170d |  |
| 331 | 1.8.2.2.1 | Nuevo CCV que integra el Gema WEB |  | 1d | 2018-04-25 | 2018-04-25 | 329 | 170d | 0d |
| 332 | 1.8.2.3 | **Control de Calidad** |  | 1d | 2018-04-26 | 2018-04-26 |  | 170d |  |
| 333 | 1.8.2.3.1 | Nuevo CCV que integra el Gema WEB |  | 1d | 2018-04-26 | 2018-04-26 | 331 | 170d | 0d |
| 334 | 1.8.2.4 | **Implantación** |  | 1d | 2018-04-27 | 2018-04-27 |  | 170d |  |
| 335 | 1.8.2.4.1 | Nuevo CCV que integra el Gema WEB |  | 1d | 2018-04-27 | 2018-04-27 | 333 | 170d | 0d |
| 336 | 1.8.2.5 | Entregable: Nuevo CCV que integra el Gema WEB Implementado | milestone | 0d | 2018-04-27 | 2018-04-27 | 335 | 170d |  |

| ID | WBS | Task | Type | Duration | Start | Finish | Predecessors | Total slack | Free slack |
| --- | --- | --- | --- | --- | --- | --- | --- | --- | --- |
| 337 | 1.8.3 | **SINE para las carta inductivas y esquelas** |  | 5d | 2018-04-23 | 2018-04-27 |  | 170d |  |
| 338 | 1.8.3.1 | **Análisis** |  | 2d | 2018-04-23 | 2018-04-24 |  | 170d |  |
| 339 | 1.8.3.1.1 | Revisión del MPN |  | 1d | 2018-04-23 | 2018-04-23 |  | 170d | 0d |
| 340 | 1.8.3.1.2 | Elaboración del F2-AR1 |  | 1d | 2018-04-24 | 2018-04-24 | 339 | 170d | 0d |
| 341 | 1.8.3.2 | **Desarrollo** |  | 1d | 2018-04-25 | 2018-04-25 |  | 170d |  |
| 342 | 1.8.3.2.1 | SINE para las carta inductivas y esquelas |  | 1d | 2018-04-25 | 2018-04-25 | 340 | 170d | 0d |
| 343 | 1.8.3.3 | **Control de Calidad** |  | 1d | 2018-04-26 | 2018-04-26 |  | 170d |  |
| 344 | 1.8.3.3.1 | SINE para las carta inductivas y esquelas |  | 1d | 2018-04-26 | 2018-04-26 | 342 | 170d | 0d |
| 345 | 1.8.3.4 | **Implantación** |  | 1d | 2018-04-27 | 2018-04-27 |  | 170d |  |
| 346 | 1.8.3.4.1 | SINE para las carta inductivas y esquelas |  | 1d | 2018-04-27 | 2018-04-27 | 344 | 170d | 0d |
| 347 | 1.8.3.5 | Entregable: SINE para las carta inductivas y esquelas Implementado | milestone | 0d | 2018-04-27 | 2018-04-27 | 346 | 170d |  |
| 348 | 1.8.4 | **SIEV para la gestión inductiva** |  | 5d | 2018-04-23 | 2018-04-27 |  | 170d |  |
| 349 | 1.8.4.1 | **Análisis** |  | 2d | 2018-04-23 | 2018-04-24 |  | 170d |  |
| 350 | 1.8.4.1.1 | Revisión del MPN |  | 1d | 2018-04-23 | 2018-04-23 |  | 170d | 0d |
| 351 | 1.8.4.1.2 | Elaboración del F2-AR1 |  | 1d | 2018-04-24 | 2018-04-24 | 350 | 170d | 0d |
| 352 | 1.8.4.2 | **Desarrollo** |  | 1d | 2018-04-25 | 2018-04-25 |  | 170d |  |
| 353 | 1.8.4.2.1 | SIEV para la gestión inductiva |  | 1d | 2018-04-25 | 2018-04-25 | 351 | 170d | 0d |
| 354 | 1.8.4.3 | **Control de Calidad** |  | 1d | 2018-04-26 | 2018-04-26 |  | 170d |  |
| 355 | 1.8.4.3.1 | SIEV para la gestión inductiva |  | 1d | 2018-04-26 | 2018-04-26 | 353 | 170d | 0d |
| 356 | 1.8.4.4 | **Implantación** |  | 1d | 2018-04-27 | 2018-04-27 |  | 170d |  |
| 357 | 1.8.4.4.1 | SIEV para la gestión inductiva |  | 1d | 2018-04-27 | 2018-04-27 | 355 | 170d | 0d |
| 358 | 1.8.4.5 | Entregable: SIEV para la gestión inductiva Implementado | milestone | 0d | 2018-04-27 | 2018-04-27 | 357 | 170d |  |
| 359 | 1.8.5 | **Utilización del CRM como soporte a las campañas de gestión inductiva** |  | 5d | 2018-04-23 | 2018-04-27 |  | 170d |  |
| 360 | 1.8.5.1 | **Análisis** |  | 2d | 2018-04-23 | 2018-04-24 |  | 170d |  |
| 361 | 1.8.5.1.1 | Revisión del MPN |  | 1d | 2018-04-23 | 2018-04-23 |  | 170d | 0d |
| 362 | 1.8.5.1.2 | Elaboración del F2-AR1 |  | 1d | 2018-04-24 | 2018-04-24 | 361 | 170d | 0d |

| ID | WBS | Task | Type | Duration | Start | Finish | Predecessors | Total slack | Free slack |
| --- | --- | --- | --- | --- | --- | --- | --- | --- | --- |
| 363 | 1.8.5.2 | **Desarrollo** |  | 1d | 2018-04-25 | 2018-04-25 |  | 170d |  |
| 364 | 1.8.5.2.1 | CRM como soporte a las campañas de gestión inductiva |  | 1d | 2018-04-25 | 2018-04-25 | 362 | 170d | 0d |
| 365 | 1.8.5.3 | **Control de Calidad** |  | 1d | 2018-04-26 | 2018-04-26 |  | 170d |  |
| 366 | 1.8.5.3.1 | CRM como soporte a las campañas de gestión inductiva |  | 1d | 2018-04-26 | 2018-04-26 | 364 | 170d | 0d |
| 367 | 1.8.5.4 | **Implantación** |  | 1d | 2018-04-27 | 2018-04-27 |  | 170d |  |
| 368 | 1.8.5.4.1 | CRM como soporte a las campañas de gestión inductiva |  | 1d | 2018-04-27 | 2018-04-27 | 366 | 170d | 0d |
| 369 | 1.8.5.5 | Entregable: CRM como soporte a las campañas de gestión inductiva-Implementado | milestone | 0d | 2018-04-27 | 2018-04-27 | 368 | 170d |  |
| 370 | 1.9 | **Fiscalización Parcial Electrónica del IGV** |  | 49d | 2018-04-23 | 2018-07-02 |  | 126d |  |
| 371 | 1.9.1 | **Piloto de fiscalización parcial electrónica de comprobantes duplicados** |  | 49d | 2018-04-23 | 2018-07-02 |  | 126d |  |
| 372 | 1.9.1.1 | **Análisis** |  | 2d | 2018-04-23 | 2018-04-24 |  | 126d |  |
| 373 | 1.9.1.1.1 | Revisión del MPN |  | 1d | 2018-04-23 | 2018-04-23 |  | 126d | 0d |
| 374 | 1.9.1.1.2 | Elaboración del F2-AR1 |  | 1d | 2018-04-24 | 2018-04-24 | 373 | 126d | 0d |
| 375 | 1.9.1.2 | **Desarrollo** |  | 26d | 2018-04-25 | 2018-05-31 |  | 126d |  |
| 376 | 1.9.1.2.1 | Piloto de fiscalización parcial electrónica de comprobantes duplicados |  | 26d | 2018-04-25 | 2018-05-31 | 374 | 126d | 0d |
| 377 | 1.9.1.3 | **Control de Calidad** |  | 20d | 2018-06-01 | 2018-06-28 |  | 126d |  |
| 378 | 1.9.1.3.1 | Piloto de fiscalización parcial electrónica de comprobantes duplicados |  | 20d | 2018-06-01 | 2018-06-28 | 376 | 126d | 0d |
| 379 | 1.9.1.4 | **Implantación** |  | 1d | 2018-07-02 | 2018-07-02 |  | 126d |  |
| 380 | 1.9.1.4.1 | Piloto de fiscalización parcial electrónica de comprobantes duplicados |  | 1d | 2018-07-02 | 2018-07-02 | 378 | 126d | 0d |
| 381 | 1.9.1.5 | Entregable: Piloto de fiscalización parcial electrónica de comprobantes duplicados- Implementado | milestone | 0d | 2018-07-02 | 2018-07-02 | 380 | 126d |  |
| 382 | 1.9.2 | **Fiscalización parcial electrónica de diferencias entre RCVE y DJ de IGV** |  | 5d | 2018-04-23 | 2018-04-27 |  | 170d |  |
| 383 | 1.9.2.1 | **Análisis** |  | 2d | 2018-04-23 | 2018-04-24 |  | 170d |  |
| 384 | 1.9.2.1.1 | Revisión del MPN |  | 1d | 2018-04-23 | 2018-04-23 |  | 170d | 0d |
| 385 | 1.9.2.1.2 | Elaboración del F2-AR1 |  | 1d | 2018-04-24 | 2018-04-24 | 384 | 170d | 0d |
| 386 | 1.9.2.2 | **Desarrollo** |  | 1d | 2018-04-25 | 2018-04-25 |  | 170d |  |
| 387 | 1.9.2.2.1 | Fiscalización parcial electrónica de diferencias entre RCVE y DJ de IGV |  | 1d | 2018-04-25 | 2018-04-25 | 385 | 170d | 0d |

| ID | WBS | Task | Type | Duration | Start | Finish | Predecessors | Total slack | Free slack |
| --- | --- | --- | --- | --- | --- | --- | --- | --- | --- |
| 388 | 1.9.2.3 | **Control de Calidad** |  | 1d | 2018-04-26 | 2018-04-26 |  | 170d |  |
| 389 | 1.9.2.3.1 | Fiscalización parcial electrónica de diferencias entre RCVE y DJ de IGV |  | 1d | 2018-04-26 | 2018-04-26 | 387 | 170d | 0d |
| 390 | 1.9.2.4 | **Implantación** |  | 1d | 2018-04-27 | 2018-04-27 |  | 170d |  |
| 391 | 1.9.2.4.1 | Fiscalización parcial electrónica de diferencias entre RCVE y DJ de IGV |  | 1d | 2018-04-27 | 2018-04-27 | 389 | 170d | 0d |
| 392 | 1.9.2.5 | Entregable: Fiscalización parcial electrónica de diferencias entre RCVE y DJ de IGV- Implementado | milestone | 0d | 2018-04-27 | 2018-04-27 | 391 | 170d |  |
