# P_SNATI058 Cronograma al 20180709

Schedule from MS Project, 2018-06-25 to 2018-11-09, costs in S/..

## Calendars

- Estándar: Mon-Fri 09:00-13:00, 15:00-19:00; Sat-Sun off.

## Resources

| Resource |
| --- |
| SUNAT - Desarrollo |
| SUNAT - Calidad |
| SUNAT - SOLERA? |
| ¿SUNAT - SOLERA? |
| SUNAT - Cobranza |
| SUNAT - RUC |
| SUNAT - Recaudación |
| SOLERA |
| PENDIENTE |
| SUNAT - W. Galindez |
| SUNAT - E. Yataco |
| SUNAT - K. Aviles |
| SUNAT |
| SUNA |
| SUNAT - V. Mendieta |
| SUNAT - A. Reyes |
| SUNAT - P. Espinoza |
| DAIA |
| DIA |
| DGIT |
| JYL |
| AQY |
| NMC |
| JAN |

## Schedule

| ID | WBS | Task | Duration | Start | Finish | Predecessors | Baseline start | Baseline finish | Baseline duration | Total slack | Free slack | Constraint | Resources | Work | Cost | Baseline cost |
| --- | --- | --- | --- | --- | --- | --- | --- | --- | --- | --- | --- | --- | --- | --- | --- | --- |
| 1 | 1 | **APP Contigo SUNAT** | 100d | 2018-06-25 | 2018-11-09 |  |  |  |  | 0d |  |  |  | 3972h | 32.5 |  |
| 2 | 1.1 | **Gestión del Proyecto** | 65d | 2018-07-02 | 2018-09-28 |  | 2018-04-23 | 2018-12-31 | 175d | 30d |  |  |  | 260h | 32.5 | 43 |
| 3 | 1.1.1 | **Iniciación** | 4d | 2018-07-02 | 2018-07-05 |  | 2018-04-23 | 2018-04-26 | 4d | 91d |  |  |  | 32h | 4 | 4 |
| 4 | 1.1.1.1 | **Project Charter** | 2d | 2018-07-02 | 2018-07-03 |  | 2018-04-23 | 2018-04-24 | 2d | 91d |  |  |  | 16h | 2 | 2 |
| 5 | 1.1.1.1.1 | Elaborar el Project Charter | 1d | 2018-07-02 | 2018-07-02 |  | 2018-04-23 | 2018-04-23 | 1d | 91d | 0d |  | JAN | 8h | 1 | 1 |
| 6 | 1.1.1.1.2 | Revisar el Project Charter | 1d | 2018-07-03 | 2018-07-03 | 5 | 2018-04-24 | 2018-04-24 | 1d | 91d | 0d |  | JAN | 8h | 1 | 1 |
| 7 | 1.1.1.2 | **Scope Statement** | 2d | 2018-07-04 | 2018-07-05 |  | 2018-04-25 | 2018-04-26 | 2d | 91d |  |  |  | 16h | 2 | 2 |
| 8 | 1.1.1.2.1 | Elaborar el Scope Statement | 1d | 2018-07-04 | 2018-07-04 | 6 | 2018-04-25 | 2018-04-25 | 1d | 91d | 0d |  | JAN | 8h | 1 | 1 |
| 9 | 1.1.1.2.2 | Revisar el Scope Statement | 1d | 2018-07-05 | 2018-07-05 | 8 | 2018-04-26 | 2018-04-26 | 1d | 91d |  |  | JAN | 8h | 1 | 1 |
| 10 | 1.1.2 | **Plan de Proyecto** | 45.5d | 2018-07-26 | 2018-09-27 |  | 2018-04-27 | 2018-07-19 | 57.5d | 31.5d |  |  |  | 60h | 7.5 | 8 |
| 11 | 1.1.2.1 | Elaborar el Plan de Proyecto | 3d | 2018-07-26 | 2018-07-30 |  | 2018-04-27 | 2018-05-02 | 3d | 74d |  | start no earlier than 2018-07-26 | JAN | 24h | 3 | 3 |
| 12 | 1.1.2.2 | Actualizar documentos del Proyecto 1 | 0.5d | 2018-08-02 | 2018-08-02 |  | 2018-05-17 | 2018-05-17 | 0.5d | 71.5d |  | start no earlier than 2018-08-02 | JAN | 4h | 0.5 | 0.5 |
| 13 | 1.1.2.3 | Actualizar documentos del Proyecto 2 | 0.5d | 2018-08-09 | 2018-08-09 |  | 2018-05-24 | 2018-05-24 | 0.5d | 66.5d |  | start no earlier than 2018-08-09 | JAN | 4h | 0.5 | 0.5 |
| 14 | 1.1.2.4 | Actualizar documentos del Proyecto 3 | 0.5d | 2018-08-16 | 2018-08-16 |  | 2018-05-31 | 2018-05-31 | 0.5d | 61.5d |  | start no earlier than 2018-08-16 | JAN | 4h | 0.5 | 0.5 |
| 15 | 1.1.2.5 | Actualizar documentos del Proyecto 4 | 0.5d | 2018-08-23 | 2018-08-23 |  | 2018-06-07 | 2018-06-07 | 0.5d | 56.5d |  | start no earlier than 2018-08-23 | JAN | 4h | 0.5 | 0.5 |
| 16 | 1.1.2.6 | Actualizar documentos del Proyecto 5 | 0.5d | 2018-08-30 | 2018-08-30 |  | 2018-06-14 | 2018-06-14 | 0.5d | 51.5d |  | start no earlier than 2018-08-30 | JAN | 4h | 0.5 | 0.5 |
| 17 | 1.1.2.7 | Actualizar documentos del Proyecto 6 | 0.5d | 2018-09-06 | 2018-09-06 |  | 2018-06-21 | 2018-06-21 | 0.5d | 46.5d |  | start no earlier than 2018-09-06 | JAN | 4h | 0.5 | 0.5 |
| 18 | 1.1.2.8 | Actualizar documentos del Proyecto 7 | 0.5d | 2018-09-13 | 2018-09-13 |  | 2018-06-28 | 2018-06-28 | 0.5d | 41.5d |  | start no earlier than 2018-09-13 | JAN | 4h | 0.5 | 0.5 |
| 19 | 1.1.2.9 | Actualizar documentos del Proyecto 8 | 0.5d | 2018-09-20 | 2018-09-20 |  | 2018-07-05 | 2018-07-05 | 0.5d | 36.5d |  | start no earlier than 2018-09-20 | JAN | 4h | 0.5 | 0.5 |
| 20 | 1.1.2.10 | Actualizar documentos del Proyecto 9 | 0.5d | 2018-09-27 | 2018-09-27 |  | 2018-07-12 | 2018-07-12 | 0.5d | 31.5d |  | start no earlier than 2018-09-27 | JAN | 4h | 0.5 | 0.5 |
| 21 | 1.1.3 | **Informes de Estado del Proyecto** | 46d | 2018-07-27 | 2018-09-28 |  | 2018-05-18 | 2018-08-28 | 72d | 30d |  |  |  | 80h | 10 | 15 |
| 22 | 1.1.3.1 | Informes de Estado del Proyecto 1 | 1d | 2018-07-27 | 2018-07-27 |  | 2018-05-18 | 2018-05-18 | 1d | 75d |  | start no earlier than 2018-07-27 | JAN | 8h | 1 | 1 |
| 23 | 1.1.3.2 | Informes de Estado del Proyecto 2 | 1d | 2018-08-03 | 2018-08-03 |  | 2018-05-25 | 2018-05-25 | 1d | 70d |  | start no earlier than 2018-08-03 | JAN | 8h | 1 | 1 |
| 24 | 1.1.3.3 | Informes de Estado del Proyecto 3 | 1d | 2018-08-10 | 2018-08-10 |  | 2018-06-01 | 2018-06-01 | 1d | 65d |  | start no earlier than 2018-08-10 | JAN | 8h | 1 | 1 |
| 25 | 1.1.3.4 | Informes de Estado del Proyecto 4 | 1d | 2018-08-17 | 2018-08-17 |  | 2018-06-08 | 2018-06-08 | 1d | 60d |  | start no earlier than 2018-08-17 | JAN | 8h | 1 | 1 |
| 26 | 1.1.3.5 | Informes de Estado del Proyecto 5 | 1d | 2018-08-24 | 2018-08-24 |  | 2018-06-15 | 2018-06-15 | 1d | 55d |  | start no earlier than 2018-08-24 | JAN | 8h | 1 | 1 |
| 27 | 1.1.3.6 | Informes de Estado del Proyecto 6 | 1d | 2018-08-31 | 2018-08-31 |  | 2018-06-22 | 2018-06-22 | 1d | 50d |  | start no earlier than 2018-08-31 | JAN | 8h | 1 | 1 |
| 28 | 1.1.3.7 | Informes de Estado del Proyecto 7 | 1d | 2018-09-07 | 2018-09-07 |  | 2018-07-02 | 2018-07-02 | 1d | 45d |  | start no earlier than 2018-09-07 | JAN | 8h | 1 | 1 |
| 29 | 1.1.3.8 | Informes de Estado del Proyecto 8 | 1d | 2018-09-14 | 2018-09-14 |  | 2018-07-09 | 2018-07-09 | 1d | 40d |  | start no earlier than 2018-09-14 | JAN | 8h | 1 | 1 |
| 30 | 1.1.3.9 | Informes de Estado del Proyecto 9 | 1d | 2018-09-21 | 2018-09-21 |  | 2018-07-16 | 2018-07-16 | 1d | 35d |  | start no earlier than 2018-09-21 | JAN | 8h | 1 | 1 |
| 31 | 1.1.3.10 | Informes de Estado del Proyecto 10 | 1d | 2018-09-28 | 2018-09-28 |  | 2018-07-23 | 2018-07-23 | 1d | 30d |  | start no earlier than 2018-09-28 | JAN | 8h | 1 | 1 |

| ID | WBS | Task | Type | Duration | Start | Finish | Predecessors | Baseline start | Baseline finish | Baseline duration | Total slack | Constraint | Resources | Work | Cost | Baseline cost |
| --- | --- | --- | --- | --- | --- | --- | --- | --- | --- | --- | --- | --- | --- | --- | --- | --- |
| 32 | 1.1.4 | **Reunión de Coordinación Semanal** |  | 46d | 2018-07-23 | 2018-09-24 |  | 2018-05-21 | 2018-08-31 | 73d | 34d |  |  | 80h | 10 | 15 |
| 33 | 1.1.4.1 | Reunión de Coordinación Semanal 1 |  | 1d | 2018-07-23 | 2018-07-23 |  | 2018-05-21 | 2018-05-21 | 1d | 79d | start no earlier than 2018-07-23 | JAN | 8h | 1 | 1 |
| 34 | 1.1.4.2 | Reunión de Coordinación Semanal 2 |  | 1d | 2018-07-30 | 2018-07-30 |  | 2018-05-28 | 2018-05-28 | 1d | 74d | start no earlier than 2018-07-30 | JAN | 8h | 1 | 1 |
| 35 | 1.1.4.3 | Reunión de Coordinación Semanal 3 |  | 1d | 2018-08-06 | 2018-08-06 |  | 2018-06-04 | 2018-06-04 | 1d | 69d | start no earlier than 2018-08-06 | JAN | 8h | 1 | 1 |
| 36 | 1.1.4.4 | Reunión de Coordinación Semanal 4 |  | 1d | 2018-08-13 | 2018-08-13 |  | 2018-06-11 | 2018-06-11 | 1d | 64d | start no earlier than 2018-08-13 | JAN | 8h | 1 | 1 |
| 37 | 1.1.4.5 | Reunión de Coordinación Semanal 5 |  | 1d | 2018-08-20 | 2018-08-20 |  | 2018-06-19 | 2018-06-19 | 1d | 59d | start no earlier than 2018-08-20 | JAN | 8h | 1 | 1 |
| 38 | 1.1.4.6 | Reunión de Coordinación Semanal 6 |  | 1d | 2018-08-27 | 2018-08-27 |  | 2018-06-26 | 2018-06-26 | 1d | 54d | start no earlier than 2018-08-27 | JAN | 8h | 1 | 1 |
| 39 | 1.1.4.7 | Reunión de Coordinación Semanal 7 |  | 1d | 2018-09-03 | 2018-09-03 |  | 2018-07-03 | 2018-07-03 | 1d | 49d | start no earlier than 2018-09-03 | JAN | 8h | 1 | 1 |
| 40 | 1.1.4.8 | Reunión de Coordinación Semanal 8 |  | 1d | 2018-09-10 | 2018-09-10 |  | 2018-07-10 | 2018-07-10 | 1d | 44d | start no earlier than 2018-09-10 | JAN | 8h | 1 | 1 |
| 41 | 1.1.4.9 | Reunión de Coordinación Semanal 9 |  | 1d | 2018-09-17 | 2018-09-17 |  | 2018-07-18 | 2018-07-18 | 1d | 39d | start no earlier than 2018-09-17 | JAN | 8h | 1 | 1 |
| 42 | 1.1.4.10 | Reunión de Coordinación Semanal 10 |  | 1d | 2018-09-24 | 2018-09-24 |  | 2018-07-25 | 2018-07-25 | 1d | 34d | start no earlier than 2018-09-24 | JAN | 8h | 1 | 1 |
| 43 | 1.1.5 | **Cierre del Proyecto** |  | 1d | 2018-09-28 | 2018-09-28 |  | 2018-12-31 | 2018-12-31 | 1d | 30d |  |  | 8h | 1 | 1 |
| 44 | 1.1.5.1 | Elaborar Documentos de Cierre del Proyecto |  | 1d | 2018-09-28 | 2018-09-28 |  | 2018-12-31 | 2018-12-31 | 1d | 30d | start no earlier than 2018-09-28 | JAN | 8h | 1 | 1 |
| 45 | 1.2 | **Ejecución** |  | 100d | 2018-06-25 | 2018-11-09 |  |  |  |  | 0d |  |  | 3712h |  |  |
| 46 | 1.2.1 | **API Gateway** |  | 1d? | 2018-07-02 | 2018-07-02 |  |  |  |  |  |  |  | 168h |  |  |
| 47 | 1.2.1.1 | Implementación base del API Gateway de Desarrollo | manual | 10d | 2018-07-02 | 2018-07-13 |  |  |  |  |  |  | DAIA | 80h |  |  |
| 48 | 1.2.1.2 | Configuración de acceso externo a API Gateway de Desarrollo | manual | 3d | 2018-07-16 | 2018-07-18 | 47 |  |  |  |  |  | DAIA | 24h |  |  |
| 49 | 1.2.1.3 | Implementación base del API Gateway de Calidad | manual | 4d | 2018-07-30 | 2018-08-02 | 53 |  |  |  |  |  | DGIT | 32h |  |  |
| 50 | 1.2.1.4 | Implementación base del API Gateway de Producción | manual | 4d | 2018-08-03 | 2018-08-08 | 49 |  |  |  |  |  | DGIT | 32h |  |  |
| 51 | 1.2.2 | **Consulta de cumplimiento** |  | 1d? | 2018-07-02 | 2018-07-02 |  |  |  |  |  |  |  | 104h |  |  |
| 52 | 1.2.2.1 | Exponer servicio a través del API Gateway de Desarrollo | manual | 5d | 2018-07-16 | 2018-07-20 | 47 |  |  |  |  |  | DAIA | 40h |  |  |
| 53 | 1.2.2.2 | Consumir servicio desde el App | manual | 5d | 2018-07-23 | 2018-07-27 | 48, 52 |  |  |  |  |  | SOLERA | 40h |  |  |
| 54 | 1.2.2.3 | Pruebas de Calidad del servicio a través del API Gateway | manual | 3d | 2018-08-03 | 2018-08-07 | 49, 52 |  |  |  |  |  | SUNAT - Calidad | 24h |  |  |
| 55 | 1.2.3 | **Servicios de Consulta de RUC y Reporte electrónico** |  | 85d | 2018-07-16 | 2018-11-09 |  |  |  |  | 0d |  |  | 1112h |  |  |
| 56 | 1.2.3.1 | **Servicio de campos faltantes** |  | 33d | 2018-07-16 | 2018-08-29 |  |  |  |  | 0d |  |  | 488h |  |  |
| 57 | 1.2.3.1.1 | **Construcción de servicio** |  | 23d | 2018-07-16 | 2018-08-15 |  |  |  |  |  |  | SUNAT - W. Galindez | 368h |  |  |
| 58 | 1.2.3.1.1.1 | Análisis | manual | 4d | 2018-07-16 | 2018-07-19 |  |  |  |  |  |  | AQY | 32h |  |  |
| 59 | 1.2.3.1.1.2 | Diseño | manual | 4d | 2018-07-20 | 2018-07-25 | 58 |  |  |  |  |  | AQY | 32h |  |  |
| 60 | 1.2.3.1.1.3 | Construcción | manual | 15d | 2018-07-26 | 2018-08-15 | 59 |  |  |  |  |  | AQY | 120h |  |  |
| 61 | 1.2.3.1.2 | Exponer servicio a través del API Gateway de Desarrollo | manual | 5d | 2018-08-16 | 2018-08-22 | 57 |  |  |  |  |  | DAIA | 40h |  |  |
| 62 | 1.2.3.1.3 | Consumir servicio desde el App | manual | 5d | 2018-08-23 | 2018-08-29 | 61 |  |  |  |  |  | SOLERA | 40h |  |  |
| 63 | 1.2.3.1.4 | Pruebas de Calidad del servicio a través del API Gateway | manual | 5d | 2018-08-23 | 2018-08-29 | 61, 49 |  |  |  |  |  | SUNAT - Calidad | 40h |  |  |

| ID | WBS | Task | Type | Duration | Start | Finish | Predecessors | Total slack | Resources | Work |
| --- | --- | --- | --- | --- | --- | --- | --- | --- | --- | --- |
| 64 | 1.2.3.2 | **Reporte electrónico de Ficha RUC** |  | 47d | 2018-09-06 | 2018-11-09 |  | 0d |  | 624h |
| 65 | 1.2.3.2.1 | **Servicio de PDF de Ficha RUC** |  | 37d | 2018-09-06 | 2018-10-26 |  |  | SUNAT - W. Galindez | 504h |
| 66 | 1.2.3.2.1.1 | Análisis | manual | 4d | 2018-09-06 | 2018-09-11 |  |  | NMC | 32h |
| 67 | 1.2.3.2.1.2 | Diseño | manual | 3d | 2018-09-12 | 2018-09-14 | 66 |  | NMC | 24h |
| 68 | 1.2.3.2.1.3 | Construcción | manual | 19d | 2018-10-02 | 2018-10-26 | 67 |  | NMC | 152h |
| 69 | 1.2.3.2.2 | Exponer servicio a través del API Gateway de Desarrollo | manual | 5d | 2018-10-29 | 2018-11-02 | 65 |  | DAIA | 40h |
| 70 | 1.2.3.2.3 | Consumir servicio desde el App | manual | 5d | 2018-11-05 | 2018-11-09 | 69 |  | SOLERA | 40h |
| 71 | 1.2.3.2.4 | Pruebas de Calidad del servicio a través del API Gateway | manual | 5d | 2018-11-05 | 2018-11-09 | 69, 49 |  | SUNAT - Calidad | 40h |
| 72 | 1.2.4 | **Servicios de Valores Pendientes de Pago** |  | 30d | 2018-07-02 | 2018-08-10 |  | 0d |  | 248h |
| 73 | 1.2.4.1 | Construcción de servicios (Datos y PDF) | manual | 16d | 2018-07-02 | 2018-07-23 |  |  | SUNAT - E. Yataco | 128h |
| 74 | 1.2.4.2 | Exponer servicio a través del API Gateway de Desarrollo | manual | 5d | 2018-07-30 | 2018-08-03 | 73 |  | DAIA | 40h |
| 75 | 1.2.4.3 | Consumir servicio desde el App | manual | 5d | 2018-08-06 | 2018-08-10 | 74 |  | SOLERA | 40h |
| 76 | 1.2.4.4 | Pruebas de calidad de servicios a través del API Gateway | manual | 5d | 2018-08-06 | 2018-08-10 | 74 |  | SUNAT - Calidad | 40h |
| 77 | 1.2.5 | **Servicios de DJs y Pagos** |  | 1d? | 2018-07-02 | 2018-07-02 |  |  |  | 696h |
| 78 | 1.2.5.1 | **Servicio de Consulta** |  | 26d | 2018-07-16 | 2018-08-20 |  | 0d |  | 336h |
| 79 | 1.2.5.1.1 | **Implementación de servicio** |  | 16d | 2018-07-16 | 2018-08-06 |  |  | SUNAT - K. Aviles | 256h |
| 80 | 1.2.5.1.1.1 | Análisis | manual | 2d | 2018-07-16 | 2018-07-17 |  |  | JYL | 16h |
| 81 | 1.2.5.1.1.2 | Diseño | manual | 3d | 2018-07-18 | 2018-07-20 | 80 |  | JYL | 24h |
| 82 | 1.2.5.1.1.3 | Construcción | manual | 11d | 2018-07-23 | 2018-08-06 | 81 |  | JYL | 88h |
| 83 | 1.2.5.1.2 | Exponer servicio de consulta a través del API Gateway de Desarrollo | manual | 5d | 2018-08-07 | 2018-08-13 | 79 |  | DAIA | 40h |
| 84 | 1.2.5.1.3 | Consumir servicio de consulta desde el App | manual | 5d | 2018-08-14 | 2018-08-20 | 83 |  | SOLERA | 40h |
| 85 | 1.2.5.2 | **Servicio de Reporte electrónico** |  | 25d | 2018-08-07 | 2018-09-10 |  | 0d |  | 320h |
| 86 | 1.2.5.2.1 | **Implementación de servicio** |  | 15d | 2018-08-07 | 2018-08-27 |  |  | SUNAT - K. Aviles | 240h |
| 87 | 1.2.5.2.1.1 | Análisis | manual | 2d | 2018-08-07 | 2018-08-08 |  |  | JYL | 16h |
| 88 | 1.2.5.2.1.2 | Diseño | manual | 3d | 2018-08-09 | 2018-08-13 | 87 |  | JYL | 24h |
| 89 | 1.2.5.2.1.3 | Construcción | manual | 10d | 2018-08-14 | 2018-08-27 | 88 |  | JYL | 80h |
| 90 | 1.2.5.2.2 | Exponer servicio de reporte a través del API Gateway de Desarrollo | manual | 5d | 2018-08-28 | 2018-09-03 | 86 |  | DAIA | 40h |
| 91 | 1.2.5.2.3 | Consumir servicio desde el App | manual | 5d | 2018-09-04 | 2018-09-10 | 90 |  | SOLERA | 40h |
| 92 | 1.2.5.3 | Pruebas de calidad de servicios a través del API Gateway | manual | 5d | 2018-09-04 | 2018-09-10 | 83, 90 |  | SUNAT - Calidad | 40h |

| ID | WBS | Task | Type | Duration | Start | Finish | Predecessors | Total slack | Resources | Work |
| --- | --- | --- | --- | --- | --- | --- | --- | --- | --- | --- |
| 93 | 1.2.6 | **Servicio de consulta de Facturas** |  | 16d? | 2018-07-02 | 2018-07-23 |  |  |  | 408h |
| 94 | 1.2.6.1 | Construcción de servicio | manual | 25d | 2018-06-25 | 2018-07-27 |  |  | SUNAT - V. Mendieta | 200h |
| 95 | 1.2.6.2 | Exponer servicio a través del API Gateway | manual | 5d | 2018-07-30 | 2018-08-03 | 94 |  | DAIA | 40h |
| 96 | 1.2.6.3 | Consumir servicio desde el App | manual | 5d | 2018-08-06 | 2018-08-10 | 95 |  | SOLERA | 40h |
| 97 | 1.2.6.4 | Pruebas de calidad de servicios | manual | 16d | 2018-07-30 | 2018-08-20 | 94 |  | SUNAT - Calidad | 128h |
| 98 | 1.2.7 | **Notificaciones Push para Notificaciones del SINE** |  | 27d | 2018-07-30 | 2018-09-04 |  | 0d |  | 224h |
| 99 | 1.2.7.1 | **Ajuste en sistemas de SUNAT para consumir servicio** |  | 27d | 2018-07-30 | 2018-09-04 |  |  | SUNAT - W. Galindez | 216h |
| 100 | 1.2.7.1.1 | Análisis | manual | 4d | 2018-07-30 | 2018-08-02 |  |  |  |  |
| 101 | 1.2.7.1.2 | Diseño | manual | 3d | 2018-08-03 | 2018-08-07 | 100 |  |  |  |
| 102 | 1.2.7.1.3 | Construcción | manual | 20d | 2018-08-08 | 2018-09-04 | 101 |  |  |  |
| 103 | 1.2.7.2 | Pruebas de Calidad de ajuste | manual | 1d? | 2018-07-30 | 2018-07-30 |  |  | SUNAT - Calidad | 8h |
| 104 | 1.2.8 | **Cargar Fecha de Vencimiento de Declaración a la Nube** |  | 1d? | 2018-07-02 | 2018-07-02 |  |  |  | 272h |
| 105 | 1.2.8.1 | Carga de Datos a la Nube | manual | 19d | 2018-08-28 | 2018-09-21 |  |  | SUNAT - K. Aviles | 152h |
| 106 | 1.2.8.2 | Pruebas de Disponibilidad de Datos en la Nube | manual | 5d | 2018-09-24 | 2018-09-28 | 105 |  | DAIA | 40h |
| 107 | 1.2.8.3 | Ajustes en la carga de Datos | manual | 5d | 2018-10-01 | 2018-10-05 | 106 |  | SOLERA | 40h |
| 108 | 1.2.8.4 | Implantación en APP | manual | 5d | 2018-10-01 | 2018-10-05 | 106 |  | SUNAT - Calidad | 40h |
| 109 | 1.2.9 | **Servicios para obtener y validar pregunta segura (recuperación de clave)** |  | 53d | 2018-08-16 | 2018-10-29 |  | 0d |  | 448h |
| 110 | 1.2.9.1 | Construcción de servicios | manual | 43d | 2018-08-16 | 2018-10-15 |  |  | SUNAT - W. Galindez | 344h |
| 111 | 1.2.9.2 | Exponer servicio a través del API Gateway de Desarrollo | manual | 5d | 2018-10-16 | 2018-10-22 | 110 |  | DAIA | 40h |
| 112 | 1.2.9.3 | Consumir servicio desde el App | manual | 5d | 2018-10-23 | 2018-10-29 | 111 |  | SOLERA | 40h |
| 113 | 1.2.9.4 | Pruebas de calidad de servicios a través del API Gateway | manual | 3d? | 2018-08-16 | 2018-08-20 | 111 |  | SUNAT - Calidad | 24h |
| 114 | 1.2.10 | Autenticación |  | 1d | 2018-09-17 | 2018-09-17 |  | 0d |  |  |
| 116 | 1.2.11 | Pruebas integrales del App | manual | 3d? | 2018-07-02 | 2018-07-04 |  |  | SUNAT - Calidad | 24h |
| 117 | 1.2.12 | Implantación del App | manual | 1d? | 2018-07-02 | 2018-07-02 |  |  | SUNAT - Calidad | 8h |
